# Progetto 2 PM aggiornato con i ritardi

How a schedule from MS Project changed from version to version. A marks actual dates.

## Version 1 (data date 2021-04-24, saved 2021-04-24, file Progetto 2 PM aggiornato con i ritardi.mpp)

| ID | WBS | Task | Duration | Start | Finish | Predecessors | Complete | Total float | Constraint |
| --- | --- | --- | --- | --- | --- | --- | --- | --- | --- |
| 1 | 1 | **Preso 3D** | 160d | 2021-01-12 A | 2021-08-23 |  | 43% | 0d |  |
| 2 | 1.1 | **OR1:GESTIONE E CONTROLLO** | 160d | 2021-01-12 A | 2021-08-23 |  | 46% | 0d |  |
| 3 | 1.1.1 | **Documenti di Project Management** | 157d | 2021-01-12 A | 2021-08-18 |  | 47% | 0d |  |
| 4 |  | Business Case e Piano di Progetto | 3d | 2021-01-12 A | 2021-01-14 A |  | 100% |  |  |
| 5 |  | Documento di Gestione dei Rischi | 2d | 2021-01-15 A | 2021-01-18 A | 4 | 100% |  |  |
| 6 |  | Documento di Gestione della Qualità | 3d | 2021-01-19 A | 2021-01-21 A | 5 | 100% |  |  |
| 7 |  | Documento di Gestione della Comunicazione | 5d | 2021-01-22 A | 2021-01-28 A | 6 | 100% |  |  |
| 8 |  | Documento di Gestione del Timing, del Budget e delle Risorse | 2d | 2021-01-29 A | 2021-02-01 A | 7 | 100% |  |  |
| 9 |  | Studio di mercato | 2d | 2021-02-02 A | 2021-02-03 A | 8 | 100% |  |  |
| 10 |  | Documento di Controllo e Monitoraggio sugli Obiettivi del Progetto | 140d | 2021-02-04 A | 2021-08-18 | 9 | 41% | 0d | finish no earlier than 2021-08-13 |
| 11 | 1.1.2 | **Chiusura e lesson Learned** | 3d | 2021-08-19 | 2021-08-23 | 10, 100, 98 |  | 0d |  |
| 12 |  | Documento di Chiusura | 1d | 2021-08-19 | 2021-08-19 |  |  | 0d |  |
| 13 |  | Lessons Learned | 2d | 2021-08-20 | 2021-08-23 | 12 |  | 0d |  |
| 14 | 1.2 | **OR2 Realizzazione Back-end** | 52d | 2021-02-03 A | 2021-04-16 A |  | 100% |  |  |
| 15 |  | Milestone 1: Documenti inizio progetto | 0d | 2021-02-03 A | 2021-02-03 A | 9 | 100% |  |  |
| 16 | 1.2.2 | **Configurazione Server** | 3d | 2021-02-04 A | 2021-02-08 A | 15 | 100% |  |  |
| 17 |  | Inizializzazione dominio web | 2d | 2021-02-04 A | 2021-02-05 A |  | 100% |  |  |
| 18 |  | Avvio server sul dominio | 1d | 2021-02-08 A | 2021-02-08 A | 17 | 100% |  |  |
| 19 | 1.2.3 | **Progettazione e realizzazione database** | 13d | 2021-02-09 A | 2021-02-25 A | 16 | 100% |  |  |
| 20 |  | Realizzazione diagramma E/R | 5d | 2021-02-09 A | 2021-02-15 A |  | 100% |  |  |
| 21 |  | Progettazione logica del database | 2d | 2021-02-16 A | 2021-02-17 A | 20 | 100% |  |  |
| 22 |  | Progettazione fisica del database | 2d | 2021-02-18 A | 2021-02-19 A | 21 | 100% |  |  |
| 23 |  | Implementazione del database | 4d | 2021-02-22 A | 2021-02-25 A | 22 | 100% |  |  |
| 24 |  | Milestone 2: Database | 0d | 2021-02-25 A | 2021-02-25 A | 19 | 100% |  |  |
| 25 | 1.2.5 | **Realizzazione Service** | 20d | 2021-02-26 A | 2021-03-25 A | 24 | 100% |  |  |
| 26 |  | Servizi del User | 10d | 2021-02-26 A | 2021-03-11 A |  | 100% |  |  |
| 27 |  | Servizi dell Azienda | 10d | 2021-02-26 A | 2021-03-11 A |  | 100% |  |  |
| 28 |  | Servizi del designer | 10d | 2021-03-12 A | 2021-03-25 A | 26 | 100% |  |  |
| 29 |  | Servizi del Moderator | 10d | 2021-03-12 A | 2021-03-25 A | 27 | 100% |  |  |
| 30 | 1.2.6 | **Realizzazione Controller** | 16d | 2021-03-26 A | 2021-04-16 A | 25 | 100% |  |  |
| 31 |  | Realizzazione Controller Public | 6d | 2021-03-26 A | 2021-04-02 A |  | 100% |  |  |
| 32 |  | Realizzazione Controller InternoAzienda | 6d | 2021-03-26 A | 2021-04-02 A |  | 100% |  |  |
| 33 |  | Realizzazione Controller User | 7d | 2021-04-05 A | 2021-04-13 A | 31 | 100% |  |  |
| 34 |  | Realizzazione Controller Designer | 10d | 2021-04-05 A | 2021-04-16 A | 32 | 100% |  |  |
| 35 |  | Realizzazione Controller Moderator | 10d | 2021-04-05 A | 2021-04-16 A | 31 | 100% |  |  |
| 36 |  | SAL: Fine Back-end | 0d | 2021-04-16 A | 2021-04-16 A | 30 | 100% |  |  |
| 37 | 1.3 | **OR3: Realizzazione Front-end** | 39d | 2021-04-19 A | 2021-06-10 | 14 | 11% | 0d |  |
| 38 | 1.3.1 | **Mappa di navigazione del sito e design del sito** | 25d | 2021-04-19 A | 2021-05-21 | 36 | 20% |  |  |
| 39 |  | Realizzazione mappa di navigazione del sito | 1d | 2021-04-19 A | 2021-04-19 A |  | 100% |  |  |
| 40 |  | Scelta colori e font del sito | 2d | 2021-04-19 A | 2021-04-20 A |  | 100% |  |  |
| 41 |  | Progettazione Header | 2d | 2021-04-21 A | 2021-04-22 A | 40 | 100% |  |  |
| 42 |  | Progettazione Footer | 2d | 2021-04-21 A | 2021-04-22 A | 40 | 100% |  |  |
| 43 |  | Progettazione Pagina Profilo | 2d | 2021-04-23 A | 2021-04-26 | 42 | 50% | 33d |  |
| 44 |  | Progettazione Pagina Login | 2d | 2021-04-23 A | 2021-04-26 | 42 | 50% | 0d |  |
| 45 |  | Progettazione Registrazione | 2d | 2021-04-27 | 2021-04-28 | 44 |  | 12d |  |
| 46 |  | Progettazione area recensioni | 3d | 2021-04-27 | 2021-04-29 | 44 |  | 0d |  |
| 47 |  | Progettazione Carrello | 2d | 2021-04-30 | 2021-05-03 | 46 |  | 28d |  |
| 48 |  | Progettazione area acquisti | 3d | 2021-04-30 | 2021-05-04 | 46 |  | 0d |  |
| 49 |  | Progettazione pagina prodotto | 2d | 2021-05-05 | 2021-05-06 | 48 |  | 25d |  |
| 50 |  | Progettazione Modifica Prodotto | 1d | 2021-05-05 | 2021-05-05 | 48 |  | 0d |  |
| 51 |  | Progettazione Visualizza profilo utente e designer | 2d | 2021-05-06 | 2021-05-07 | 50 |  | 0d |  |
| 52 |  | Progettazione Area Lavora con noi | 1d | 2021-05-06 | 2021-05-06 | 50 |  | 0d | finish no later than 2021-05-06 |
| 53 |  | Progettazione Chat | 4d | 2021-05-10 | 2021-05-13 | 52, 51 |  | 0d |  |
| 54 |  | Progettazione Area Candidati Designer | 2d | 2021-05-10 | 2021-05-11 | 51, 52 |  | 2d |  |
| 55 |  | Progettazione Area Ordini | 1d | 2021-05-14 | 2021-05-14 | 54, 53 |  | 0d |  |
| 56 |  | Progettazione Area Gestione Produzione | 2d | 2021-05-14 | 2021-05-17 | 53, 54 |  | 14d |  |
| 57 |  | Progettazione Area Classifica | 4d | 2021-05-18 | 2021-05-21 | 56 |  | 14d |  |
| 58 |  | Progettazione Area Ricerca Prodotto | 4d | 2021-05-18 | 2021-05-21 | 56 |  | 14d |  |
| 59 |  | Milestone 3: Mockup del sito | 0d | 2021-05-17 | 2021-05-17 | 55 |  | 0d | start no earlier than 2021-05-17 |
| 60 | 1.3.3 | **Realizzazione Viste** | 19d | 2021-05-17 | 2021-06-10 | 59 |  | 0d |  |
| 61 |  | Realizzazione Header | 1d | 2021-05-17 | 2021-05-17 |  |  | 1d |  |
| 62 |  | Realizzazione Footer | 1d | 2021-05-17 | 2021-05-17 |  |  | 0d |  |
| 63 |  | Realizzazione Pagina Profilo | 1d | 2021-05-18 | 2021-05-18 | 61 |  | 1d |  |
| 64 |  | Realizzazione Pagina Login | 1d | 2021-05-18 | 2021-05-18 | 62 |  | 0d |  |
| 65 |  | Realizzazione Registrazione | 1d | 2021-05-19 | 2021-05-19 | 63 |  | 1d |  |
| 66 |  | Realizzazione area recensioni | 2d | 2021-05-19 | 2021-05-20 | 64 |  | 0d |  |
| 67 |  | Realizzazione Carrello | 2d | 2021-05-20 | 2021-05-21 | 65 |  | 1d |  |
| 68 |  | Realizzazione area acquisti | 2d | 2021-05-21 | 2021-05-24 | 66 |  | 0d |  |
| 69 |  | Realizzazione pagina prodotto | 3d | 2021-05-24 | 2021-05-26 | 67 |  | 1d |  |
| 70 |  | Realizzazione Modifica Prodotto | 3d | 2021-05-25 | 2021-05-27 | 68 |  | 0d |  |

| ID | WBS | Task | Duration | Start | Finish | Predecessors | Total float | Constraint |
| --- | --- | --- | --- | --- | --- | --- | --- | --- |
| 71 |  | Realizzazione Visualizza profilo utente e designer | 2d | 2021-05-27 | 2021-05-28 | 69 | 1d |  |
| 72 |  | Realizzazione Area Lavora con noi | 2d | 2021-05-28 | 2021-05-31 | 70 | 0d |  |
| 73 |  | Realizzazione Chat | 2d | 2021-05-31 | 2021-06-01 | 71 | 1d |  |
| 74 |  | Realizzazione Area Candidati Designer | 2d | 2021-06-01 | 2021-06-02 | 72 | 0d |  |
| 75 |  | Realizzazione Area Ordini | 2d | 2021-06-02 | 2021-06-03 | 73 | 1d |  |
| 76 |  | Realizzazione Area Gestione Produzione | 2d | 2021-06-03 | 2021-06-04 | 74 | 0d |  |
| 77 |  | Realizzazione Area Classifica | 4d | 2021-06-04 | 2021-06-09 | 75 | 1d |  |
| 78 |  | Realizzazione Area Ricerca Prodotto | 4d | 2021-06-07 | 2021-06-10 | 76 | 0d |  |
| 79 |  | SAL: Fine Front-end | 0d | 2021-06-10 | 2021-06-10 | 60 | 0d |  |
| 80 | 1.4 | **OR4: Organizzazione della rete locale e testing** | 52d | 2021-06-11 | 2021-08-23 | 37 | 0d |  |
| 81 | 1.4.1 | **Report pianificazione dell’infrastruttura di rete** | 19d | 2021-06-11 | 2021-07-07 | 79 | 0d |  |
| 82 |  | Analisi di mercato sulle soluzioni topologiche moderne | 2d | 2021-06-11 | 2021-06-14 |  | 0d |  |
| 83 |  | Individuazione asset informatici e rischi correlati | 6d | 2021-06-15 | 2021-06-22 | 82 | 0d |  |
| 84 |  | Pianificazione su software di simulazione di topologie di rete | 7d | 2021-06-23 | 2021-07-01 | 83 | 0d |  |
| 85 |  | Stesura di report finale sulla pianificazione della rete | 4d | 2021-07-02 | 2021-07-07 | 84 | 0d |  |
| 86 |  | Milestone 4: Progettazione Infrastruttura | 0d | 2021-07-07 | 2021-07-07 | 81 | 0d |  |
| 87 | 1.4.3 | **Realizzazione dell’infrastruttura di rete** | 23d | 2021-07-08 | 2021-08-09 | 86 | 10d |  |
| 88 |  | Acquisto degli apparati necessari e realizzazione della rete | 20d | 2021-07-08 | 2021-08-04 |  | 10d |  |
| 89 |  | Messa in opera dell’infrastruttura di rete | 3d | 2021-08-05 | 2021-08-09 | 88 | 10d |  |
| 90 | 1.4.4 | **Rafforzamento della sicurezza informatica** | 16d | 2021-07-08 | 2021-07-29 | 86 | 0d |  |
| 91 |  | Valutazione preventivi con aziende specializzate in penetration testing | 10d | 2021-07-08 | 2021-07-21 |  | 0d | start no earlier than 2021-01-13 |
| 92 |  | Svolgimento penetration testing da parte di due aziende scelte | 2d | 2021-07-22 | 2021-07-23 | 91 | 0d |  |
| 93 |  | Simulazione Disaster Recovery | 2d | 2021-07-26 | 2021-07-27 | 92 | 0d |  |
| 94 |  | Stesura delle linee guida per un piano di Disaster Recovery | 2d | 2021-07-28 | 2021-07-29 | 93 | 0d |  |
| 95 |  | Valutazione preventivi con aziende specializzate nell’attività di training per il contrasto al social engineering | 3d | 2021-07-08 | 2021-07-12 |  | 10d |  |
| 96 |  | Contrattazione ed erogazione del corso anti social-engineering da parte dell'azienda scelta | 3d | 2021-07-13 | 2021-07-15 | 95 | 10d |  |
| 97 |  | Milestone 5: Realizzazione Infrastruttura | 0d | 2021-07-29 | 2021-07-29 | 90 | 0d |  |
| 98 | 1.4.6 | **Deploy della Piattaforma e testing** | 14d | 2021-07-30 | 2021-08-18 | 97 | 0d |  |
| 99 |  | Deploy della piattaforma | 4d | 2021-07-30 | 2021-08-04 |  | 0d |  |
| 100 |  | Testing della piattaforma | 10d | 2021-08-05 | 2021-08-18 | 99 | 0d |  |
| 101 |  | SAL: Testing e Chiusura Progetto | 0d | 2021-08-23 | 2021-08-23 | 11 | 0d |  |

## Version 2 (data date 2021-06-23, saved 2021-05-08, file Progetto 2 PM aggiornato con i ritardi.mpp)

Last finish 2021-08-23 → 2021-08-25 (+2d). Complete tasks 28 → 72.

Changed:

| ID | Task | Start | Finish | Duration | Complete | Total float | Predecessors | Other |
| --- | --- | --- | --- | --- | --- | --- | --- | --- |
| 1 | **Preso 3D** |  | 2021-08-23 → 2021-08-25 (+2d) | 160d → 162d | 43% → 84% |  |  | baseline finish 2021-08-23 → 2021-08-25 |
| 2 | **OR1:GESTIONE E CONTROLLO** |  | 2021-08-23 → 2021-08-25 (+2d) | 160d → 162d | 46% → 73% |  |  | resources spesa per wp immobile [0.1%]; Spese Generali per wp [0.1%] → none; baseline finish 2021-08-23 → 2021-08-25 |
| 3 | **Documenti di Project Management** |  |  |  | 47% → 75% | 0d → 2d |  | resources none → spesa per wp immobile [0.1%]; Spese Generali per wp [0.1%] |
| 5 | Documento di Gestione dei Rischi |  |  |  |  |  |  | resources Cristian Colavito → Cristian Colavito; Spesa poliza assicurativa capannone [0.1%] |
| 10 | Documento di Controllo e Monitoraggio sugli Obiettivi del Progetto |  |  |  | 41% → 71% | 0d → 2d |  |  |
| 11 | **Chiusura e lesson Learned** | 2021-08-19 → 2021-08-23 (+4d) | 2021-08-23 → 2021-08-25 (+2d) |  |  |  |  | baseline start 2021-08-19 → 2021-08-23; baseline finish 2021-08-23 → 2021-08-25 |
| 12 | Documento di Chiusura | 2021-08-19 → 2021-08-23 (+4d) | 2021-08-19 → 2021-08-23 (+4d) |  |  |  |  | baseline start 2021-08-19 → 2021-08-23; baseline finish 2021-08-19 → 2021-08-23 |
| 13 | Lessons Learned | 2021-08-20 → 2021-08-24 (+4d) | 2021-08-23 → 2021-08-25 (+2d) |  |  |  |  | baseline start 2021-08-20 → 2021-08-24; baseline finish 2021-08-23 → 2021-08-25 |
| 25 | **Realizzazione Service** |  | 2021-03-25 A → 2021-03-23 A (-2d) | 20d → 18d |  |  |  | baseline finish 2021-03-25 → 2021-03-23 |
| 26 | Servizi del User |  | 2021-03-11 A → 2021-03-09 A (-2d) | 10d → 8d |  |  |  | baseline finish 2021-03-11 → 2021-03-09 |
| 27 | Servizi dell Azienda |  | 2021-03-11 A → 2021-03-09 A (-2d) | 10d → 8d |  |  |  | baseline finish 2021-03-11 → 2021-03-09 |
| 28 | Servizi del designer |  | 2021-03-25 A → 2021-03-23 A (-2d) | 10d → 8d |  |  |  | baseline finish 2021-03-25 → 2021-03-23 |
| 29 | Servizi del Moderator |  | 2021-03-25 A → 2021-03-23 A (-2d) | 10d → 8d |  |  |  | baseline finish 2021-03-25 → 2021-03-23 |
| 37 | **OR3: Realizzazione Front-end** |  |  |  | 11% → 99% |  |  |  |
| 38 | **Mappa di navigazione del sito e design del sito** |  |  |  | 20% → 99% |  |  | baseline finish 2021-05-14 → 2021-05-21 |
| 43 | Progettazione Pagina Profilo |  | 2021-04-26 A |  | 50% → 100% | 33d → none |  |  |
| 44 | Progettazione Pagina Login |  | 2021-04-26 A |  | 50% → 100% | 0d → none |  |  |
| 45 | Progettazione Registrazione | 2021-04-27 A | 2021-04-28 A |  | 0% → 100% | 12d → none |  |  |
| 46 | Progettazione area recensioni | 2021-04-27 A | 2021-04-29 A |  | 0% → 100% | 0d → none |  |  |
| 47 | Progettazione Carrello | 2021-04-30 A | 2021-05-03 A |  | 0% → 100% | 28d → none |  |  |
| 48 | Progettazione area acquisti | 2021-04-30 A | 2021-05-04 A |  | 0% → 100% | 0d → none |  |  |
| 49 | Progettazione pagina prodotto | 2021-05-05 A | 2021-05-06 A |  | 0% → 100% | 25d → none |  |  |
| 50 | Progettazione Modifica Prodotto | 2021-05-05 A | 2021-05-05 A |  | 0% → 100% | 0d → none |  |  |
| 51 | Progettazione Visualizza profilo utente e designer | 2021-05-06 A | 2021-05-07 A |  | 0% → 100% | 0d → none |  |  |
| 52 | Progettazione Area Lavora con noi | 2021-05-06 A | 2021-05-06 A |  | 0% → 100% | 0d → none |  |  |
| 53 | Progettazione Chat | 2021-05-10 A | 2021-05-13 A |  | 0% → 100% | 0d → none |  | baseline finish 2021-05-11 → 2021-05-13 |
| 54 | Progettazione Area Candidati Designer | 2021-05-10 A | 2021-05-11 A |  | 0% → 100% | 2d → none |  |  |
| 55 | Progettazione Area Ordini | 2021-05-14 A | 2021-05-14 A |  | 0% → 100% | 0d → none |  | baseline start 2021-05-12 → 2021-05-14; baseline finish 2021-05-13 → 2021-05-14 |
| 56 | Progettazione Area Gestione Produzione | 2021-05-14 A | 2021-05-17 A |  | 0% → 100% | 14d → none |  | baseline start 2021-05-12 → 2021-05-14; baseline finish 2021-05-13 → 2021-05-17 |
| 57 | Progettazione Area Classifica | 2021-05-18 A | 2021-05-21 A |  | 0% → 100% | 14d → none |  | baseline start 2021-05-14 → 2021-05-18; baseline finish 2021-05-14 → 2021-05-21 |
| 58 | Progettazione Area Ricerca Prodotto | 2021-05-18 A | 2021-05-21 A |  | 0% → 100% | 14d → none |  | baseline start 2021-05-14 → 2021-05-18; baseline finish 2021-05-14 → 2021-05-21 |
| 59 | Milestone 3: Mockup del sito | 2021-05-17 A | 2021-05-17 A |  | 0% → 100% | 0d → none |  | baseline start 2021-05-14 → 2021-05-17; baseline finish 2021-05-14 → 2021-05-17 |
| 60 | **Realizzazione Viste** | 2021-05-17 A | 2021-06-10 A |  | 0% → 100% | 0d → none |  |  |
| 61 | Realizzazione Header | 2021-05-17 A | 2021-05-17 A |  | 0% → 100% | 1d → none |  |  |
| 62 | Realizzazione Footer | 2021-05-17 A | 2021-05-17 A |  | 0% → 100% | 0d → none |  |  |
| 63 | Realizzazione Pagina Profilo | 2021-05-18 A | 2021-05-18 A |  | 0% → 100% | 1d → none |  |  |
| 64 | Realizzazione Pagina Login | 2021-05-18 A | 2021-05-18 A |  | 0% → 100% | 0d → none |  |  |
| 65 | Realizzazione Registrazione | 2021-05-19 A | 2021-05-19 A |  | 0% → 100% | 1d → none |  |  |
| 66 | Realizzazione area recensioni | 2021-05-19 A | 2021-05-20 A |  | 0% → 100% | 0d → none |  |  |
| 67 | Realizzazione Carrello | 2021-05-20 A | 2021-05-21 A |  | 0% → 100% | 1d → none |  |  |
| 68 | Realizzazione area acquisti | 2021-05-21 A | 2021-05-24 A |  | 0% → 100% | 0d → none |  |  |
| 69 | Realizzazione pagina prodotto | 2021-05-24 A | 2021-05-26 A |  | 0% → 100% | 1d → none |  |  |
| 70 | Realizzazione Modifica Prodotto | 2021-05-25 A | 2021-05-27 A |  | 0% → 100% | 0d → none |  |  |
| 71 | Realizzazione Visualizza profilo utente e designer | 2021-05-27 A | 2021-05-28 A |  | 0% → 100% | 1d → none |  |  |
| 72 | Realizzazione Area Lavora con noi | 2021-05-28 A | 2021-05-31 A |  | 0% → 100% | 0d → none |  |  |
| 73 | Realizzazione Chat | 2021-05-31 A | 2021-06-01 A |  | 0% → 100% | 1d → none |  |  |
| 74 | Realizzazione Area Candidati Designer | 2021-06-01 A | 2021-06-02 A |  | 0% → 100% | 0d → none |  |  |
| 75 | Realizzazione Area Ordini | 2021-06-02 A | 2021-06-03 A |  | 0% → 100% | 1d → none |  |  |
| 76 | Realizzazione Area Gestione Produzione | 2021-06-03 A | 2021-06-04 A |  | 0% → 100% | 0d → none |  |  |
| 77 | Realizzazione Area Classifica | 2021-06-04 A | 2021-06-09 A |  | 0% → 100% | 1d → none |  |  |
| 78 | Realizzazione Area Ricerca Prodotto | 2021-06-07 A | 2021-06-10 A |  | 0% → 100% | 0d → none |  |  |
| 79 | SAL: Fine Front-end | 2021-06-10 A | 2021-06-10 A |  | 0% → 100% | 0d → none |  |  |
| 80 | **OR4: Organizzazione della rete locale e testing** | 2021-06-11 A | 2021-08-23 → 2021-08-25 (+2d) | 52d → 54d | 0% → 73% |  |  | baseline finish 2021-08-23 → 2021-08-25 |
| 81 | **Report pianificazione dell’infrastruttura di rete** | 2021-06-11 A | 2021-07-07 A |  | 0% → 100% | 0d → none |  |  |
| 82 | Analisi di mercato sulle soluzioni topologiche moderne | 2021-06-11 A | 2021-06-14 A |  | 0% → 100% | 0d → none |  |  |
| 83 | Individuazione asset informatici e rischi correlati | 2021-06-15 A | 2021-06-22 A |  | 0% → 100% | 0d → none |  |  |
| 84 | Pianificazione su software di simulazione di topologie di rete | 2021-06-23 A | 2021-07-01 A |  | 0% → 100% | 0d → none |  |  |
| 85 | Stesura di report finale sulla pianificazione della rete | 2021-07-02 A | 2021-07-07 A |  | 0% → 100% | 0d → none |  |  |
| 86 | Milestone 4: Progettazione Infrastruttura | 2021-07-07 A | 2021-07-07 A |  | 0% → 100% | 0d → none |  |  |
| 87 | **Realizzazione dell’infrastruttura di rete** | 2021-07-08 A | 2021-08-09 → 2021-08-02 (-7d) | 23d → 18d | 0% → 83% | 10d → 0d |  | baseline finish 2021-08-09 → 2021-08-02 |
| 88 | Acquisto degli apparati necessari e realizzazione della rete | 2021-07-08 A | 2021-08-04 → 2021-07-28 A (-7d) | 20d → 15d | 0% → 100% | 10d → none |  | resources Gabriele De Bartolomeo; Wifi Access Points [2000%]; Switches L2/L3 e Routers [1500%]; Stampanti di rete [200%]; Enterprise Switches (Accesso) [200%]; Enterprise Switches (Aggregazione) [400%]; Enterprise Routers (Edge) [200%]; Firewall [200%]; Domain Servers [200%]; Storage Area Network → Gabriele De Bartolomeo; Wifi Access Points [1500%]; Switches L2/L3 e Routers [1125%]; Stampanti di rete [150%]; Enterprise Switches (Accesso) [150%]; Enterprise Switches (Aggregazione) [300%]; Enterprise Routers (Edge) [150%]; Firewall [150%]; Domain Servers [150%]; Storage Area Network [75%]; baseline finish 2021-08-04 → 2021-07-28 |
| 89 | Messa in opera dell’infrastruttura di rete | 2021-08-05 → 2021-07-29 (-7d) | 2021-08-09 → 2021-08-02 (-7d) |  |  | 10d → 0d |  | baseline start 2021-08-05 → 2021-07-29; baseline finish 2021-08-09 → 2021-08-02 |
| 90 | **Rafforzamento della sicurezza informatica** | 2021-07-08 A | 2021-07-29 → 2021-08-02 (+4d) | 16d → 18d | 0% → 87% |  |  | baseline finish 2021-07-29 → 2021-08-02 |
| 91 | Valutazione preventivi con aziende specializzate in penetration testing | 2021-07-08 A | 2021-07-21 A |  | 0% → 100% | 0d → none |  |  |
| 92 | Svolgimento penetration testing da parte di due aziende scelte | 2021-07-22 A |  |  | 0% → 99% | 0d → 3d |  |  |
| 93 | Simulazione Disaster Recovery | 2021-07-26 → 2021-07-27 A (+1d) | 2021-07-27 → 2021-07-29 (+2d) | 2d → 3d | 0% → 67% |  |  | constraint none → start no earlier than 2021-07-27; baseline start 2021-07-26 → 2021-07-27; baseline finish 2021-07-27 → 2021-07-29 |
| 94 | Stesura delle linee guida per un piano di Disaster Recovery | 2021-07-28 → 2021-07-30 (+2d) | 2021-07-29 → 2021-08-02 (+4d) |  |  |  |  | baseline start 2021-07-28 → 2021-07-30; baseline finish 2021-07-29 → 2021-08-02 |
| 95 | Valutazione preventivi con aziende specializzate nell’attività di training per il contrasto al social engineering | 2021-07-08 A | 2021-07-12 A |  | 0% → 100% | 10d → none |  |  |
| 96 | Contrattazione ed erogazione del corso anti social-engineering da parte dell'azienda scelta | 2021-07-13 A |  |  | 0% → 99% | 10d → 12d |  |  |
| 97 | Milestone 5: Realizzazione Infrastruttura | 2021-07-29 → 2021-08-02 (+4d) | 2021-07-29 → 2021-08-02 (+4d) |  |  |  | 90 → 90, 87 | baseline start 2021-07-29 → 2021-08-02; baseline finish 2021-07-29 → 2021-08-02 |

| ID | Task | Start | Finish | Other |
| --- | --- | --- | --- | --- |
| 98 | **Deploy della Piattaforma e testing** | 2021-07-30 → 2021-08-03 (+4d) | 2021-08-18 → 2021-08-20 (+2d) | baseline start 2021-07-30 → 2021-08-03; baseline finish 2021-08-18 → 2021-08-20 |
| 99 | Deploy della piattaforma | 2021-07-30 → 2021-08-03 (+4d) | 2021-08-04 → 2021-08-06 (+2d) | baseline start 2021-07-30 → 2021-08-03; baseline finish 2021-08-04 → 2021-08-06 |
| 100 | Testing della piattaforma | 2021-08-05 → 2021-08-09 (+4d) | 2021-08-18 → 2021-08-20 (+2d) | baseline start 2021-08-05 → 2021-08-09; baseline finish 2021-08-18 → 2021-08-20 |
| 101 | SAL: Testing e Chiusura Progetto | 2021-08-23 → 2021-08-25 (+2d) | 2021-08-23 → 2021-08-25 (+2d) | baseline start 2021-08-23 → 2021-08-25; baseline finish 2021-08-23 → 2021-08-25 |

## Version 3 (data date 2021-08-30, saved 2021-05-15, file Progetto 2 PM aggiornato con i ritardi.mpp)

Note of the change: aggiornamento 15/05

Last finish 2021-08-25 → 2021-08-26 (+1d). Complete tasks 72 → 82.

Changed:

| ID | Task | Start | Finish | Duration | Complete | Total float | Other |
| --- | --- | --- | --- | --- | --- | --- | --- |
| 1 | **Preso 3D** |  | 2021-08-25 → 2021-08-26 (+1d) | 162d → 163d | 84% → 99% |  | baseline finish 2021-08-25 → 2021-08-26 |
| 2 | **OR1:GESTIONE E CONTROLLO** |  | 2021-08-25 → 2021-08-26 (+1d) | 162d → 163d | 73% → 99% |  | baseline finish 2021-08-25 → 2021-08-26 |
| 3 | **Documenti di Project Management** |  |  |  | 75% → 99% | 2d → 0d |  |
| 10 | Documento di Controllo e Monitoraggio sugli Obiettivi del Progetto |  | 2021-08-18 A |  | 71% → 100% | 2d → none |  |
| 11 | **Chiusura e lesson Learned** | 2021-08-23 → 2021-08-24 A (+1d) | 2021-08-25 → 2021-08-26 A (+1d) |  | 0% → 100% | 0d → none | baseline start 2021-08-23 → 2021-08-24; baseline finish 2021-08-25 → 2021-08-26 |
| 12 | Documento di Chiusura | 2021-08-23 → 2021-08-24 A (+1d) | 2021-08-23 → 2021-08-24 A (+1d) |  | 0% → 100% | 0d → none | baseline start 2021-08-23 → 2021-08-24; baseline finish 2021-08-23 → 2021-08-24 |
| 13 | Lessons Learned | 2021-08-24 → 2021-08-25 A (+1d) | 2021-08-25 → 2021-08-26 A (+1d) |  | 0% → 100% | 0d → none | baseline start 2021-08-24 → 2021-08-25; baseline finish 2021-08-25 → 2021-08-26 |
| 80 | **OR4: Organizzazione della rete locale e testing** |  | 2021-08-25 → 2021-08-26 (+1d) | 54d → 55d | 73% → 99% |  | baseline finish 2021-08-25 → 2021-08-26 |
| 87 | **Realizzazione dell’infrastruttura di rete** |  | 2021-08-02 → 2021-08-03 A (+1d) | 18d → 19d | 83% → 100% | 0d → none | baseline finish 2021-08-02 → 2021-08-03 |
| 88 | Acquisto degli apparati necessari e realizzazione della rete |  | 2021-07-28 A → 2021-07-29 A (+1d) | 15d → 16d |  |  | resources Gabriele De Bartolomeo; Wifi Access Points [1500%]; Switches L2/L3 e Routers [1125%]; Stampanti di rete [150%]; Enterprise Switches (Accesso) [150%]; Enterprise Switches (Aggregazione) [300%]; Enterprise Routers (Edge) [150%]; Firewall [150%]; Domain Servers [150%]; Storage Area Network [75%] → Gabriele De Bartolomeo; Wifi Access Points [1600%]; Switches L2/L3 e Routers [1225%]; Stampanti di rete [250%]; Enterprise Switches (Accesso) [250%]; Enterprise Switches (Aggregazione) [400%]; Enterprise Routers (Edge) [250%]; Firewall [250%]; Domain Servers [250%]; Storage Area Network [175%]; baseline finish 2021-07-28 → 2021-07-29 |
| 89 | Messa in opera dell’infrastruttura di rete | 2021-07-29 → 2021-07-30 A (+1d) | 2021-08-02 → 2021-08-03 A (+1d) |  | 0% → 100% | 0d → none | baseline start 2021-07-29 → 2021-07-30; baseline finish 2021-08-02 → 2021-08-03 |
| 90 | **Rafforzamento della sicurezza informatica** |  |  |  | 87% → 99% | 0d → 18d |  |
| 93 | Simulazione Disaster Recovery |  | 2021-07-29 A |  | 67% → 100% | 0d → none |  |
| 94 | Stesura delle linee guida per un piano di Disaster Recovery | 2021-07-30 A | 2021-08-02 A |  | 0% → 100% | 0d → none |  |
| 97 | Milestone 5: Realizzazione Infrastruttura | 2021-08-02 → 2021-08-03 A (+1d) | 2021-08-02 → 2021-08-03 A (+1d) |  | 0% → 100% | 0d → none | baseline start 2021-08-02 → 2021-08-03; baseline finish 2021-08-02 → 2021-08-03 |
| 98 | **Deploy della Piattaforma e testing** | 2021-08-03 → 2021-08-04 A (+1d) | 2021-08-20 → 2021-08-23 A (+3d) |  | 0% → 100% | 0d → none | baseline start 2021-08-03 → 2021-08-04; baseline finish 2021-08-20 → 2021-08-23 |
| 99 | Deploy della piattaforma | 2021-08-03 → 2021-08-04 A (+1d) | 2021-08-06 → 2021-08-09 A (+3d) |  | 0% → 100% | 0d → none | baseline start 2021-08-03 → 2021-08-04; baseline finish 2021-08-06 → 2021-08-09 |
| 100 | Testing della piattaforma | 2021-08-09 → 2021-08-10 A (+1d) | 2021-08-20 → 2021-08-23 A (+3d) |  | 0% → 100% | 0d → none | baseline start 2021-08-09 → 2021-08-10; baseline finish 2021-08-20 → 2021-08-23 |
| 101 | SAL: Testing e Chiusura Progetto | 2021-08-25 → 2021-08-26 A (+1d) | 2021-08-25 → 2021-08-26 A (+1d) |  | 0% → 100% | 0d → none | baseline start 2021-08-25 → 2021-08-26; baseline finish 2021-08-25 → 2021-08-26 |

## Version 4 (saved 2021-06-29, file Progetto 2 PM Iniziale.mpp)

Note of the change: Project Finale

Last finish 2021-08-26 → 2021-08-23 (-3d). Complete tasks 82 → 0.

Changed:

| ID | Task | Start | Finish | Duration | Complete | Total float | Predecessors | Other |
| --- | --- | --- | --- | --- | --- | --- | --- | --- |
| 1 | **Preso 3D** | 2021-01-12 A → 2021-01-12 | 2021-08-26 → 2021-08-23 (-3d) | 163d → 160d | 99% → 0% |  |  | baseline finish 2021-08-26 → 2021-08-23 |
| 2 | **OR1:GESTIONE E CONTROLLO** | 2021-01-12 A → 2021-01-12 | 2021-08-26 → 2021-08-23 (-3d) | 163d → 160d | 99% → 0% |  |  | resources none → spesa per wp immobile [0.1%]; Spese Generali per wp [0.1%]; baseline finish 2021-08-26 → 2021-08-23 |
| 3 | **Documenti di Project Management** | 2021-01-12 A → 2021-01-12 |  |  | 99% → 0% |  |  | resources spesa per wp immobile [0.1%]; Spese Generali per wp [0.1%] → none |
| 4 | Business Case e Piano di Progetto | 2021-01-12 A → 2021-01-12 | 2021-01-14 A → 2021-01-14 |  | 100% → 0% | none → 0d |  |  |
| 5 | Documento di Gestione dei Rischi | 2021-01-15 A → 2021-01-15 | 2021-01-18 A → 2021-01-18 |  | 100% → 0% | none → 0d |  | resources Cristian Colavito; Spesa poliza assicurativa capannone [0.1%] → Cristian Colavito |
| 6 | Documento di Gestione della Qualità | 2021-01-19 A → 2021-01-19 | 2021-01-21 A → 2021-01-21 |  | 100% → 0% | none → 0d |  |  |
| 7 | Documento di Gestione della Comunicazione | 2021-01-22 A → 2021-01-22 | 2021-01-28 A → 2021-01-28 |  | 100% → 0% | none → 0d |  |  |
| 8 | Documento di Gestione del Timing, del Budget e delle Risorse | 2021-01-29 A → 2021-01-29 | 2021-02-01 A → 2021-02-01 |  | 100% → 0% | none → 0d |  |  |
| 9 | Studio di mercato | 2021-02-02 A → 2021-02-02 | 2021-02-03 A → 2021-02-03 |  | 100% → 0% | none → 0d |  |  |
| 10 | Documento di Controllo e Monitoraggio sugli Obiettivi del Progetto | 2021-02-04 A → 2021-02-04 | 2021-08-18 A → 2021-08-18 |  | 100% → 0% | none → 0d |  |  |
| 11 | **Chiusura e lesson Learned** | 2021-08-24 A → 2021-08-19 (-5d) | 2021-08-26 A → 2021-08-23 (-3d) |  | 100% → 0% | none → 0d |  | baseline start 2021-08-24 → 2021-08-19; baseline finish 2021-08-26 → 2021-08-23 |
| 12 | Documento di Chiusura | 2021-08-24 A → 2021-08-19 (-5d) | 2021-08-24 A → 2021-08-19 (-5d) |  | 100% → 0% | none → 0d |  | baseline start 2021-08-24 → 2021-08-19; baseline finish 2021-08-24 → 2021-08-19 |
| 13 | Lessons Learned | 2021-08-25 A → 2021-08-20 (-5d) | 2021-08-26 A → 2021-08-23 (-3d) |  | 100% → 0% | none → 0d |  | baseline start 2021-08-25 → 2021-08-20; baseline finish 2021-08-26 → 2021-08-23 |
| 14 | **OR2 Realizzazione Back-end** | 2021-02-03 A → 2021-02-03 | 2021-04-16 A → 2021-04-16 |  | 100% → 0% | none → 0d |  |  |
| 15 | Milestone 1: Documenti inizio progetto | 2021-02-03 A → 2021-02-03 | 2021-02-03 A → 2021-02-03 |  | 100% → 0% | none → 0d |  |  |
| 16 | **Configurazione Server** | 2021-02-04 A → 2021-02-04 | 2021-02-08 A → 2021-02-08 |  | 100% → 0% | none → 0d |  |  |
| 17 | Inizializzazione dominio web | 2021-02-04 A → 2021-02-04 | 2021-02-05 A → 2021-02-05 |  | 100% → 0% | none → 0d |  |  |
| 18 | Avvio server sul dominio | 2021-02-08 A → 2021-02-08 | 2021-02-08 A → 2021-02-08 |  | 100% → 0% | none → 0d |  |  |
| 19 | **Progettazione e realizzazione database** | 2021-02-09 A → 2021-02-09 | 2021-02-25 A → 2021-02-25 |  | 100% → 0% | none → 0d |  |  |
| 20 | Realizzazione diagramma E/R | 2021-02-09 A → 2021-02-09 | 2021-02-15 A → 2021-02-15 |  | 100% → 0% | none → 0d |  |  |
| 21 | Progettazione logica del database | 2021-02-16 A → 2021-02-16 | 2021-02-17 A → 2021-02-17 |  | 100% → 0% | none → 0d |  |  |
| 22 | Progettazione fisica del database | 2021-02-18 A → 2021-02-18 | 2021-02-19 A → 2021-02-19 |  | 100% → 0% | none → 0d |  |  |
| 23 | Implementazione del database | 2021-02-22 A → 2021-02-22 | 2021-02-25 A → 2021-02-25 |  | 100% → 0% | none → 0d |  |  |
| 24 | Milestone 2: Database | 2021-02-25 A → 2021-02-25 | 2021-02-25 A → 2021-02-25 |  | 100% → 0% | none → 0d |  |  |
| 25 | **Realizzazione Service** | 2021-02-26 A → 2021-02-26 | 2021-03-23 A → 2021-03-25 (+2d) | 18d → 20d | 100% → 0% | none → 0d |  | baseline finish 2021-03-23 → 2021-03-25 |
| 26 | Servizi del User | 2021-02-26 A → 2021-02-26 | 2021-03-09 A → 2021-03-11 (+2d) | 8d → 10d | 100% → 0% | none → 0d |  | baseline finish 2021-03-09 → 2021-03-11 |
| 27 | Servizi dell Azienda | 2021-02-26 A → 2021-02-26 | 2021-03-09 A → 2021-03-11 (+2d) | 8d → 10d | 100% → 0% | none → 0d |  | baseline finish 2021-03-09 → 2021-03-11 |
| 28 | Servizi del designer | 2021-03-12 A → 2021-03-12 | 2021-03-23 A → 2021-03-25 (+2d) | 8d → 10d | 100% → 0% | none → 0d |  | baseline finish 2021-03-23 → 2021-03-25 |
| 29 | Servizi del Moderator | 2021-03-12 A → 2021-03-12 | 2021-03-23 A → 2021-03-25 (+2d) | 8d → 10d | 100% → 0% | none → 0d |  | baseline finish 2021-03-23 → 2021-03-25 |
| 30 | **Realizzazione Controller** | 2021-03-26 A → 2021-03-26 | 2021-04-16 A → 2021-04-16 |  | 100% → 0% | none → 0d |  |  |
| 31 | Realizzazione Controller Public | 2021-03-26 A → 2021-03-26 | 2021-04-02 A → 2021-04-02 |  | 100% → 0% | none → 0d |  |  |
| 32 | Realizzazione Controller InternoAzienda | 2021-03-26 A → 2021-03-26 | 2021-04-02 A → 2021-04-02 |  | 100% → 0% | none → 0d |  |  |
| 33 | Realizzazione Controller User | 2021-04-05 A → 2021-04-05 | 2021-04-13 A → 2021-04-13 |  | 100% → 0% | none → 3d |  |  |
| 34 | Realizzazione Controller Designer | 2021-04-05 A → 2021-04-05 | 2021-04-16 A → 2021-04-16 |  | 100% → 0% | none → 0d |  |  |
| 35 | Realizzazione Controller Moderator | 2021-04-05 A → 2021-04-05 | 2021-04-16 A → 2021-04-16 |  | 100% → 0% | none → 0d |  |  |
| 36 | SAL: Fine Back-end | 2021-04-16 A → 2021-04-16 | 2021-04-16 A → 2021-04-16 |  | 100% → 0% | none → 0d |  |  |
| 37 | **OR3: Realizzazione Front-end** | 2021-04-19 A → 2021-04-19 |  |  | 99% → 0% |  |  |  |
| 38 | **Mappa di navigazione del sito e design del sito** | 2021-04-19 A → 2021-04-19 | 2021-05-21 → 2021-05-14 (-7d) | 25d → 20d | 99% → 0% | none → 0d |  | baseline finish 2021-05-21 → 2021-05-14 |
| 39 | Realizzazione mappa di navigazione del sito | 2021-04-19 A → 2021-04-19 | 2021-04-19 A → 2021-04-19 |  | 100% → 0% | none → 19d |  |  |
| 40 | Scelta colori e font del sito | 2021-04-19 A → 2021-04-19 | 2021-04-20 A → 2021-04-20 |  | 100% → 0% | none → 0d |  |  |
| 41 | Progettazione Header | 2021-04-21 A → 2021-04-21 | 2021-04-22 A → 2021-04-22 |  | 100% → 0% | none → 16d |  |  |
| 42 | Progettazione Footer | 2021-04-21 A → 2021-04-21 | 2021-04-22 A → 2021-04-22 |  | 100% → 0% | none → 0d |  |  |
| 43 | Progettazione Pagina Profilo | 2021-04-23 A → 2021-04-23 | 2021-04-26 A → 2021-04-26 |  | 100% → 0% | none → 14d |  |  |
| 44 | Progettazione Pagina Login | 2021-04-23 A → 2021-04-23 | 2021-04-26 A → 2021-04-26 |  | 100% → 0% | none → 0d |  |  |
| 45 | Progettazione Registrazione | 2021-04-27 A → 2021-04-27 | 2021-04-28 A → 2021-04-28 |  | 100% → 0% | none → 12d |  |  |
| 46 | Progettazione area recensioni | 2021-04-27 A → 2021-04-27 | 2021-04-29 A → 2021-04-29 |  | 100% → 0% | none → 0d |  |  |
| 47 | Progettazione Carrello | 2021-04-30 A → 2021-04-30 | 2021-05-03 A → 2021-05-03 |  | 100% → 0% | none → 9d |  |  |
| 48 | Progettazione area acquisti | 2021-04-30 A → 2021-04-30 | 2021-05-04 A → 2021-05-04 |  | 100% → 0% | none → 0d |  |  |
| 49 | Progettazione pagina prodotto | 2021-05-05 A → 2021-05-05 | 2021-05-06 A → 2021-05-06 |  | 100% → 0% | none → 6d |  |  |
| 50 | Progettazione Modifica Prodotto | 2021-05-05 A → 2021-05-05 | 2021-05-05 A → 2021-05-05 |  | 100% → 0% | none → 0d |  |  |
| 51 | Progettazione Visualizza profilo utente e designer | 2021-05-06 A → 2021-05-06 | 2021-05-07 A → 2021-05-07 |  | 100% → 0% | none → 0d |  |  |
| 52 | Progettazione Area Lavora con noi | 2021-05-06 A → 2021-05-06 | 2021-05-06 A → 2021-05-06 |  | 100% → 0% | none → 0d |  |  |
| 53 | Progettazione Chat | 2021-05-10 A → 2021-05-10 | 2021-05-13 A → 2021-05-11 (-2d) | 4d → 2d | 100% → 0% | none → 0d |  | baseline finish 2021-05-13 → 2021-05-11 |
| 54 | Progettazione Area Candidati Designer | 2021-05-10 A → 2021-05-10 | 2021-05-11 A → 2021-05-11 |  | 100% → 0% | none → 0d |  |  |
| 55 | Progettazione Area Ordini | 2021-05-14 A → 2021-05-12 (-2d) | 2021-05-14 A → 2021-05-13 (-1d) | 1d → 2d | 100% → 0% | none → 1d |  | baseline start 2021-05-14 → 2021-05-12; baseline finish 2021-05-14 → 2021-05-13 |
| 56 | Progettazione Area Gestione Produzione | 2021-05-14 A → 2021-05-12 (-2d) | 2021-05-17 A → 2021-05-13 (-4d) |  | 100% → 0% | none → 0d |  | baseline start 2021-05-14 → 2021-05-12; baseline finish 2021-05-17 → 2021-05-13 |
| 57 | Progettazione Area Classifica | 2021-05-18 A → 2021-05-14 (-4d) | 2021-05-21 A → 2021-05-14 (-7d) | 4d → 1d | 100% → 0% | none → 0d |  | baseline start 2021-05-18 → 2021-05-14; baseline finish 2021-05-21 → 2021-05-14 |
| 58 | Progettazione Area Ricerca Prodotto | 2021-05-18 A → 2021-05-14 (-4d) | 2021-05-21 A → 2021-05-14 (-7d) | 4d → 1d | 100% → 0% | none → 0d |  | resources Ronald McDonovan → Franco Morbidoni; baseline start 2021-05-18 → 2021-05-14; baseline finish 2021-05-21 → 2021-05-14 |
| 59 | Milestone 3: Mockup del sito | 2021-05-17 A → 2021-05-14 (-3d) | 2021-05-17 A → 2021-05-14 (-3d) |  | 100% → 0% | none → 0d | 55 → 38 | constraint start no earlier than 2021-05-17 → none; baseline start 2021-05-17 → 2021-05-14; baseline finish 2021-05-17 → 2021-05-14 |
| 60 | **Realizzazione Viste** | 2021-05-17 A → 2021-05-17 | 2021-06-10 A → 2021-06-10 |  | 100% → 0% | none → 0d |  |  |
| 61 | Realizzazione Header | 2021-05-17 A → 2021-05-17 | 2021-05-17 A → 2021-05-17 |  | 100% → 0% | none → 1d |  |  |
| 62 | Realizzazione Footer | 2021-05-17 A → 2021-05-17 | 2021-05-17 A → 2021-05-17 |  | 100% → 0% | none → 0d |  |  |
| 63 | Realizzazione Pagina Profilo | 2021-05-18 A → 2021-05-18 | 2021-05-18 A → 2021-05-18 |  | 100% → 0% | none → 1d |  |  |
| 64 | Realizzazione Pagina Login | 2021-05-18 A → 2021-05-18 | 2021-05-18 A → 2021-05-18 |  | 100% → 0% | none → 0d |  |  |
| 65 | Realizzazione Registrazione | 2021-05-19 A → 2021-05-19 | 2021-05-19 A → 2021-05-19 |  | 100% → 0% | none → 1d |  |  |
| 66 | Realizzazione area recensioni | 2021-05-19 A → 2021-05-19 | 2021-05-20 A → 2021-05-20 |  | 100% → 0% | none → 0d |  |  |
| 67 | Realizzazione Carrello | 2021-05-20 A → 2021-05-20 | 2021-05-21 A → 2021-05-21 |  | 100% → 0% | none → 1d |  |  |
| 68 | Realizzazione area acquisti | 2021-05-21 A → 2021-05-21 | 2021-05-24 A → 2021-05-24 |  | 100% → 0% | none → 0d |  |  |
| 69 | Realizzazione pagina prodotto | 2021-05-24 A → 2021-05-24 | 2021-05-26 A → 2021-05-26 |  | 100% → 0% | none → 1d |  |  |
| 70 | Realizzazione Modifica Prodotto | 2021-05-25 A → 2021-05-25 | 2021-05-27 A → 2021-05-27 |  | 100% → 0% | none → 0d |  |  |

| ID | Task | Start | Finish | Duration | Complete | Total float | Predecessors | Other |
| --- | --- | --- | --- | --- | --- | --- | --- | --- |
| 71 | Realizzazione Visualizza profilo utente e designer | 2021-05-27 A → 2021-05-27 | 2021-05-28 A → 2021-05-28 |  | 100% → 0% | none → 1d |  |  |
| 72 | Realizzazione Area Lavora con noi | 2021-05-28 A → 2021-05-28 | 2021-05-31 A → 2021-05-31 |  | 100% → 0% | none → 0d |  |  |
| 73 | Realizzazione Chat | 2021-05-31 A → 2021-05-31 | 2021-06-01 A → 2021-06-01 |  | 100% → 0% | none → 1d |  |  |
| 74 | Realizzazione Area Candidati Designer | 2021-06-01 A → 2021-06-01 | 2021-06-02 A → 2021-06-02 |  | 100% → 0% | none → 0d |  |  |
| 75 | Realizzazione Area Ordini | 2021-06-02 A → 2021-06-02 | 2021-06-03 A → 2021-06-03 |  | 100% → 0% | none → 1d |  |  |
| 76 | Realizzazione Area Gestione Produzione | 2021-06-03 A → 2021-06-03 | 2021-06-04 A → 2021-06-04 |  | 100% → 0% | none → 0d |  |  |
| 77 | Realizzazione Area Classifica | 2021-06-04 A → 2021-06-04 | 2021-06-09 A → 2021-06-09 |  | 100% → 0% | none → 1d |  |  |
| 78 | Realizzazione Area Ricerca Prodotto | 2021-06-07 A → 2021-06-07 | 2021-06-10 A → 2021-06-10 |  | 100% → 0% | none → 0d |  |  |
| 79 | SAL: Fine Front-end | 2021-06-10 A → 2021-06-10 | 2021-06-10 A → 2021-06-10 |  | 100% → 0% | none → 0d |  |  |
| 80 | **OR4: Organizzazione della rete locale e testing** | 2021-06-11 A → 2021-06-11 | 2021-08-26 → 2021-08-23 (-3d) | 55d → 52d | 99% → 0% |  |  | baseline finish 2021-08-26 → 2021-08-23 |
| 81 | **Report pianificazione dell’infrastruttura di rete** | 2021-06-11 A → 2021-06-11 | 2021-07-07 A → 2021-07-07 |  | 100% → 0% | none → 0d |  |  |
| 82 | Analisi di mercato sulle soluzioni topologiche moderne | 2021-06-11 A → 2021-06-11 | 2021-06-14 A → 2021-06-14 |  | 100% → 0% | none → 0d |  |  |
| 83 | Individuazione asset informatici e rischi correlati | 2021-06-15 A → 2021-06-15 | 2021-06-22 A → 2021-06-22 |  | 100% → 0% | none → 0d |  |  |
| 84 | Pianificazione su software di simulazione di topologie di rete | 2021-06-23 A → 2021-06-23 | 2021-07-01 A → 2021-07-01 |  | 100% → 0% | none → 0d |  |  |
| 85 | Stesura di report finale sulla pianificazione della rete | 2021-07-02 A → 2021-07-02 | 2021-07-07 A → 2021-07-07 |  | 100% → 0% | none → 0d |  |  |
| 86 | Milestone 4: Progettazione Infrastruttura | 2021-07-07 A → 2021-07-07 | 2021-07-07 A → 2021-07-07 |  | 100% → 0% | none → 0d |  |  |
| 87 | **Realizzazione dell’infrastruttura di rete** | 2021-07-08 A → 2021-07-08 | 2021-08-03 A → 2021-07-28 (-6d) | 19d → 15d | 100% → 0% | none → 18d |  | baseline finish 2021-08-03 → 2021-08-09 |
| 88 | Acquisto degli apparati necessari e realizzazione della rete | 2021-07-08 A → 2021-07-08 | 2021-07-29 A → 2021-07-23 (-6d) | 16d → 12d | 100% → 0% | none → 18d |  | resources Gabriele De Bartolomeo; Wifi Access Points [1600%]; Switches L2/L3 e Routers [1225%]; Stampanti di rete [250%]; Enterprise Switches (Accesso) [250%]; Enterprise Switches (Aggregazione) [400%]; Enterprise Routers (Edge) [250%]; Firewall [250%]; Domain Servers [250%]; Storage Area Network [175%] → Gabriele De Bartolomeo [39.3%]; Wifi Access Points [2000%]; Switches L2/L3 e Routers [1500%]; Stampanti di rete [200%]; Enterprise Switches (Accesso) [200%]; Enterprise Switches (Aggregazione) [400%]; Enterprise Routers (Edge) [200%]; Firewall [200%]; Domain Servers [200%]; Storage Area Network; baseline finish 2021-07-29 → 2021-08-04 |
| 89 | Messa in opera dell’infrastruttura di rete | 2021-07-30 A → 2021-07-26 (-4d) | 2021-08-03 A → 2021-07-28 (-6d) |  | 100% → 0% | none → 18d |  | baseline start 2021-07-30 → 2021-08-05; baseline finish 2021-08-03 → 2021-08-09 |
| 90 | **Rafforzamento della sicurezza informatica** | 2021-07-08 A → 2021-07-08 | 2021-08-02 → 2021-07-29 (-4d) | 18d → 16d | 99% → 0% | 18d → 0d |  | baseline finish 2021-08-02 → 2021-07-29 |
| 91 | Valutazione preventivi con aziende specializzate in penetration testing | 2021-07-08 A → 2021-07-08 | 2021-07-21 A → 2021-07-21 |  | 100% → 0% | none → 0d |  |  |
| 92 | Svolgimento penetration testing da parte di due aziende scelte | 2021-07-22 A → 2021-07-22 |  |  | 99% → 0% | 24d → 0d |  |  |
| 93 | Simulazione Disaster Recovery | 2021-07-27 A → 2021-07-26 (-1d) | 2021-07-29 A → 2021-07-27 (-2d) | 3d → 2d | 100% → 0% | none → 0d |  | constraint start no earlier than 2021-07-27 → none; baseline start 2021-07-27 → 2021-07-26; baseline finish 2021-07-29 → 2021-07-27 |
| 94 | Stesura delle linee guida per un piano di Disaster Recovery | 2021-07-30 A → 2021-07-28 (-2d) | 2021-08-02 A → 2021-07-29 (-4d) |  | 100% → 0% | none → 0d |  | baseline start 2021-07-30 → 2021-07-28; baseline finish 2021-08-02 → 2021-07-29 |
| 95 | Valutazione preventivi con aziende specializzate nell’attività di training per il contrasto al social engineering | 2021-07-08 A → 2021-07-08 | 2021-07-12 A → 2021-07-12 |  | 100% → 0% | none → 10d |  |  |
| 96 | Contrattazione ed erogazione del corso anti social-engineering da parte dell'azienda scelta | 2021-07-13 A → 2021-07-13 |  |  | 99% → 0% | 30d → 10d |  |  |
| 97 | Milestone 5: Realizzazione Infrastruttura | 2021-08-03 A → 2021-07-29 (-5d) | 2021-08-03 A → 2021-07-29 (-5d) |  | 100% → 0% | none → 0d | 90, 87 → 90 | baseline start 2021-08-03 → 2021-07-29; baseline finish 2021-08-03 → 2021-07-29 |
| 98 | **Deploy della Piattaforma e testing** | 2021-08-04 A → 2021-07-30 (-5d) | 2021-08-23 A → 2021-08-18 (-5d) |  | 100% → 0% | none → 0d |  | baseline start 2021-08-04 → 2021-07-30; baseline finish 2021-08-23 → 2021-08-18 |
| 99 | Deploy della piattaforma | 2021-08-04 A → 2021-07-30 (-5d) | 2021-08-09 A → 2021-08-04 (-5d) |  | 100% → 0% | none → 0d |  | baseline start 2021-08-04 → 2021-07-30; baseline finish 2021-08-09 → 2021-08-04 |
| 100 | Testing della piattaforma | 2021-08-10 A → 2021-08-05 (-5d) | 2021-08-23 A → 2021-08-18 (-5d) |  | 100% → 0% | none → 0d |  | baseline start 2021-08-10 → 2021-08-05; baseline finish 2021-08-23 → 2021-08-18 |
| 101 | Testing e Chiusura Progetto | 2021-08-26 A → 2021-08-23 (-3d) | 2021-08-26 A → 2021-08-23 (-3d) |  | 100% → 0% | none → 0d |  | was named SAL: Testing e Chiusura Progetto; baseline start 2021-08-26 → 2021-08-23; baseline finish 2021-08-26 → 2021-08-23 |

## Version 5 (data date 2021-06-10, saved 2021-06-29, file Progetto 2 PM Finale.mpp)

Last finish 2021-08-23 → 2021-08-26 (+3d). Complete tasks 0 → 81.

Changed:

| ID | Task | Start | Finish | Duration | Complete | Total float | Predecessors | Other |
| --- | --- | --- | --- | --- | --- | --- | --- | --- |
| 1 | **Preso 3D** | 2021-01-12 A | 2021-08-23 → 2021-08-26 (+3d) | 160d → 163d | 0% → 88% |  |  | baseline finish 2021-08-23 → 2021-08-26 |
| 2 | **OR1:GESTIONE E CONTROLLO** | 2021-01-12 A | 2021-08-23 → 2021-08-26 (+3d) | 160d → 163d | 0% → 69% |  |  | resources spesa per wp immobile [0.1%]; Spese Generali per wp [0.1%] → none; baseline finish 2021-08-23 → 2021-08-26 |
| 3 | **Documenti di Project Management** | 2021-01-12 A |  |  | 0% → 69% | 0d → 6d |  | resources none → spesa per wp immobile [0.1%]; Spese Generali per wp [0.1%] |
| 4 | Business Case e Piano di Progetto | 2021-01-12 A | 2021-01-14 A |  | 0% → 100% | 0d → none |  |  |
| 5 | Documento di Gestione dei Rischi | 2021-01-15 A | 2021-01-18 A |  | 0% → 100% | 0d → none |  | resources Cristian Colavito → Cristian Colavito; Spesa poliza assicurativa capannone [0.1%] |
| 6 | Documento di Gestione della Qualità | 2021-01-19 A | 2021-01-21 A |  | 0% → 100% | 0d → none |  |  |
| 7 | Documento di Gestione della Comunicazione | 2021-01-22 A | 2021-01-28 A |  | 0% → 100% | 0d → none |  |  |
| 8 | Documento di Gestione del Timing, del Budget e delle Risorse | 2021-01-29 A | 2021-02-01 A |  | 0% → 100% | 0d → none |  |  |
| 9 | Studio di mercato | 2021-02-02 A | 2021-02-03 A |  | 0% → 100% | 0d → none |  |  |
| 10 | Documento di Controllo e Monitoraggio sugli Obiettivi del Progetto | 2021-02-04 A |  |  | 0% → 65% | 0d → 6d |  |  |
| 11 | **Chiusura e lesson Learned** | 2021-08-19 → 2021-08-24 A (+5d) | 2021-08-23 → 2021-08-26 A (+3d) |  | 0% → 100% | 0d → none |  | baseline start 2021-08-19 → 2021-08-24; baseline finish 2021-08-23 → 2021-08-26 |
| 12 | Documento di Chiusura | 2021-08-19 → 2021-08-24 A (+5d) | 2021-08-19 → 2021-08-24 A (+5d) |  | 0% → 100% | 0d → none |  | baseline start 2021-08-19 → 2021-08-24; baseline finish 2021-08-19 → 2021-08-24 |
| 13 | Lessons Learned | 2021-08-20 → 2021-08-25 A (+5d) | 2021-08-23 → 2021-08-26 A (+3d) |  | 0% → 100% | 0d → none |  | baseline start 2021-08-20 → 2021-08-25; baseline finish 2021-08-23 → 2021-08-26 |
| 14 | **OR2 Realizzazione Back-end** | 2021-02-03 A | 2021-04-16 A |  | 0% → 100% | 0d → none |  |  |
| 15 | Milestone 1: Documenti inizio progetto | 2021-02-03 A | 2021-02-03 A |  | 0% → 100% | 0d → none |  |  |
| 16 | **Configurazione Server** | 2021-02-04 A | 2021-02-08 A |  | 0% → 100% | 0d → none |  |  |
| 17 | Inizializzazione dominio web | 2021-02-04 A | 2021-02-05 A |  | 0% → 100% | 0d → none |  |  |
| 18 | Avvio server sul dominio | 2021-02-08 A | 2021-02-08 A |  | 0% → 100% | 0d → none |  |  |
| 19 | **Progettazione e realizzazione database** | 2021-02-09 A | 2021-02-25 A |  | 0% → 100% | 0d → none |  |  |
| 20 | Realizzazione diagramma E/R | 2021-02-09 A | 2021-02-15 A |  | 0% → 100% | 0d → none |  |  |
| 21 | Progettazione logica del database | 2021-02-16 A | 2021-02-17 A |  | 0% → 100% | 0d → none |  |  |
| 22 | Progettazione fisica del database | 2021-02-18 A | 2021-02-19 A |  | 0% → 100% | 0d → none |  |  |
| 23 | Implementazione del database | 2021-02-22 A | 2021-02-25 A |  | 0% → 100% | 0d → none |  |  |
| 24 | Milestone 2: Database | 2021-02-25 A | 2021-02-25 A |  | 0% → 100% | 0d → none |  |  |
| 25 | **Realizzazione Service** | 2021-02-26 A | 2021-03-25 → 2021-03-23 A (-2d) | 20d → 18d | 0% → 100% | 0d → none |  | baseline finish 2021-03-25 → 2021-03-23 |
| 26 | Servizi del User | 2021-02-26 A | 2021-03-11 → 2021-03-09 A (-2d) | 10d → 8d | 0% → 100% | 0d → none |  | baseline finish 2021-03-11 → 2021-03-09 |
| 27 | Servizi dell Azienda | 2021-02-26 A | 2021-03-11 → 2021-03-09 A (-2d) | 10d → 8d | 0% → 100% | 0d → none |  | baseline finish 2021-03-11 → 2021-03-09 |
| 28 | Servizi del designer | 2021-03-12 A | 2021-03-25 → 2021-03-23 A (-2d) | 10d → 8d | 0% → 100% | 0d → none |  | baseline finish 2021-03-25 → 2021-03-23 |
| 29 | Servizi del Moderator | 2021-03-12 A | 2021-03-25 → 2021-03-23 A (-2d) | 10d → 8d | 0% → 100% | 0d → none |  | baseline finish 2021-03-25 → 2021-03-23 |
| 30 | **Realizzazione Controller** | 2021-03-26 A | 2021-04-16 A |  | 0% → 100% | 0d → none |  |  |
| 31 | Realizzazione Controller Public | 2021-03-26 A | 2021-04-02 A |  | 0% → 100% | 0d → none |  |  |
| 32 | Realizzazione Controller InternoAzienda | 2021-03-26 A | 2021-04-02 A |  | 0% → 100% | 0d → none |  |  |
| 33 | Realizzazione Controller User | 2021-04-05 A | 2021-04-13 A |  | 0% → 100% | 3d → none |  |  |
| 34 | Realizzazione Controller Designer | 2021-04-05 A | 2021-04-16 A |  | 0% → 100% | 0d → none |  |  |
| 35 | Realizzazione Controller Moderator | 2021-04-05 A | 2021-04-16 A |  | 0% → 100% | 0d → none |  |  |
| 36 | SAL: Fine Back-end | 2021-04-16 A | 2021-04-16 A |  | 0% → 100% | 0d → none |  |  |
| 37 | **OR3: Realizzazione Front-end** | 2021-04-19 A | 2021-06-10 A |  | 0% → 100% | 0d → none |  |  |
| 38 | **Mappa di navigazione del sito e design del sito** | 2021-04-19 A | 2021-05-14 → 2021-05-21 A (+7d) | 20d → 25d | 0% → 100% | 0d → none |  | baseline finish 2021-05-14 → 2021-05-21 |
| 39 | Realizzazione mappa di navigazione del sito | 2021-04-19 A | 2021-04-19 A |  | 0% → 100% | 19d → none |  |  |
| 40 | Scelta colori e font del sito | 2021-04-19 A | 2021-04-20 A |  | 0% → 100% | 0d → none |  |  |
| 41 | Progettazione Header | 2021-04-21 A | 2021-04-22 A |  | 0% → 100% | 16d → none |  |  |
| 42 | Progettazione Footer | 2021-04-21 A | 2021-04-22 A |  | 0% → 100% | 0d → none |  |  |
| 43 | Progettazione Pagina Profilo | 2021-04-23 A | 2021-04-26 A |  | 0% → 100% | 14d → none |  |  |
| 44 | Progettazione Pagina Login | 2021-04-23 A | 2021-04-26 A |  | 0% → 100% | 0d → none |  |  |
| 45 | Progettazione Registrazione | 2021-04-27 A | 2021-04-28 A |  | 0% → 100% | 12d → none |  |  |
| 46 | Progettazione area recensioni | 2021-04-27 A | 2021-04-29 A |  | 0% → 100% | 0d → none |  |  |
| 47 | Progettazione Carrello | 2021-04-30 A | 2021-05-03 A |  | 0% → 100% | 9d → none |  |  |
| 48 | Progettazione area acquisti | 2021-04-30 A | 2021-05-04 A |  | 0% → 100% | 0d → none |  |  |
| 49 | Progettazione pagina prodotto | 2021-05-05 A | 2021-05-06 A |  | 0% → 100% | 6d → none |  |  |
| 50 | Progettazione Modifica Prodotto | 2021-05-05 A | 2021-05-05 A |  | 0% → 100% | 0d → none |  |  |
| 51 | Progettazione Visualizza profilo utente e designer | 2021-05-06 A | 2021-05-07 A |  | 0% → 100% | 0d → none |  |  |
| 52 | Progettazione Area Lavora con noi | 2021-05-06 A | 2021-05-06 A |  | 0% → 100% | 0d → none |  |  |
| 53 | Progettazione Chat | 2021-05-10 A | 2021-05-11 → 2021-05-13 A (+2d) | 2d → 4d | 0% → 100% | 0d → none |  | baseline finish 2021-05-11 → 2021-05-13 |
| 54 | Progettazione Area Candidati Designer | 2021-05-10 A | 2021-05-11 A |  | 0% → 100% | 0d → none |  |  |
| 55 | Progettazione Area Ordini | 2021-05-12 → 2021-05-14 A (+2d) | 2021-05-13 → 2021-05-14 A (+1d) | 2d → 1d | 0% → 100% | 1d → none |  | baseline start 2021-05-12 → 2021-05-14; baseline finish 2021-05-13 → 2021-05-14 |
| 56 | Progettazione Area Gestione Produzione | 2021-05-12 → 2021-05-14 A (+2d) | 2021-05-13 → 2021-05-17 A (+4d) |  | 0% → 100% | 0d → none |  | baseline start 2021-05-12 → 2021-05-14; baseline finish 2021-05-13 → 2021-05-17 |
| 57 | Progettazione Area Classifica | 2021-05-14 → 2021-05-18 A (+4d) | 2021-05-14 → 2021-05-21 A (+7d) | 1d → 4d | 0% → 100% | 0d → none |  | baseline start 2021-05-14 → 2021-05-18; baseline finish 2021-05-14 → 2021-05-21 |
| 58 | Progettazione Area Ricerca Prodotto | 2021-05-14 → 2021-05-18 A (+4d) | 2021-05-14 → 2021-05-21 A (+7d) | 1d → 4d | 0% → 100% | 0d → none |  | resources Franco Morbidoni → Ronald McDonovan; baseline start 2021-05-14 → 2021-05-18; baseline finish 2021-05-14 → 2021-05-21 |
| 59 | Milestone 3: Mockup del sito | 2021-05-14 → 2021-05-17 A (+3d) | 2021-05-14 → 2021-05-17 A (+3d) |  | 0% → 100% | 0d → none | 38 → 55 | constraint none → start no earlier than 2021-05-17; baseline start 2021-05-14 → 2021-05-17; baseline finish 2021-05-14 → 2021-05-17 |
| 60 | **Realizzazione Viste** | 2021-05-17 A | 2021-06-10 A |  | 0% → 100% | 0d → none |  |  |
| 61 | Realizzazione Header | 2021-05-17 A | 2021-05-17 A |  | 0% → 100% | 1d → none |  |  |
| 62 | Realizzazione Footer | 2021-05-17 A | 2021-05-17 A |  | 0% → 100% | 0d → none |  |  |
| 63 | Realizzazione Pagina Profilo | 2021-05-18 A | 2021-05-18 A |  | 0% → 100% | 1d → none |  |  |
| 64 | Realizzazione Pagina Login | 2021-05-18 A | 2021-05-18 A |  | 0% → 100% | 0d → none |  |  |
| 65 | Realizzazione Registrazione | 2021-05-19 A | 2021-05-19 A |  | 0% → 100% | 1d → none |  |  |
| 66 | Realizzazione area recensioni | 2021-05-19 A | 2021-05-20 A |  | 0% → 100% | 0d → none |  |  |
| 67 | Realizzazione Carrello | 2021-05-20 A | 2021-05-21 A |  | 0% → 100% | 1d → none |  |  |
| 68 | Realizzazione area acquisti | 2021-05-21 A | 2021-05-24 A |  | 0% → 100% | 0d → none |  |  |
| 69 | Realizzazione pagina prodotto | 2021-05-24 A | 2021-05-26 A |  | 0% → 100% | 1d → none |  |  |
| 70 | Realizzazione Modifica Prodotto | 2021-05-25 A | 2021-05-27 A |  | 0% → 100% | 0d → none |  |  |

| ID | Task | Start | Finish | Duration | Complete | Total float | Predecessors | Other |
| --- | --- | --- | --- | --- | --- | --- | --- | --- |
| 71 | Realizzazione Visualizza profilo utente e designer | 2021-05-27 A | 2021-05-28 A |  | 0% → 100% | 1d → none |  |  |
| 72 | Realizzazione Area Lavora con noi | 2021-05-28 A | 2021-05-31 A |  | 0% → 100% | 0d → none |  |  |
| 73 | Realizzazione Chat | 2021-05-31 A | 2021-06-01 A |  | 0% → 100% | 1d → none |  |  |
| 74 | Realizzazione Area Candidati Designer | 2021-06-01 A | 2021-06-02 A |  | 0% → 100% | 0d → none |  |  |
| 75 | Realizzazione Area Ordini | 2021-06-02 A | 2021-06-03 A |  | 0% → 100% | 1d → none |  |  |
| 76 | Realizzazione Area Gestione Produzione | 2021-06-03 A | 2021-06-04 A |  | 0% → 100% | 0d → none |  |  |
| 77 | Realizzazione Area Classifica | 2021-06-04 A | 2021-06-09 A |  | 0% → 100% | 1d → none |  |  |
| 78 | Realizzazione Area Ricerca Prodotto | 2021-06-07 A | 2021-06-10 A |  | 0% → 100% | 0d → none |  |  |
| 79 | SAL: Fine Front-end | 2021-06-10 A | 2021-06-10 A |  | 0% → 100% | 0d → none |  |  |
| 80 | **OR4: Organizzazione della rete locale e testing** | 2021-06-11 A | 2021-08-23 → 2021-08-26 (+3d) | 52d → 55d | 0% → 99% |  |  | baseline finish 2021-08-23 → 2021-08-26 |
| 81 | **Report pianificazione dell’infrastruttura di rete** | 2021-06-11 A | 2021-07-07 A |  | 0% → 100% | 0d → none |  |  |
| 82 | Analisi di mercato sulle soluzioni topologiche moderne | 2021-06-11 A | 2021-06-14 A |  | 0% → 100% | 0d → none |  |  |
| 83 | Individuazione asset informatici e rischi correlati | 2021-06-15 A | 2021-06-22 A |  | 0% → 100% | 0d → none |  |  |
| 84 | Pianificazione su software di simulazione di topologie di rete | 2021-06-23 A | 2021-07-01 A |  | 0% → 100% | 0d → none |  |  |
| 85 | Stesura di report finale sulla pianificazione della rete | 2021-07-02 A | 2021-07-07 A |  | 0% → 100% | 0d → none |  |  |
| 86 | Milestone 4: Progettazione Infrastruttura | 2021-07-07 A | 2021-07-07 A |  | 0% → 100% | 0d → none |  |  |
| 87 | **Realizzazione dell’infrastruttura di rete** | 2021-07-08 A | 2021-07-28 → 2021-08-03 A (+6d) | 15d → 19d | 0% → 100% | 18d → none |  | baseline finish 2021-08-09 → 2021-08-03 |
| 88 | Acquisto degli apparati necessari e realizzazione della rete | 2021-07-08 A | 2021-07-23 → 2021-07-29 A (+6d) | 12d → 16d | 0% → 100% | 18d → none |  | resources Gabriele De Bartolomeo [39.3%]; Wifi Access Points [2000%]; Switches L2/L3 e Routers [1500%]; Stampanti di rete [200%]; Enterprise Switches (Accesso) [200%]; Enterprise Switches (Aggregazione) [400%]; Enterprise Routers (Edge) [200%]; Firewall [200%]; Domain Servers [200%]; Storage Area Network → Gabriele De Bartolomeo; Wifi Access Points [1600%]; Switches L2/L3 e Routers [1225%]; Stampanti di rete [250%]; Enterprise Switches (Accesso) [250%]; Enterprise Switches (Aggregazione) [400%]; Enterprise Routers (Edge) [250%]; Firewall [250%]; Domain Servers [250%]; Storage Area Network [175%]; baseline finish 2021-08-04 → 2021-07-29 |
| 89 | Messa in opera dell’infrastruttura di rete | 2021-07-26 → 2021-07-30 A (+4d) | 2021-07-28 → 2021-08-03 A (+6d) |  | 0% → 100% | 18d → none |  | baseline start 2021-08-05 → 2021-07-30; baseline finish 2021-08-09 → 2021-08-03 |
| 90 | **Rafforzamento della sicurezza informatica** | 2021-07-08 A | 2021-07-29 → 2021-08-02 (+4d) | 16d → 18d | 0% → 99% | 0d → 18d |  | baseline finish 2021-07-29 → 2021-08-02 |
| 91 | Valutazione preventivi con aziende specializzate in penetration testing | 2021-07-08 A | 2021-07-21 A |  | 0% → 100% | 0d → none |  |  |
| 92 | Svolgimento penetration testing da parte di due aziende scelte | 2021-07-22 A |  |  | 0% → 99% | 0d → 24d |  |  |
| 93 | Simulazione Disaster Recovery | 2021-07-26 → 2021-07-27 A (+1d) | 2021-07-27 → 2021-07-29 A (+2d) | 2d → 3d | 0% → 100% | 0d → none |  | constraint none → start no earlier than 2021-07-27; baseline start 2021-07-26 → 2021-07-27; baseline finish 2021-07-27 → 2021-07-29 |
| 94 | Stesura delle linee guida per un piano di Disaster Recovery | 2021-07-28 → 2021-07-30 A (+2d) | 2021-07-29 → 2021-08-02 A (+4d) |  | 0% → 100% | 0d → none |  | baseline start 2021-07-28 → 2021-07-30; baseline finish 2021-07-29 → 2021-08-02 |
| 95 | Valutazione preventivi con aziende specializzate nell’attività di training per il contrasto al social engineering | 2021-07-08 A | 2021-07-12 A |  | 0% → 100% | 10d → none |  |  |
| 96 | Contrattazione ed erogazione del corso anti social-engineering da parte dell'azienda scelta | 2021-07-13 A |  |  | 0% → 99% | 10d → 30d |  |  |
| 97 | Milestone 5: Realizzazione Infrastruttura | 2021-07-29 → 2021-08-03 A (+5d) | 2021-07-29 → 2021-08-03 A (+5d) |  | 0% → 100% | 0d → none | 90 → 90, 87 | baseline start 2021-07-29 → 2021-08-03; baseline finish 2021-07-29 → 2021-08-03 |
| 98 | **Deploy della Piattaforma e testing** | 2021-07-30 → 2021-08-04 A (+5d) | 2021-08-18 → 2021-08-23 A (+5d) |  | 0% → 100% | 0d → none |  | baseline start 2021-07-30 → 2021-08-04; baseline finish 2021-08-18 → 2021-08-23 |
| 99 | Deploy della piattaforma | 2021-07-30 → 2021-08-04 A (+5d) | 2021-08-04 → 2021-08-09 A (+5d) |  | 0% → 100% | 0d → none |  | baseline start 2021-07-30 → 2021-08-04; baseline finish 2021-08-04 → 2021-08-09 |
| 100 | Testing della piattaforma | 2021-08-05 → 2021-08-10 A (+5d) | 2021-08-18 → 2021-08-23 A (+5d) |  | 0% → 100% | 0d → none |  | baseline start 2021-08-05 → 2021-08-10; baseline finish 2021-08-18 → 2021-08-23 |
| 101 | Testing e Chiusura Progetto | 2021-08-23 → 2021-08-26 A (+3d) | 2021-08-23 → 2021-08-26 A (+3d) |  | 0% → 100% | 0d → none |  | baseline start 2021-08-23 → 2021-08-26; baseline finish 2021-08-23 → 2021-08-26 |
