# Progetto 2 PM

How a schedule from MS Project changed from version to version. A marks actual dates.

## Version 1 (saved 2020-12-22)

Note of the change: File Iniziale Project

| ID | WBS | Task | Duration | Start | Finish | Predecessors | Total float | Constraint |
| --- | --- | --- | --- | --- | --- | --- | --- | --- |
| 1 | 1 | **OR1:GESTIONE E CONTROLLO** | 25d? | 2020-12-22 | 2021-01-25 |  | 20d |  |
| 2 |  | Business Case e Piano di Progetto | 6d | 2020-12-22 | 2020-12-29 |  | 20d |  |
| 3 |  | Documento di Gestione dei Rischi | 3d | 2020-12-30 | 2021-01-01 | 2 | 20d |  |
| 4 |  | Documento di Gestione della Qualità | 3d | 2021-01-04 | 2021-01-06 | 3 | 20d |  |
| 5 |  | Documento di Gestione della Comunicazione | 3d | 2021-01-07 | 2021-01-11 | 4 | 20d |  |
| 6 |  | Documento di Gestione del Timing, del Budget e delle Risorse | 3d | 2021-01-12 | 2021-01-14 | 5 | 20d |  |
| 7 |  | Documento di Controllo e Monitoraggio sugli Obiettivi del Progetto | 3d | 2021-01-15 | 2021-01-19 | 6 | 20d |  |
| 8 | 1.7 | **Documento di Chiusura e Lessons Learned** | 4d? | 2021-01-20 | 2021-01-25 | 7 |  |  |
| 9 |  | Documento di Chiusura | 2d | 2021-01-20 | 2021-01-21 |  | 20d |  |
| 10 |  | Lessons Learned | 2d | 2021-01-22 | 2021-01-25 | 9 | 20d |  |
| 11 | 2 | **OR2: Realizzazione Back-end** | 7d? | 2020-12-22 | 2020-12-30 |  | 38d |  |
| 12 | 2.1 | **Accesso al dominio** | 7d | 2020-12-22 | 2020-12-30 |  | 38d |  |
| 13 |  | Inizializzazione dominio web | 7d | 2020-12-22 | 2020-12-30 |  | 38d |  |
| 14 |  | Avvio server sul dominio | 1d | 2020-12-22 | 2020-12-22 |  | 44d |  |
| 15 | 2.2 | **Documento di progettazione del database** | 0d? | 2020-12-22 | 2020-12-22 |  | 45d |  |
| 16 |  | Progettazione concettuale del database | 1d? | 2020-12-22 | 2020-12-22 |  |  |  |
| 17 |  | Realizzazione diagramma E/R | 1d? | 2020-12-22 | 2020-12-22 |  |  |  |
| 18 |  | Progettazione logica del database | 1d | 2020-12-22 | 2020-12-22 |  |  |  |
| 19 | 2.3 | **Database** | 0d? | 2020-12-22 | 2020-12-22 |  | 45d |  |
| 20 |  | Progettazione logica del database | 1d? | 2020-12-22 | 2020-12-22 |  |  |  |
| 21 |  | Progettazione fisica del database | 1d? | 2020-12-22 | 2020-12-22 |  |  |  |
| 22 |  | Implementazione del database | 1d? | 2020-12-22 | 2020-12-22 |  |  |  |
| 23 |  | Progettazione API del Database | 1d? | 2020-12-22 | 2020-12-22 |  |  |  |
| 24 |  | Implementazione API del Database | 1d? | 2020-12-22 | 2020-12-22 |  |  |  |
| 25 | 2.4 | **Accesso al CMS** | 0d | 2020-12-22 | 2020-12-22 |  | 45d |  |
| 26 |  | Installazione del CMS | 1d | 2020-12-22 | 2020-12-22 |  |  |  |
| 27 | 2.5 | **Autenticazione** | 0d? | 2020-12-22 | 2020-12-22 |  | 45d |  |
| 28 |  | Proggettazione del plugin di autenticazione | 1d? | 2020-12-22 | 2020-12-22 |  |  |  |
| 29 |  | Interfaccia di autenticazione | 1d | 2020-12-22 | 2020-12-22 |  |  |  |
| 30 | 2.6 | **Pagamento** | 1d? | 2020-12-22 | 2020-12-22 |  | 44d |  |
| 31 |  | Progettazione del plugin di pagamento | 1d? | 2020-12-22 | 2020-12-22 |  | 44d |  |
| 32 |  | Interfaccia di pagamento | 1d | 2020-12-22 | 2020-12-22 |  | 44d |  |
| 33 | 2.7 | **Gestione Ordini** | 0d? | 2020-12-22 | 2020-12-22 |  | 45d |  |
| 34 |  | Progettazione plugin di gestione ordini | 1d? | 2020-12-22 | 2020-12-22 |  |  |  |
| 35 |  | Implementazione plugin di gestione ordini | 1d? | 2020-12-22 | 2020-12-22 |  |  |  |
| 36 | 3 | **OR3: Organizzazione della rete locale** | 45d | 2020-12-22 | 2021-02-22 |  | 0d |  |
| 37 | 3.1 | **Report pianificazione dell’infrastruttura di rete** | 16d | 2020-12-22 | 2021-01-12 |  |  |  |
| 38 |  | Analisi di mercato sulle soluzioni topologiche moderne | 2d | 2020-12-22 | 2020-12-23 |  | 0d |  |
| 39 |  | Individuazione asset informatici e rischi correlati | 3d | 2020-12-24 | 2020-12-28 | 38 | 0d |  |
| 40 |  | Pianificazione su software di simulazione di topologie di rete | 7d | 2020-12-29 | 2021-01-06 | 39 | 0d |  |
| 41 |  | Stesura di report finale sulla pianificazione della rete | 4d | 2021-01-07 | 2021-01-12 | 40 | 0d |  |
| 42 | 3.2 | **Realizzazione dell’infrastruttura di rete** | 20d | 2021-01-13 | 2021-02-09 | 41, 37 |  |  |
| 43 |  | Acquisto degli apparati necessari e realizzazione della rete | 20d | 2021-01-13 | 2021-02-09 |  | 0d |  |
| 44 | 3.3 | **Rafforzamento della sicurezza informatica** | 26d | 2021-01-13 | 2021-02-17 | 37 |  |  |
| 45 |  | Valutazione preventivi con aziende specializzate in penetration testing | 10d | 2021-01-13 | 2021-01-26 | 43SS | 10d | start no earlier than 2021-01-13 |
| 46 |  | Svolgimento penetration testing da parte di due aziende scelte | 2d | 2021-02-10 | 2021-02-11 | 43, 45 | 0d |  |
| 47 |  | Simulazione Disaster Recovery | 2d | 2021-02-12 | 2021-02-15 | 46 | 0d |  |
| 48 |  | Stesura delle linee guida per un piano di Disaster Recovery | 2d | 2021-02-16 | 2021-02-17 | 47 | 0d |  |
| 49 | 3.4 | **Corso anti social-engineering per i dipendenti** | 23d | 2021-01-13 | 2021-02-12 | 37 |  |  |
| 50 |  | Valutazione preventivi con aziende specializzate nell’attività di training per il contrasto al social engineering | 7d | 2021-01-13 | 2021-01-21 | 43SS | 19d |  |
| 51 |  | Contrattazione ed erogazione del corso anti social-engineering da parte dell'azienda scelta | 3d | 2021-02-10 | 2021-02-12 | 50, 43 | 6d |  |
| 52 |  | Messa in opera dell’infrastruttura di rete | 3d | 2021-02-18 | 2021-02-22 | 48, 44 | 0d |  |
| 53 | 4 | **OR4: Realizzazione Fron-end** | 5d? | 2020-12-22 | 2020-12-28 |  |  |  |
| 54 | 4.1 | **Mappa di navigazione del sito** | 0d? | 2020-12-22 | 2020-12-22 |  | 45d |  |
| 55 |  | Realizzazione mappa di navigazione del sito | 1d? | 2020-12-22 | 2020-12-22 |  |  |  |
| 56 | 4.2 | **Template base** | 0d | 2020-12-22 | 2020-12-22 |  | 45d |  |
| 57 |  | Scelta colori e font del sito | 1d | 2020-12-22 | 2020-12-22 |  |  |  |
| 58 |  | Progettazione Header | 1d | 2020-12-22 | 2020-12-22 |  |  |  |
| 59 |  | Realizzazione Header | 1d | 2020-12-22 | 2020-12-22 |  |  |  |
| 60 |  | Progettazione Footer | 1d | 2020-12-22 | 2020-12-22 |  |  |  |
| 61 |  | Realizzazione Footer | 1d | 2020-12-22 | 2020-12-22 |  |  |  |
| 62 | 4.3 | **Area personale e autenticazione** | 0d? | 2020-12-22 | 2020-12-22 |  | 45d |  |
| 63 |  | Progettazione Pagina Profilo | 1d? | 2020-12-22 | 2020-12-22 |  |  |  |
| 64 |  | Realizzazione Pagina Profilo | 1d? | 2020-12-22 | 2020-12-22 |  |  |  |
| 65 |  | Progettazione Pagina Login | 1d? | 2020-12-22 | 2020-12-22 |  |  |  |
| 66 |  | Realizzazione Pagina Login | 1d? | 2020-12-22 | 2020-12-22 |  |  |  |
| 67 |  | Progettazione Registrazione | 1d? | 2020-12-22 | 2020-12-22 |  |  |  |
| 68 |  | Realizzazione Registrazione | 1d | 2020-12-22 | 2020-12-22 |  |  |  |
| 69 | 4.4 | **Area E-commerce** | 0d? | 2020-12-22 | 2020-12-22 |  | 45d |  |
| 70 |  | Progettazione area recensioni | 1d? | 2020-12-22 | 2020-12-22 |  |  |  |

| ID | WBS | Task | Duration | Start | Finish | Total float |
| --- | --- | --- | --- | --- | --- | --- |
| 71 |  | Realizzazione area recensioni | 1d? | 2020-12-22 | 2020-12-22 |  |
| 72 |  | Progettazione Carrello | 1d? | 2020-12-22 | 2020-12-22 |  |
| 73 |  | Realizzazione Carrello | 1d? | 2020-12-22 | 2020-12-22 |  |
| 74 |  | Progettazione area acquista | 1d? | 2020-12-22 | 2020-12-22 |  |
| 75 |  | Realizzazione area acquista | 1d? | 2020-12-22 | 2020-12-22 |  |
| 76 | 4.5 | **Area Prodotto** | 0d? | 2020-12-22 | 2020-12-22 | 45d |
| 77 |  | Progettazione pagina prodotto | 1d? | 2020-12-22 | 2020-12-22 |  |
| 78 |  | Realizzazione pagina prodotto | 1d? | 2020-12-22 | 2020-12-22 |  |
| 79 |  | Progettazione Modifica Prodotto | 1d? | 2020-12-22 | 2020-12-22 |  |
| 80 |  | Realizzazione Modifica Prodotto | 1d | 2020-12-22 | 2020-12-22 |  |
| 81 | 4.6 | **Area Social** | 0d? | 2020-12-22 | 2020-12-22 | 45d |
| 82 |  | Progettazione Visualizza profilo utente e designer | 1d? | 2020-12-22 | 2020-12-22 |  |
| 83 |  | Realizzazione Visualizza profilo utente e designer | 1d? | 2020-12-22 | 2020-12-22 |  |
| 84 |  | Progettazione Area Lavora con noi | 1d? | 2020-12-22 | 2020-12-22 |  |
| 85 |  | Realizzazione Area Lavora con noi | 1d? | 2020-12-22 | 2020-12-22 |  |
| 86 |  | Progettazione Chat | 1d? | 2020-12-22 | 2020-12-22 |  |
| 87 |  | Realizzazione Chat | 1d? | 2020-12-22 | 2020-12-22 |  |
| 88 | 4.7 | **Area Moderatore** | 0d? | 2020-12-22 | 2020-12-22 | 45d |
| 89 |  | Progettazione Area Candidati Designer | 1d? | 2020-12-22 | 2020-12-22 |  |
| 90 |  | Realizzazione Area Candidati Designer | 1d | 2020-12-22 | 2020-12-22 |  |
| 91 | 4.8 | **Area Gestionale** | 0d? | 2020-12-22 | 2020-12-22 | 45d |
| 92 |  | Progettazione Area Ordini | 1d? | 2020-12-22 | 2020-12-22 |  |
| 93 |  | Realizzazione Area Ordini | 1d? | 2020-12-22 | 2020-12-22 |  |
| 94 |  | Progettazione Area Gestione Produzione | 1d? | 2020-12-22 | 2020-12-22 |  |
| 95 |  | Realizzazione Area Gestione Produzione | 1d | 2020-12-22 | 2020-12-22 |  |
| 96 | 4.9 | **Area Ricerca e Classifica** | 0d? | 2020-12-22 | 2020-12-22 | 45d |
| 97 |  | Progettazione Area Classifica | 1d | 2020-12-22 | 2020-12-22 |  |
| 98 |  | Realizzazione Area Classifica | 1d | 2020-12-22 | 2020-12-22 |  |
| 99 |  | Progettazione Area Ricerca Prodotto | 1d | 2020-12-22 | 2020-12-22 |  |
| 100 |  | Realizzazione Area Ricerca Prodotto | 1d? | 2020-12-22 | 2020-12-22 |  |

## Version 2 (saved 2020-12-22)

Note of the change: Gantt finito

Last finish 2021-02-22 → 2021-05-11 (+78d).

Changed:

| ID | Task | Start | Finish | Duration | Total float | Predecessors | Other |
| --- | --- | --- | --- | --- | --- | --- | --- |
| 1 | **OR1:GESTIONE E CONTROLLO** |  | 2021-01-25 → 2021-05-11 (+106d) | 25d? → 101d | 20d → 0d |  |  |
| 2 | Business Case e Piano di Progetto |  | 2020-12-29 → 2020-12-24 (-5d) | 6d → 3d | 20d → 0d |  |  |
| 3 | Documento di Gestione dei Rischi | 2020-12-30 → 2020-12-25 (-5d) | 2021-01-01 → 2020-12-28 (-4d) | 3d → 2d | 20d → 0d |  |  |
| 4 | Documento di Gestione della Qualità | 2021-01-04 → 2020-12-29 (-6d) | 2021-01-06 → 2020-12-31 (-6d) |  | 20d → 0d |  |  |
| 5 | Documento di Gestione della Comunicazione | 2021-01-07 → 2021-01-01 (-6d) | 2021-01-11 → 2021-01-07 (-4d) | 3d → 5d | 20d → 0d |  |  |
| 6 | Documento di Gestione del Timing, del Budget e delle Risorse | 2021-01-12 → 2021-01-08 (-4d) | 2021-01-14 → 2021-01-11 (-3d) | 3d → 2d | 20d → 0d |  |  |
| 7 | Documento di Controllo e Monitoraggio sugli Obiettivi del Progetto | 2021-01-15 → 2021-01-12 (-3d) | 2021-01-19 → 2021-04-29 (+100d) | 3d → 78d | 20d → 0d |  |  |
| 8 | **Documento di Chiusura e Lessons Learned** | 2021-01-20 → 2021-04-30 (+100d) | 2021-01-25 → 2021-05-11 (+106d) | 4d? → 8d | none → 0d |  |  |
| 9 | Documento di Chiusura | 2021-01-20 → 2021-04-30 (+100d) | 2021-01-21 → 2021-05-04 (+103d) | 2d → 3d | 20d → 0d |  |  |
| 10 | Lessons Learned | 2021-01-22 → 2021-05-05 (+103d) | 2021-01-25 → 2021-05-11 (+106d) | 2d → 5d | 20d → 0d |  |  |
| 11 | **OR2: Realizzazione Back-end** | 2020-12-22 → 2021-01-11 (+20d) | 2020-12-30 → 2021-01-20 (+21d) |  | 38d → 2d | none → 6 |  |
| 12 | **Accesso al dominio** | 2020-12-22 → 2021-01-12 (+21d) | 2020-12-30 → 2021-01-20 (+21d) |  | 38d → 2d |  |  |
| 13 | Inizializzazione dominio web | 2020-12-22 → 2021-01-12 (+21d) | 2020-12-30 → 2021-01-20 (+21d) |  | 38d → 2d |  |  |
| 14 | Avvio server sul dominio | 2020-12-22 → 2021-01-12 (+21d) | 2020-12-22 → 2021-01-12 (+21d) |  | 44d → 8d |  |  |
| 15 | **Documento di progettazione del database** | 2020-12-22 → 2021-01-11 (+20d) | 2020-12-22 → 2021-01-11 (+20d) |  | 45d → 9d |  |  |
| 19 | **Database** | 2020-12-22 → 2021-01-11 (+20d) | 2020-12-22 → 2021-01-11 (+20d) |  | 45d → 9d |  |  |
| 25 | **Accesso al CMS** | 2020-12-22 → 2021-01-11 (+20d) | 2020-12-22 → 2021-01-11 (+20d) |  | 45d → 9d |  |  |
| 27 | **Autenticazione** | 2020-12-22 → 2021-01-11 (+20d) | 2020-12-22 → 2021-01-11 (+20d) |  | 45d → 9d |  |  |
| 30 | **Pagamento** | 2020-12-22 → 2021-01-12 (+21d) | 2020-12-22 → 2021-01-12 (+21d) |  | 44d → 8d |  |  |
| 31 | Progettazione del plugin di pagamento | 2020-12-22 → 2021-01-12 (+21d) | 2020-12-22 → 2021-01-12 (+21d) |  | 44d → 8d |  |  |
| 32 | Interfaccia di pagamento | 2020-12-22 → 2021-01-12 (+21d) | 2020-12-22 → 2021-01-12 (+21d) |  | 44d → 8d |  |  |
| 33 | **Gestione Ordini** | 2020-12-22 → 2021-01-11 (+20d) | 2020-12-22 → 2021-01-11 (+20d) |  | 45d → 9d |  |  |
| 36 | **OR3: Organizzazione della rete locale** | 2020-12-22 → 2021-01-21 (+30d) | 2021-02-22 → 2021-03-24 (+30d) |  | 0d → 2d | none → 11 |  |
| 37 | **Report pianificazione dell’infrastruttura di rete** | 2020-12-22 → 2021-01-21 (+30d) | 2021-01-12 → 2021-02-11 (+30d) |  | none → 2d |  |  |
| 38 | Analisi di mercato sulle soluzioni topologiche moderne | 2020-12-22 → 2021-01-21 (+30d) | 2020-12-23 → 2021-01-22 (+30d) |  | 0d → 2d |  |  |
| 39 | Individuazione asset informatici e rischi correlati | 2020-12-24 → 2021-01-25 (+32d) | 2020-12-28 → 2021-01-27 (+30d) |  | 0d → 2d |  |  |
| 40 | Pianificazione su software di simulazione di topologie di rete | 2020-12-29 → 2021-01-28 (+30d) | 2021-01-06 → 2021-02-05 (+30d) |  | 0d → 2d |  |  |
| 41 | Stesura di report finale sulla pianificazione della rete | 2021-01-07 → 2021-02-08 (+32d) | 2021-01-12 → 2021-02-11 (+30d) |  | 0d → 2d |  |  |
| 42 | **Realizzazione dell’infrastruttura di rete** | 2021-01-13 → 2021-02-12 (+30d) | 2021-02-09 → 2021-03-11 (+30d) |  | none → 2d |  |  |
| 43 | Acquisto degli apparati necessari e realizzazione della rete | 2021-01-13 → 2021-02-12 (+30d) | 2021-02-09 → 2021-03-11 (+30d) |  | 0d → 2d |  |  |
| 44 | **Rafforzamento della sicurezza informatica** | 2021-01-13 → 2021-02-12 (+30d) | 2021-02-17 → 2021-03-19 (+30d) |  | none → 2d |  |  |
| 45 | Valutazione preventivi con aziende specializzate in penetration testing | 2021-01-13 → 2021-02-12 (+30d) | 2021-01-26 → 2021-02-25 (+30d) |  | 10d → 12d |  |  |
| 46 | Svolgimento penetration testing da parte di due aziende scelte | 2021-02-10 → 2021-03-12 (+30d) | 2021-02-11 → 2021-03-15 (+32d) |  | 0d → 2d |  |  |
| 47 | Simulazione Disaster Recovery | 2021-02-12 → 2021-03-16 (+32d) | 2021-02-15 → 2021-03-17 (+30d) |  | 0d → 2d |  |  |
| 48 | Stesura delle linee guida per un piano di Disaster Recovery | 2021-02-16 → 2021-03-18 (+30d) | 2021-02-17 → 2021-03-19 (+30d) |  | 0d → 2d |  |  |
| 49 | **Corso anti social-engineering per i dipendenti** | 2021-01-13 → 2021-02-12 (+30d) | 2021-02-12 → 2021-03-16 (+32d) |  | none → 8d |  |  |
| 50 | Valutazione preventivi con aziende specializzate nell’attività di training per il contrasto al social engineering | 2021-01-13 → 2021-02-12 (+30d) | 2021-01-21 → 2021-02-22 (+32d) |  | 19d → 21d |  |  |
| 51 | Contrattazione ed erogazione del corso anti social-engineering da parte dell'azienda scelta | 2021-02-10 → 2021-03-12 (+30d) | 2021-02-12 → 2021-03-16 (+32d) |  | 6d → 8d |  |  |
| 52 | Messa in opera dell’infrastruttura di rete | 2021-02-18 → 2021-03-22 (+32d) | 2021-02-22 → 2021-03-24 (+30d) |  | 0d → 2d |  |  |
| 53 | **OR4: Realizzazione Fron-end** | 2020-12-22 → 2021-03-25 (+93d) | 2020-12-28 → 2021-05-07 (+130d) | 5d? → 32d | none → 2d | none → 36 |  |
| 54 | **Mappa di navigazione del sito** | 2020-12-22 → 2021-03-25 (+93d) | 2020-12-22 → 2021-03-25 (+93d) | 0d? → 1d | 45d → 33d |  |  |
| 55 | Realizzazione mappa di navigazione del sito | 2020-12-22 → 2021-03-25 (+93d) | 2020-12-22 → 2021-03-25 (+93d) | 1d? → 1d | none → 33d |  |  |
| 56 | **Template base** | 2020-12-22 → 2021-03-25 (+93d) | 2020-12-22 → 2021-03-31 (+99d) | 0d → 5d | 45d → 2d |  |  |
| 57 | Scelta colori e font del sito | 2020-12-22 → 2021-03-25 (+93d) | 2020-12-22 → 2021-03-26 (+94d) | 1d → 2d | none → 2d |  | resources none → prog web, ux |
| 58 | Progettazione Header | 2020-12-22 → 2021-03-29 (+97d) | 2020-12-22 → 2021-03-30 (+98d) | 1d → 2d | none → 2d | none → 57 | resources none → prog web, ux |
| 59 | Realizzazione Header | 2020-12-22 → 2021-03-31 (+99d) | 2020-12-22 → 2021-03-31 (+99d) |  | none → 2d | none → 58 | resources none → dev1 |
| 60 | Progettazione Footer | 2020-12-22 → 2021-03-29 (+97d) | 2020-12-22 → 2021-03-30 (+98d) | 1d → 2d | none → 2d | none → 57 | resources none → prog web, ux |
| 61 | Realizzazione Footer | 2020-12-22 → 2021-03-31 (+99d) | 2020-12-22 → 2021-03-31 (+99d) |  | none → 2d | none → 60 | resources none → dev2 |
| 62 | **Area personale e autenticazione** | 2020-12-22 → 2021-04-01 (+100d) | 2020-12-22 → 2021-04-07 (+106d) | 0d? → 5d | 45d → 2d | none → 56 |  |
| 63 | Progettazione Pagina Profilo | 2020-12-22 → 2021-04-01 (+100d) | 2020-12-22 → 2021-04-02 (+101d) | 1d? → 2d | none → 2d |  | resources none → prog web , ux |
| 64 | Realizzazione Pagina Profilo | 2020-12-22 → 2021-04-05 (+104d) | 2020-12-22 → 2021-04-05 (+104d) | 1d? → 1d | none → 4d | none → 63 | resources none → dev 2 |
| 65 | Progettazione Pagina Login | 2020-12-22 → 2021-04-01 (+100d) | 2020-12-22 → 2021-04-02 (+101d) | 1d? → 2d | none → 2d |  | resources none → prog web , ux |
| 66 | Realizzazione Pagina Login | 2020-12-22 → 2021-04-05 (+104d) | 2020-12-22 → 2021-04-05 (+104d) | 1d? → 1d | none → 4d | none → 65 | resources none → dev 1 |
| 67 | Progettazione Registrazione | 2020-12-22 → 2021-04-05 (+104d) | 2020-12-22 → 2021-04-06 (+105d) | 1d? → 2d | none → 2d | none → 63, 65 | resources none → prog web, ux |
| 68 | Realizzazione Registrazione | 2020-12-22 → 2021-04-07 (+106d) | 2020-12-22 → 2021-04-07 (+106d) |  | none → 2d | none → 67 | resources none → dev 1 |
| 69 | **Area E-commerce** | 2020-12-22 → 2021-04-08 (+107d) | 2020-12-22 → 2021-04-19 (+118d) | 0d? → 8d | 45d → 2d | none → 62 |  |
| 70 | Progettazione area recensioni | 2020-12-22 → 2021-04-08 (+107d) | 2020-12-22 → 2021-04-12 (+111d) | 1d? → 3d | none → 2d |  | resources none → prog web , ux |
| 71 | Realizzazione area recensioni | 2020-12-22 → 2021-04-13 (+112d) | 2020-12-22 → 2021-04-14 (+113d) | 1d? → 2d | none → 5d | none → 70 | resources none → dev1 |
| 72 | Progettazione Carrello | 2020-12-22 → 2021-04-13 (+112d) | 2020-12-22 → 2021-04-14 (+113d) | 1d? → 2d | none → 4d | none → 70 | resources none → prog web |
| 73 | Realizzazione Carrello | 2020-12-22 → 2021-04-15 (+114d) | 2020-12-22 → 2021-04-15 (+114d) | 1d? → 1d | none → 4d | none → 72 | resources none → dev2 |
| 74 | Progettazione area acquisti | 2020-12-22 → 2021-04-13 (+112d) | 2020-12-22 → 2021-04-15 (+114d) | 1d? → 3d | none → 2d | none → 70 | was named Progettazione area acquista; resources none → prog web, ux |
| 75 | Realizzazione area acquisti | 2020-12-22 → 2021-04-16 (+115d) | 2020-12-22 → 2021-04-19 (+118d) | 1d? → 2d | none → 2d | none → 74 | was named Realizzazione area acquista; resources none → dev3 |
| 76 | **Area Prodotto** | 2020-12-22 → 2021-04-20 (+119d) | 2020-12-22 → 2021-04-22 (+121d) | 0d? → 3d | 45d → 2d | none → 69 |  |
| 77 | Progettazione pagina prodotto | 2020-12-22 → 2021-04-20 (+119d) | 2020-12-22 → 2021-04-21 (+120d) | 1d? → 2d | none → 2d |  | resources none → prog web, ux |
| 78 | Realizzazione pagina prodotto | 2020-12-22 → 2021-04-22 (+121d) | 2020-12-22 → 2021-04-22 (+121d) | 1d? → 1d | none → 2d | none → 77 | resources none → dev1 |
| 79 | Progettazione Modifica Prodotto | 2020-12-22 → 2021-04-20 (+119d) | 2020-12-22 → 2021-04-20 (+119d) | 1d? → 1d | none → 3d |  | resources none → prog web, ux |
| 80 | Realizzazione Modifica Prodotto | 2020-12-22 → 2021-04-21 (+120d) | 2020-12-22 → 2021-04-21 (+120d) |  | none → 3d | none → 79 | resources none → dev2 |
| 81 | **Area Social** | 2020-12-22 → 2021-04-23 (+122d) | 2020-12-22 → 2021-04-28 (+127d) | 0d? → 4d | 45d → 9d | none → 76 |  |
| 82 | Progettazione Visualizza profilo utente e designer | 2020-12-22 → 2021-04-23 (+122d) | 2020-12-22 → 2021-04-26 (+125d) | 1d? → 2d | none → 10d |  | resources none → prog web, ux |
| 83 | Realizzazione Visualizza profilo utente e designer | 2020-12-22 → 2021-04-27 (+126d) | 2020-12-22 → 2021-04-27 (+126d) | 1d? → 1d | none → 10d | none → 82 | resources none → dev1 |

| ID | Task | Start | Finish | Duration | Total float | Predecessors | Other |
| --- | --- | --- | --- | --- | --- | --- | --- |
| 84 | Progettazione Area Lavora con noi | 2020-12-22 → 2021-04-23 (+122d) | 2020-12-22 → 2021-04-23 (+122d) | 1d? → 1d | none → 11.5d |  | resources none → prog web |
| 85 | Realizzazione Area Lavora con noi | 2020-12-22 → 2021-04-26 (+125d) | 2020-12-22 → 2021-04-26 (+125d) | 1d? → 0.5d | none → 11.5d | none → 84 | resources none → dev1 |
| 86 | Progettazione Chat | 2020-12-22 → 2021-04-23 (+122d) | 2020-12-22 → 2021-04-26 (+125d) | 1d? → 2d | none → 9d |  | resources none → prog web, ux |
| 87 | Realizzazione Chat | 2020-12-22 → 2021-04-27 (+126d) | 2020-12-22 → 2021-04-28 (+127d) | 1d? → 2d | none → 9d | none → 86 | resources none → dev2 |
| 88 | **Area Moderatore** | 2020-12-22 → 2021-04-23 (+122d) | 2020-12-22 → 2021-04-28 (+127d) | 0d? → 4d | 45d → 2d | none → 76 |  |
| 89 | Progettazione Area Candidati Designer | 2020-12-22 → 2021-04-23 (+122d) | 2020-12-22 → 2021-04-26 (+125d) | 1d? → 2d | none → 2d |  | resources none → prog web |
| 90 | Realizzazione Area Candidati Designer | 2020-12-22 → 2021-04-27 (+126d) | 2020-12-22 → 2021-04-28 (+127d) | 1d → 2d | none → 2d | none → 89 | resources none → dev1 |
| 91 | **Area Gestionale** | 2020-12-22 → 2021-04-29 (+128d) | 2020-12-22 → 2021-05-04 (+133d) | 0d? → 4d | 45d → 2d | none → 88 |  |
| 92 | Progettazione Area Ordini | 2020-12-22 → 2021-04-29 (+128d) | 2020-12-22 → 2021-04-30 (+129d) | 1d? → 2d | none → 2d |  | resources none → prog web, ux |
| 93 | Realizzazione Area Ordini | 2020-12-22 → 2021-05-03 (+132d) | 2020-12-22 → 2021-05-04 (+133d) | 1d? → 2d | none → 2d | none → 92 | resources none → dev1 |
| 94 | Progettazione Area Gestione Produzione | 2020-12-22 → 2021-04-29 (+128d) | 2020-12-22 → 2021-04-30 (+129d) | 1d? → 2d | none → 2d |  | resources none → prog web, ux |
| 95 | Realizzazione Area Gestione Produzione | 2020-12-22 → 2021-05-03 (+132d) | 2020-12-22 → 2021-05-04 (+133d) | 1d → 2d | none → 2d | none → 94 | resources none → dev2 |
| 96 | **Area Ricerca e Classifica** | 2020-12-22 → 2021-05-05 (+134d) | 2020-12-22 → 2021-05-07 (+136d) | 0d? → 3d | 45d → 2d | none → 91 |  |
| 97 | Progettazione Area Classifica | 2020-12-22 → 2021-05-05 (+134d) | 2020-12-22 → 2021-05-05 (+134d) |  | none → 2d |  | resources none → prog web |
| 98 | Realizzazione Area Classifica | 2020-12-22 → 2021-05-06 (+135d) | 2020-12-22 → 2021-05-07 (+136d) | 1d → 2d | none → 2d | none → 97 | resources none → dev1 |
| 99 | Progettazione Area Ricerca Prodotto | 2020-12-22 → 2021-05-05 (+134d) | 2020-12-22 → 2021-05-05 (+134d) |  | none → 3d |  | resources none → prog web |
| 100 | Realizzazione Area Ricerca Prodotto | 2020-12-22 → 2021-05-06 (+135d) | 2020-12-22 → 2021-05-06 (+135d) | 1d? → 1d | none → 3d | none → 99 | resources none → dev2 |

## Version 3 (saved 2021-01-03)

Note of the change: aggiornato immagine gantt

Last finish 2021-05-11 → 2021-08-23 (+104d).

Added:

| ID | Task | Duration | Start | Finish | Predecessors | Resources |
| --- | --- | --- | --- | --- | --- | --- |
| 7 | Studio di mercato | 2d | 2021-02-02 | 2021-02-03 | 6 |  |
| 12 | Milestone 1 | 0d | 2021-02-03 | 2021-02-03 | 7 |  |
| 29 | **Messa in opera dell’infrastruttura di rete** | 3d | 2021-04-05 | 2021-04-07 | 19, 21, 26 |  |
| 31 | Milestone 2 | 0d | 2021-04-07 | 2021-04-07 | 13 |  |
| 40 | Progettazione Controller del Database | 7d | 2021-04-30 | 2021-05-10 | 39 | TM; dev3 |
| 55 | Milestone 3 | 0d | 2021-06-23 | 2021-06-23 | 32 |  |
| 104 | SAL FINE PROGETTO | 0d | 2021-08-23 | 2021-08-23 | 9 |  |

Removed: 16 Progettazione concettuale del database; 20 Progettazione logica del database; 23 Progettazione API del Database

Changed:

| ID | Task | Start | Finish | Duration | Total float | Predecessors | Other |
| --- | --- | --- | --- | --- | --- | --- | --- |
| 1 | **OR1:GESTIONE E CONTROLLO** | 2020-12-22 → 2021-01-12 (+21d) | 2021-05-11 → 2021-08-23 (+104d) | 101d → 160d? | 0d → none |  |  |
| 2 | Business Case e Piano di Progetto | 2020-12-22 → 2021-01-12 (+21d) | 2020-12-24 → 2021-01-14 (+21d) |  | 0d → 1d |  |  |
| 3 | Documento di Gestione dei Rischi | 2020-12-25 → 2021-01-15 (+21d) | 2020-12-28 → 2021-01-18 (+21d) |  | 0d → 1d |  |  |
| 4 | Documento di Gestione della Qualità | 2020-12-29 → 2021-01-19 (+21d) | 2020-12-31 → 2021-01-21 (+21d) |  | 0d → 1d |  |  |
| 5 | Documento di Gestione della Comunicazione | 2021-01-01 → 2021-01-22 (+21d) | 2021-01-07 → 2021-01-28 (+21d) |  | 0d → 1d |  |  |
| 6 | Documento di Gestione del Timing, del Budget e delle Risorse | 2021-01-08 → 2021-01-29 (+21d) | 2021-01-11 → 2021-02-01 (+21d) |  | 0d → 1d |  |  |
| 8 | Documento di Controllo e Monitoraggio sugli Obiettivi del Progetto | 2021-01-12 → 2021-02-04 (+23d) | 2021-04-29 → 2021-08-09 (+102d) | 78d → 133d | 0d → 1d | 6 → 7 | constraint none → start no earlier than 2021-01-11 |
| 9 | **Documento di Chiusura e Lessons Learned** | 2021-04-30 → 2021-08-10 (+102d) | 2021-05-11 → 2021-08-20 (+101d) | 8d → 9d | 0d → 1d |  |  |
| 10 | Documento di Chiusura | 2021-04-30 → 2021-08-10 (+102d) | 2021-05-04 → 2021-08-13 (+101d) | 3d → 4d | 0d → 1d |  |  |
| 11 | Lessons Learned | 2021-05-05 → 2021-08-16 (+103d) | 2021-05-11 → 2021-08-20 (+101d) |  | 0d → 1d |  |  |
| 13 | **OR2: Organizzazione della rete locale** | 2021-01-21 → 2021-02-04 (+14d) | 2021-03-24 → 2021-04-07 (+14d) |  | 2d → 10d | 32 → 12 | was named OR3: Organizzazione della rete locale |
| 14 | **Report pianificazione dell’infrastruttura di rete** | 2021-01-21 → 2021-02-04 (+14d) | 2021-02-11 → 2021-02-25 (+14d) |  | 2d → 10d |  |  |
| 15 | Analisi di mercato sulle soluzioni topologiche moderne | 2021-01-21 → 2021-02-04 (+14d) | 2021-01-22 → 2021-02-05 (+14d) |  | 2d → 10d |  | resources none → ICT,CS,NS*2 |
| 16 | Individuazione asset informatici e rischi correlati | 2021-01-25 → 2021-02-08 (+14d) | 2021-01-27 → 2021-02-10 (+14d) |  | 2d → 10d |  | resources none → ICT,CS,NS*2 |
| 17 | Pianificazione su software di simulazione di topologie di rete | 2021-01-28 → 2021-02-11 (+14d) | 2021-02-05 → 2021-02-19 (+14d) |  | 2d → 10d |  | resources none → ICT,CS,NS*2 |
| 18 | Stesura di report finale sulla pianificazione della rete | 2021-02-08 → 2021-02-22 (+14d) | 2021-02-11 → 2021-02-25 (+14d) |  | 2d → 10d |  | resources none → ICT |
| 19 | **Realizzazione dell’infrastruttura di rete** | 2021-02-12 → 2021-02-26 (+14d) | 2021-03-11 → 2021-03-25 (+14d) |  | 2d → 10d | 18, 14 → 14 |  |
| 20 | Acquisto degli apparati necessari e realizzazione della rete | 2021-02-12 → 2021-02-26 (+14d) | 2021-03-11 → 2021-03-25 (+14d) |  | 2d → 10d |  | resources none → CS |
| 21 | **Rafforzamento della sicurezza informatica** | 2021-02-12 → 2021-02-26 (+14d) | 2021-03-19 → 2021-04-02 (+14d) |  | 2d → 10d |  |  |
| 22 | Valutazione preventivi con aziende specializzate in penetration testing | 2021-02-12 → 2021-02-26 (+14d) | 2021-02-25 → 2021-03-11 (+14d) |  | 12d → 20d |  | resources none → ICT,CS |
| 23 | Svolgimento penetration testing da parte di due aziende scelte | 2021-03-12 → 2021-03-26 (+14d) | 2021-03-15 → 2021-03-29 (+14d) |  | 2d → 10d |  | resources none → Collaboratori ICT,CS,NS*2 |
| 24 | Simulazione Disaster Recovery | 2021-03-16 → 2021-03-30 (+14d) | 2021-03-17 → 2021-03-31 (+14d) |  | 2d → 10d |  | resources none → ICT,CS,NS*2 |
| 25 | Stesura delle linee guida per un piano di Disaster Recovery | 2021-03-18 → 2021-04-01 (+14d) | 2021-03-19 → 2021-04-02 (+14d) |  | 2d → 10d |  | resources none → ICT |
| 26 | **Corso anti social-engineering per i dipendenti** | 2021-02-12 → 2021-02-26 (+14d) | 2021-03-16 → 2021-03-30 (+14d) |  | 8d → 13d |  |  |
| 27 | Valutazione preventivi con aziende specializzate nell’attività di training per il contrasto al social engineering | 2021-02-12 → 2021-02-26 (+14d) | 2021-02-22 → 2021-03-08 (+14d) |  | 21d → 26d |  | resources none → ICT,CS |
| 28 | Contrattazione ed erogazione del corso anti social-engineering da parte dell'azienda scelta | 2021-03-12 → 2021-03-26 (+14d) | 2021-03-16 → 2021-03-30 (+14d) |  | 8d → 13d |  | resources none → RISORSE UMANE |
| 30 | Messa in opera dell’infrastruttura di rete | 2021-03-22 → 2021-04-05 (+14d) | 2021-03-24 → 2021-04-07 (+14d) |  | 2d → 10d | 25, 21 → 25 | resources none → NS*2 |
| 32 | **OR3: Realizzazione Back-end** | 2021-01-11 → 2021-04-08 (+87d) | 2021-01-20 → 2021-06-23 (+154d) | 7d? → 55d | 2d → 10d | 6 → 31 | was named OR2: Realizzazione Back-end |
| 33 | **Accesso al dominio** | 2021-01-12 → 2021-04-08 (+86d) | 2021-01-20 → 2021-04-12 (+82d) | 7d → 3d | 2d → 10d |  |  |
| 34 | Inizializzazione dominio web | 2021-01-12 → 2021-04-08 (+86d) | 2021-01-20 → 2021-04-09 (+79d) | 7d → 2d | 2d → 10d |  | resources none → TM; DB |
| 35 | Avvio server sul dominio | 2021-01-12 → 2021-04-12 (+90d) | 2021-01-12 → 2021-04-12 (+90d) |  | 8d → 10d | none → 34 | resources none → TM; DB |
| 36 | **Documento di progettazione del database** | 2021-01-11 → 2021-04-13 (+92d) | 2021-01-11 → 2021-05-10 (+119d) | 0d? → 20d | 9d → 10d | none → 33 |  |
| 37 | Realizzazione diagramma E/R | 2020-12-22 → 2021-04-13 (+112d) | 2020-12-22 → 2021-04-21 (+120d) | 1d? → 7d | none → 10d |  | resources none → DB; TM |
| 38 | Progettazione logica del database | 2020-12-22 → 2021-04-22 (+121d) | 2020-12-22 → 2021-04-26 (+125d) | 1d → 3d | none → 10d | none → 37 | resources none → DB; TM |
| 39 | Progettazione fisica del database | 2020-12-22 → 2021-04-27 (+126d) | 2020-12-22 → 2021-04-29 (+128d) | 1d? → 3d | none → 10d | none → 38 | resources none → TM; DB |
| 41 | **Database** | 2021-01-11 → 2021-05-11 (+120d) | 2021-01-11 → 2021-05-24 (+133d) | 0d? → 10d | 9d → 10d | none → 36 |  |
| 42 | Implementazione del database | 2020-12-22 → 2021-05-11 (+140d) | 2020-12-22 → 2021-05-24 (+153d) | 1d? → 10d | none → 10d |  | resources none → DB; dev1 |
| 43 | Implementazione Controller del Database | 2020-12-22 → 2021-05-11 (+140d) | 2020-12-22 → 2021-05-17 (+146d) | 1d? → 5d | none → 15d |  | was named Implementazione API del Database; resources none → TM; dev2 |
| 44 | **Accesso al CMS** | 2021-01-11 → 2021-05-25 (+134d) | 2021-01-11 → 2021-05-26 (+135d) | 0d → 2d | 9d → 10d | none → 41 |  |
| 45 | Installazione del CMS | 2020-12-22 → 2021-05-25 (+154d) | 2020-12-22 → 2021-05-26 (+155d) | 1d → 2d | none → 10d |  | resources none → dev1; dev2; DB |
| 46 | **Autenticazione** | 2021-01-11 → 2021-05-27 (+136d) | 2021-01-11 → 2021-06-23 (+163d) | 0d? → 20d | 9d → 10d | none → 44 |  |
| 47 | Progettazione del plugin di autenticazione | 2020-12-22 → 2021-05-27 (+156d) | 2020-12-22 → 2021-06-11 (+171d) | 1d? → 12d | none → 10d |  | was named Proggettazione del plugin di autenticazione; resources none → dev1 |
| 48 | Interfaccia di autenticazione | 2020-12-22 → 2021-06-14 (+174d) | 2020-12-22 → 2021-06-23 (+183d) | 1d → 8d | none → 10d | none → 47 | resources none → dev1; dev4 |
| 49 | **Pagamento** | 2021-01-12 → 2021-05-27 (+135d) | 2021-01-12 → 2021-06-23 (+162d) | 1d? → 20d | 8d → 10d | none → 44 |  |
| 50 | Progettazione del plugin di pagamento | 2021-01-12 → 2021-05-27 (+135d) | 2021-01-12 → 2021-06-11 (+150d) | 1d? → 12d | 8d → 10d |  | resources none → dev2 |
| 51 | Interfaccia di pagamento | 2021-01-12 → 2021-06-14 (+153d) | 2021-01-12 → 2021-06-23 (+162d) | 1d → 8d | 8d → 10d | none → 50 | resources none → dev2; dev5 |
| 52 | **Gestione Ordini** | 2021-01-11 → 2021-05-27 (+136d) | 2021-01-11 → 2021-06-23 (+163d) | 0d? → 20d | 9d → 10d | none → 44 |  |
| 53 | Progettazione plugin di gestione ordini | 2020-12-22 → 2021-05-27 (+156d) | 2020-12-22 → 2021-06-11 (+171d) | 1d? → 12d | none → 10d |  | resources none → dev3 |
| 54 | Implementazione plugin di gestione ordini | 2020-12-22 → 2021-06-14 (+174d) | 2020-12-22 → 2021-06-23 (+183d) | 1d? → 8d | none → 10d | none → 53 | resources none → dev3; dev6 |
| 56 | **OR4: Realizzazione Front-end** | 2021-03-25 → 2021-06-24 (+91d) | 2021-05-07 → 2021-08-09 (+94d) | 32d → 33d | 2d → 10d | 13 → 55 | was named OR4: Realizzazione Fron-end |
| 57 | **Mappa di navigazione del sito** | 2021-03-25 → 2021-06-24 (+91d) | 2021-03-25 → 2021-06-24 (+91d) |  | 33d → 10d |  |  |
| 58 | Realizzazione mappa di navigazione del sito | 2021-03-25 → 2021-06-24 (+91d) | 2021-03-25 → 2021-06-24 (+91d) |  | 33d → 10d |  | resources none → TM |
| 59 | **Template base** | 2021-03-25 → 2021-06-25 (+92d) | 2021-03-31 → 2021-07-01 (+92d) |  | 2d → 10d | none → 57 |  |
| 60 | Scelta colori e font del sito | 2021-03-25 → 2021-06-25 (+92d) | 2021-03-26 → 2021-06-28 (+94d) |  | 2d → 10d |  | resources prog web, ux → prog web; ux |
| 61 | Progettazione Header | 2021-03-29 → 2021-06-29 (+92d) | 2021-03-30 → 2021-06-30 (+92d) |  | 2d → 10d |  | resources prog web, ux → prog web; ux |
| 62 | Realizzazione Header | 2021-03-31 → 2021-07-01 (+92d) | 2021-03-31 → 2021-07-01 (+92d) |  | 2d → 10d |  | resources dev1 → devfront1 |
| 63 | Progettazione Footer | 2021-03-29 → 2021-06-29 (+92d) | 2021-03-30 → 2021-06-30 (+92d) |  | 2d → 10d |  | resources prog web, ux → prog web; ux |
| 64 | Realizzazione Footer | 2021-03-31 → 2021-07-01 (+92d) | 2021-03-31 → 2021-07-01 (+92d) |  | 2d → 10d |  | resources dev2 → devfront2 |
| 65 | **Area personale e autenticazione** | 2021-04-01 → 2021-07-02 (+92d) | 2021-04-07 → 2021-07-08 (+92d) |  | 2d → 10d |  |  |
| 66 | Progettazione Pagina Profilo | 2021-04-01 → 2021-07-02 (+92d) | 2021-04-02 → 2021-07-05 (+94d) |  | 2d → 10d |  | resources prog web , ux → prog web; ux |
| 67 | Realizzazione Pagina Profilo | 2021-04-05 → 2021-07-06 (+92d) | 2021-04-05 → 2021-07-06 (+92d) |  | 4d → 12d |  | resources dev 2 → devfront2 |
| 68 | Progettazione Pagina Login | 2021-04-01 → 2021-07-02 (+92d) | 2021-04-02 → 2021-07-05 (+94d) |  | 2d → 10d |  | resources prog web , ux → prog web; ux |
| 69 | Realizzazione Pagina Login | 2021-04-05 → 2021-07-06 (+92d) | 2021-04-05 → 2021-07-06 (+92d) |  | 4d → 12d |  | resources dev 1 → devfront1 |
| 70 | Progettazione Registrazione | 2021-04-05 → 2021-07-06 (+92d) | 2021-04-06 → 2021-07-07 (+92d) |  | 2d → 10d |  | resources prog web, ux → prog web; ux |
| 71 | Realizzazione Registrazione | 2021-04-07 → 2021-07-08 (+92d) | 2021-04-07 → 2021-07-08 (+92d) |  | 2d → 10d |  | resources dev 1 → devfront1 |
| 72 | **Area E-commerce** | 2021-04-08 → 2021-07-09 (+92d) | 2021-04-19 → 2021-07-20 (+92d) |  | 2d → 10d |  |  |
| 73 | Progettazione area recensioni | 2021-04-08 → 2021-07-09 (+92d) | 2021-04-12 → 2021-07-13 (+92d) |  | 2d → 10d |  | resources prog web , ux → prog web; ux |
| 74 | Realizzazione area recensioni | 2021-04-13 → 2021-07-14 (+92d) | 2021-04-14 → 2021-07-15 (+92d) |  | 5d → 13d |  | resources dev1 → devfront1 |
| 75 | Progettazione Carrello | 2021-04-13 → 2021-07-14 (+92d) | 2021-04-14 → 2021-07-15 (+92d) |  | 4d → 12d |  |  |
| 76 | Realizzazione Carrello | 2021-04-15 → 2021-07-16 (+92d) | 2021-04-15 → 2021-07-16 (+92d) |  | 4d → 12d |  | resources dev2 → devfront2 |

| ID | Task | Start | Finish | Duration | Total float | Other |
| --- | --- | --- | --- | --- | --- | --- |
| 77 | Progettazione area acquisti | 2021-04-13 → 2021-07-14 (+92d) | 2021-04-15 → 2021-07-16 (+92d) |  | 2d → 10d | resources prog web, ux → prog web; ux |
| 78 | Realizzazione area acquisti | 2021-04-16 → 2021-07-19 (+94d) | 2021-04-19 → 2021-07-20 (+92d) |  | 2d → 10d | resources dev3 → devfront3 |
| 79 | **Area Prodotto** | 2021-04-20 → 2021-07-21 (+92d) | 2021-04-22 → 2021-07-23 (+92d) |  | 2d → 10d |  |
| 80 | Progettazione pagina prodotto | 2021-04-20 → 2021-07-21 (+92d) | 2021-04-21 → 2021-07-22 (+92d) |  | 2d → 10d | resources prog web, ux → prog web; ux |
| 81 | Realizzazione pagina prodotto | 2021-04-22 → 2021-07-23 (+92d) | 2021-04-22 → 2021-07-23 (+92d) |  | 2d → 10d | resources dev1 → devfront1 |
| 82 | Progettazione Modifica Prodotto | 2021-04-20 → 2021-07-21 (+92d) | 2021-04-20 → 2021-07-21 (+92d) |  | 3d → 11d | resources prog web, ux → prog web; ux |
| 83 | Realizzazione Modifica Prodotto | 2021-04-21 → 2021-07-22 (+92d) | 2021-04-21 → 2021-07-22 (+92d) |  | 3d → 11d | resources dev2 → devfont2 |
| 84 | **Area Social** | 2021-04-23 → 2021-07-26 (+94d) | 2021-04-28 → 2021-07-29 (+92d) |  | 9d → 17d |  |
| 85 | Progettazione Visualizza profilo utente e designer | 2021-04-23 → 2021-07-26 (+94d) | 2021-04-26 → 2021-07-27 (+92d) |  | 10d → 18d | resources prog web, ux → prog web; ux |
| 86 | Realizzazione Visualizza profilo utente e designer | 2021-04-27 → 2021-07-28 (+92d) | 2021-04-27 → 2021-07-28 (+92d) |  | 10d → 18d | resources dev1 → devfront3 |
| 87 | Progettazione Area Lavora con noi | 2021-04-23 → 2021-07-26 (+94d) | 2021-04-23 → 2021-07-26 (+94d) |  | 11.5d → 19d |  |
| 88 | Realizzazione Area Lavora con noi | 2021-04-26 → 2021-07-27 (+92d) | 2021-04-26 → 2021-07-27 (+92d) | 0.5d → 1d | 11.5d → 19d | resources dev1 → devfront1 |
| 89 | Progettazione Chat | 2021-04-23 → 2021-07-26 (+94d) | 2021-04-26 → 2021-07-27 (+92d) |  | 9d → 17d | resources prog web, ux → prog web; ux |
| 90 | Realizzazione Chat | 2021-04-27 → 2021-07-28 (+92d) | 2021-04-28 → 2021-07-29 (+92d) |  | 9d → 17d | resources dev2 → devfront2 |
| 91 | **Area Moderatore** | 2021-04-23 → 2021-07-26 (+94d) | 2021-04-28 → 2021-07-29 (+92d) |  | 2d → 10d |  |
| 92 | Progettazione Area Candidati Designer | 2021-04-23 → 2021-07-26 (+94d) | 2021-04-26 → 2021-07-27 (+92d) |  | 2d → 10d |  |
| 93 | Realizzazione Area Candidati Designer | 2021-04-27 → 2021-07-28 (+92d) | 2021-04-28 → 2021-07-29 (+92d) |  | 2d → 10d | resources dev1 → devfront3 |
| 94 | **Area Gestionale** | 2021-04-29 → 2021-07-30 (+92d) | 2021-05-04 → 2021-08-04 (+92d) |  | 2d → 10d |  |
| 95 | Progettazione Area Ordini | 2021-04-29 → 2021-07-30 (+92d) | 2021-04-30 → 2021-08-02 (+94d) |  | 2d → 10d | resources prog web, ux → prog web; ux |
| 96 | Realizzazione Area Ordini | 2021-05-03 → 2021-08-03 (+92d) | 2021-05-04 → 2021-08-04 (+92d) |  | 2d → 10d | resources dev1 → devfront1 |
| 97 | Progettazione Area Gestione Produzione | 2021-04-29 → 2021-07-30 (+92d) | 2021-04-30 → 2021-08-02 (+94d) |  | 2d → 10d | resources prog web, ux → prog web; ux |
| 98 | Realizzazione Area Gestione Produzione | 2021-05-03 → 2021-08-03 (+92d) | 2021-05-04 → 2021-08-04 (+92d) |  | 2d → 10d | resources dev2 → devfront2 |
| 99 | **Area Ricerca e Classifica** | 2021-05-05 → 2021-08-05 (+92d) | 2021-05-07 → 2021-08-09 (+94d) |  | 2d → 10d |  |
| 100 | Progettazione Area Classifica | 2021-05-05 → 2021-08-05 (+92d) | 2021-05-05 → 2021-08-05 (+92d) |  | 2d → 10d |  |
| 101 | Realizzazione Area Classifica | 2021-05-06 → 2021-08-06 (+92d) | 2021-05-07 → 2021-08-09 (+94d) |  | 2d → 10d | resources dev1 → devfront3 |
| 102 | Progettazione Area Ricerca Prodotto | 2021-05-05 → 2021-08-05 (+92d) | 2021-05-05 → 2021-08-05 (+92d) |  | 3d → 11d |  |
| 103 | Realizzazione Area Ricerca Prodotto | 2021-05-06 → 2021-08-06 (+92d) | 2021-05-06 → 2021-08-06 (+92d) |  | 3d → 11d | resources dev2 → devfront2 |

## Version 4 (saved 2021-01-16)

Note of the change: aggiornamento

Last finish stays 2021-08-23.

Added:

| ID | Task | Duration | Start | Finish | Predecessors |
| --- | --- | --- | --- | --- | --- |
| 32 | SAL 1 | 0d | 2021-04-07 | 2021-04-07 | 13 |
| 57 | Milestone 4 | 0d | 2021-06-23 | 2021-06-23 | 33 |
| 81 | Milestone 5 | 0d | 2021-07-20 | 2021-07-20 | 74 |

Changed:

| ID | Task | Start | Finish | Predecessors |
| --- | --- | --- | --- | --- |
| 19 | Milestone 2 | 2021-04-07 → 2021-02-25 (-41d) | 2021-04-07 → 2021-02-25 (-41d) | 13 → 14 |
| 20 | **Realizzazione dell’infrastruttura di rete** |  |  | 14 → 19 |
| 33 | **OR3: Realizzazione Back-end** |  |  | 19 → 32 |
| 42 | Milestone 3 | 2021-06-23 → 2021-05-10 (-44d) | 2021-06-23 → 2021-05-10 (-44d) | 33 → 37 |
| 43 | **Database** |  |  | 37 → 42 |
| 58 | **OR4: Realizzazione Front-end** |  |  | 42 → 57 |
| 82 | **Area Prodotto** |  |  | 74 → 81 |

## Version 5 (saved 2021-01-20)

Note of the change: modificate le voci delle milestones, inserito titolo per ognuna

Last finish 2021-08-23 → 2021-08-27 (+4d).

Changed:

| ID | Task | Start | Finish | Duration | Total float | Other |
| --- | --- | --- | --- | --- | --- | --- |
| 8 | Documento di Controllo e Monitoraggio sugli Obiettivi del Progetto |  | 2021-08-09 → 2021-08-16 (+7d) | 133d → 136d | 1d → 0d |  |
| 9 | **Documento di Chiusura e Lessons Learned** | 2021-08-10 → 2021-08-17 (+7d) | 2021-08-20 → 2021-08-27 (+7d) |  | 1d → 0d |  |
| 10 | Documento di Chiusura | 2021-08-10 → 2021-08-17 (+7d) | 2021-08-13 → 2021-08-20 (+7d) |  | 1d → 0d |  |
| 11 | Lessons Learned | 2021-08-16 → 2021-08-23 (+7d) | 2021-08-20 → 2021-08-27 (+7d) |  | 1d → 0d |  |
| 12 | Milestone 1: documenti di inizio progetto |  |  |  |  | was named Milestone 1 |
| 19 | Milestone 2: pianificazione dell’infrastruttura di rete |  |  |  |  | was named Milestone 2 |
| 42 | Milestone 3: realizzazione e messa in opera dell’infrastruttura di rete; |  |  |  |  | was named Milestone 3 |
| 57 | Milestone 4: completamento back-end del sito web |  |  |  |  | was named Milestone 4 |
| 81 | Milestone 5: funzionalità front-end di base |  |  |  |  | was named Milestone 5 |

## Version 6 (saved 2021-01-29)

Note of the change: reinserite voci milestones

Last finish 2021-08-27 → 2021-08-23 (-4d).

Changed:

| ID | Task | Start | Finish | Duration | Total float | Predecessors | Other |
| --- | --- | --- | --- | --- | --- | --- | --- |
| 8 | Documento di Controllo e Monitoraggio sugli Obiettivi del Progetto |  | 2021-08-16 → 2021-08-09 (-7d) | 136d → 133d | 0d → 1d |  |  |
| 9 | **Documento di Chiusura e Lessons Learned** | 2021-08-17 → 2021-08-10 (-7d) | 2021-08-27 → 2021-08-20 (-7d) |  | 0d → 1d |  |  |
| 10 | Documento di Chiusura | 2021-08-17 → 2021-08-10 (-7d) | 2021-08-20 → 2021-08-13 (-7d) |  | 0d → 1d |  |  |
| 11 | Lessons Learned | 2021-08-23 → 2021-08-16 (-7d) | 2021-08-27 → 2021-08-20 (-7d) |  | 0d → 1d |  |  |
| 12 | Milestone 1: Documenti di inizio progetto |  |  |  |  |  | was named Milestone 1: documenti di inizio progetto |
| 19 | Milestone 2: Pianificazione dell’infrastruttura di rete |  |  |  |  |  | was named Milestone 2: pianificazione dell’infrastruttura di rete |
| 32 | SAL 1 |  |  |  |  | 13 → 30 |  |
| 42 | Milestone 3: Realizzazione e messa in opera dell’infrastruttura di rete |  |  |  |  |  | was named Milestone 3: realizzazione e messa in opera dell’infrastruttura di rete; |
| 57 | Milestone 4: Completamento del back-end del sito web |  |  |  |  | 33 → 48, 51, 54 | was named Milestone 4: completamento back-end del sito web |
| 58 | **OR4: Realizzazione Front-end** |  | 2021-08-09 → 2021-08-23 (+14d) | 33d → 42d | 14d → 1d |  |  |
| 81 | Milestone 5: Funzionalità front-end di base |  |  |  |  |  | was named Milestone 5: funzionalità front-end di base |

## Version 7 (saved 2021-02-02)

Last finish stays 2021-08-23.

Changed:

| ID | Task | Start | Finish | Duration | Total float | Other |
| --- | --- | --- | --- | --- | --- | --- |
| 1 | **OR1:GESTIONE E CONTROLLO** |  |  | 160d? → 160d | none → 0d |  |
| 2 | Business Case e Piano di Progetto |  |  |  | 1d → 0d | resources none → Cristian Colavito |
| 3 | Documento di Gestione dei Rischi |  |  |  | 1d → 0d | resources none → Cristian Colavito |
| 4 | Documento di Gestione della Qualità |  |  |  | 1d → 0d | resources none → Cristian Colavito |
| 5 | Documento di Gestione della Comunicazione |  |  |  | 1d → 0d | resources none → Cristian Colavito |
| 6 | Documento di Gestione del Timing, del Budget e delle Risorse |  |  |  | 1d → 0d | resources none → Cristian Colavito |
| 7 | Studio di mercato |  |  |  | 1d → 0d | resources none → Cristian Colavito |
| 8 | Documento di Controllo e Monitoraggio sugli Obiettivi del Progetto |  | 2021-08-09 → 2021-08-13 (+4d) | 133d → 137d | 1d → 0d | resources none → Cristian Colavito |
| 9 | **Documento di Chiusura e Lessons Learned** | 2021-08-10 → 2021-08-16 (+6d) | 2021-08-20 → 2021-08-23 (+3d) | 9d → 6d | 1d → 0d |  |
| 10 | Documento di Chiusura | 2021-08-10 → 2021-08-16 (+6d) | 2021-08-13 → 2021-08-18 (+5d) | 4d → 3d | 1d → 0d | resources none → Cristian Colavito |
| 11 | Lessons Learned | 2021-08-16 → 2021-08-19 (+3d) | 2021-08-20 → 2021-08-23 (+3d) | 5d → 3d | 1d → 0d | resources none → Cristian Colavito |
| 12 | Milestone 1 |  |  |  | 10d → 7d | was named Milestone 1: Documenti di inizio progetto |
| 13 | **z<** |  | 2021-04-07 → 2021-04-12 (+5d) | 45d → 48d | 10d → 7d | was named OR2: Organizzazione della rete locale |
| 14 | **Report pianificazione dell’infrastruttura di rete** |  | 2021-02-25 → 2021-03-02 (+5d) | 16d → 19d | 10d → 7d |  |
| 15 | Analisi di mercato sulle soluzioni topologiche moderne |  |  |  | 10d → 7d | resources ICT,CS,NS*2 → Gabriele De Bartolomeo; Giorgio Levi |
| 16 | Individuazione asset informatici e rischi correlati |  | 2021-02-10 → 2021-02-15 (+5d) | 3d → 6d | 10d → 7d | resources ICT,CS,NS*2 → Gabriele De Bartolomeo; Giorgio Levi |
| 17 | Pianificazione su software di simulazione di topologie di rete | 2021-02-11 → 2021-02-16 (+5d) | 2021-02-19 → 2021-02-24 (+5d) |  | 10d → 7d | resources ICT,CS,NS*2 → Gabriele De Bartolomeo; Giorgio Levi |
| 18 | Stesura di report finale sulla pianificazione della rete | 2021-02-22 → 2021-02-25 (+3d) | 2021-02-25 → 2021-03-02 (+5d) |  | 10d → 7d | resources ICT → Gabriele De Bartolomeo; Giorgio Levi |
| 19 | Milestone 2 | 2021-02-25 → 2021-03-02 (+5d) | 2021-02-25 → 2021-03-02 (+5d) |  | 10d → 7d | was named Milestone 2: Pianificazione dell’infrastruttura di rete |
| 20 | **Realizzazione dell’infrastruttura di rete** | 2021-02-26 → 2021-03-03 (+5d) | 2021-03-25 → 2021-03-30 (+5d) |  | 10d → 7d |  |
| 21 | Acquisto degli apparati necessari e realizzazione della rete | 2021-02-26 → 2021-03-03 (+5d) | 2021-03-25 → 2021-03-30 (+5d) |  | 10d → 7d | resources CS → Gabriele De Bartolomeo |
| 22 | **Rafforzamento della sicurezza informatica** | 2021-02-26 → 2021-03-03 (+5d) | 2021-04-02 → 2021-04-07 (+5d) |  | 10d → 7d |  |
| 23 | Valutazione preventivi con aziende specializzate in penetration testing | 2021-02-26 → 2021-03-03 (+5d) | 2021-03-11 → 2021-03-16 (+5d) |  | 20d → 17d | resources ICT,CS → Gabriele De Bartolomeo; Giorgio Levi |
| 24 | Svolgimento penetration testing da parte di due aziende scelte | 2021-03-26 → 2021-03-31 (+5d) | 2021-03-29 → 2021-04-01 (+3d) |  | 10d → 7d | resources Collaboratori ICT,CS,NS*2 → Giorgio Nelli; Francesca Rocca; Giorgio Levi |
| 25 | Simulazione Disaster Recovery | 2021-03-30 → 2021-04-02 (+3d) | 2021-03-31 → 2021-04-05 (+5d) |  | 10d → 7d | resources ICT,CS,NS*2 → Giorgio Nelli; Francesca Rocca; Giorgio Levi |
| 26 | Stesura delle linee guida per un piano di Disaster Recovery | 2021-04-01 → 2021-04-06 (+5d) | 2021-04-02 → 2021-04-07 (+5d) |  | 10d → 7d | resources ICT → Gabriele De Bartolomeo |
| 27 | **Corso anti social-engineering per i dipendenti** | 2021-02-26 → 2021-03-03 (+5d) | 2021-03-30 → 2021-04-02 (+3d) |  | 13d → 10d |  |
| 28 | Valutazione preventivi con aziende specializzate nell’attività di training per il contrasto al social engineering | 2021-02-26 → 2021-03-03 (+5d) | 2021-03-08 → 2021-03-11 (+3d) |  | 26d → 23d | resources ICT,CS → Gabriele De Bartolomeo |
| 29 | Contrattazione ed erogazione del corso anti social-engineering da parte dell'azienda scelta | 2021-03-26 → 2021-03-31 (+5d) | 2021-03-30 → 2021-04-02 (+3d) |  | 13d → 10d | resources RISORSE UMANE → Franca Menta |
| 30 | **Messa in opera dell’infrastruttura di rete** | 2021-04-05 → 2021-04-08 (+3d) | 2021-04-07 → 2021-04-12 (+5d) |  | 10d → 7d |  |
| 31 | Messa in opera dell’infrastruttura di rete | 2021-04-05 → 2021-04-08 (+3d) | 2021-04-07 → 2021-04-12 (+5d) |  | 10d → 7d | resources NS*2 → Giorgio Nelli; Francesca Rocca |
| 32 | SAL 1 | 2021-04-07 → 2021-04-12 (+5d) | 2021-04-07 → 2021-04-12 (+5d) |  | 10d → 7d |  |
| 33 | **OR3: Realizzazione Back-end** | 2021-04-08 → 2021-04-13 (+5d) | 2021-06-23 → 2021-06-28 (+5d) |  | 10d → 7d |  |
| 34 | **Accesso al dominio** | 2021-04-08 → 2021-04-13 (+5d) | 2021-04-12 → 2021-04-15 (+3d) |  | 10d → 7d |  |
| 35 | Inizializzazione dominio web | 2021-04-08 → 2021-04-13 (+5d) | 2021-04-09 → 2021-04-14 (+5d) |  | 10d → 7d | resources TM; DB → Carla Mora; Riccardo Melo |
| 36 | Avvio server sul dominio | 2021-04-12 → 2021-04-15 (+3d) | 2021-04-12 → 2021-04-15 (+3d) |  | 10d → 7d | resources TM; DB → Carla Mora; Riccardo Melo |
| 37 | **Documento di progettazione del database** | 2021-04-13 → 2021-04-16 (+3d) | 2021-05-10 → 2021-05-13 (+3d) |  | 10d → 7d |  |
| 38 | Realizzazione diagramma E/R | 2021-04-13 → 2021-04-16 (+3d) | 2021-04-21 → 2021-04-26 (+5d) |  | 10d → 7d | resources DB; TM → Carla Mora; Riccardo Melo |
| 39 | Progettazione logica del database | 2021-04-22 → 2021-04-27 (+5d) | 2021-04-26 → 2021-04-29 (+3d) |  | 10d → 7d | resources DB; TM → Carla Mora; Riccardo Melo |
| 40 | Progettazione fisica del database | 2021-04-27 → 2021-04-30 (+3d) | 2021-04-29 → 2021-05-04 (+5d) |  | 10d → 7d | resources TM; DB → Carla Mora; Riccardo Melo |
| 41 | Progettazione Controller del Database | 2021-04-30 → 2021-05-05 (+5d) | 2021-05-10 → 2021-05-13 (+3d) |  | 10d → 7d | resources TM; dev3 → Carla Mora; Fanny Velasco; Tiziano Seri; Mauro Neri |
| 42 | Milestone 3 | 2021-05-10 → 2021-05-13 (+3d) | 2021-05-10 → 2021-05-13 (+3d) |  | 10d → 7d | was named Milestone 3: Realizzazione e messa in opera dell’infrastruttura di rete |
| 43 | **Database** | 2021-05-11 → 2021-05-14 (+3d) | 2021-05-24 → 2021-05-27 (+3d) |  | 10d → 7d |  |
| 44 | Implementazione del database | 2021-05-11 → 2021-05-14 (+3d) | 2021-05-24 → 2021-05-27 (+3d) |  | 10d → 7d | resources DB; dev1 → Tiziano Seri; Mauro Neri |
| 45 | Implementazione Controller del Database | 2021-05-11 → 2021-05-14 (+3d) | 2021-05-17 → 2021-05-20 (+3d) |  | 15d → 12d | resources TM; dev2 → Fanny Velasco |
| 46 | **Accesso al CMS** | 2021-05-25 → 2021-05-28 (+3d) | 2021-05-26 → 2021-05-31 (+5d) |  | 10d → 7d |  |
| 47 | Installazione del CMS | 2021-05-25 → 2021-05-28 (+3d) | 2021-05-26 → 2021-05-31 (+5d) |  | 10d → 7d | resources dev1; dev2; DB → Mauro Neri; Tiziano Seri |
| 48 | **Autenticazione** | 2021-05-27 → 2021-06-01 (+5d) | 2021-06-23 → 2021-06-28 (+5d) |  | 10d → 7d |  |
| 49 | Progettazione del plugin di autenticazione | 2021-05-27 → 2021-06-01 (+5d) | 2021-06-11 → 2021-06-16 (+5d) |  | 10d → 7d | resources dev1 → Mauro Neri |
| 50 | Interfaccia di autenticazione | 2021-06-14 → 2021-06-17 (+3d) | 2021-06-23 → 2021-06-28 (+5d) |  | 10d → 7d | resources dev1; dev4 → Mauro Neri |
| 51 | **Pagamento** | 2021-05-27 → 2021-06-01 (+5d) | 2021-06-23 → 2021-06-28 (+5d) |  | 10d → 7d |  |
| 52 | Progettazione del plugin di pagamento | 2021-05-27 → 2021-06-01 (+5d) | 2021-06-11 → 2021-06-16 (+5d) |  | 10d → 7d | resources dev2 → Fanny Velasco |
| 53 | Interfaccia di pagamento | 2021-06-14 → 2021-06-17 (+3d) | 2021-06-23 → 2021-06-28 (+5d) |  | 10d → 7d | resources dev2; dev5 → Fanny Velasco |
| 54 | **Gestione Ordini** | 2021-05-27 → 2021-06-01 (+5d) | 2021-06-23 → 2021-06-28 (+5d) |  | 10d → 7d |  |
| 55 | Progettazione plugin di gestione ordini | 2021-05-27 → 2021-06-01 (+5d) | 2021-06-11 → 2021-06-16 (+5d) |  | 10d → 7d | resources dev3 → Tiziano Seri |
| 56 | Implementazione plugin di gestione ordini | 2021-06-14 → 2021-06-17 (+3d) | 2021-06-23 → 2021-06-28 (+5d) |  | 10d → 7d | resources dev3; dev6 → Tiziano Seri |
| 57 | Milestone 4 | 2021-06-23 → 2021-06-28 (+5d) | 2021-06-23 → 2021-06-28 (+5d) |  | 10d → 7d | was named Milestone 4: Completamento del back-end del sito web |
| 58 | **OR4: Realizzazione Front-end** | 2021-06-24 → 2021-06-29 (+5d) |  | 42d → 40d | 1d → 0d |  |
| 59 | **Mappa di navigazione del sito** | 2021-06-24 → 2021-06-29 (+5d) | 2021-06-24 → 2021-06-29 (+5d) |  | 10d → 7d |  |
| 60 | Realizzazione mappa di navigazione del sito | 2021-06-24 → 2021-06-29 (+5d) | 2021-06-24 → 2021-06-29 (+5d) |  | 10d → 7d | resources TM → Carla Mora; Ronald McDonovan |
| 61 | **Template base** | 2021-06-25 → 2021-06-30 (+5d) | 2021-07-01 → 2021-07-06 (+5d) |  | 10d → 7d |  |
| 62 | Scelta colori e font del sito | 2021-06-25 → 2021-06-30 (+5d) | 2021-06-28 → 2021-07-01 (+3d) |  | 10d → 7d | resources prog web; ux → Franco Morbidoni; Ronald McDonovan |
| 63 | Progettazione Header | 2021-06-29 → 2021-07-02 (+3d) | 2021-06-30 → 2021-07-05 (+5d) |  | 10d → 7d | resources prog web; ux → Franco Morbidoni; Ronald McDonovan |
| 64 | Realizzazione Header | 2021-07-01 → 2021-07-06 (+5d) | 2021-07-01 → 2021-07-06 (+5d) |  | 10d → 7d | resources devfront1 → Fanny Velasco; Mauro Neri |
| 65 | Progettazione Footer | 2021-06-29 → 2021-07-02 (+3d) | 2021-06-30 → 2021-07-05 (+5d) |  | 10d → 7d | resources prog web; ux → Franco Morbidoni; Ronald McDonovan |
| 66 | Realizzazione Footer | 2021-07-01 → 2021-07-06 (+5d) | 2021-07-01 → 2021-07-06 (+5d) |  | 10d → 7d | resources devfront2 → Tiziano Seri |
| 67 | **Area personale e autenticazione** | 2021-07-02 → 2021-07-07 (+5d) | 2021-07-08 → 2021-07-13 (+5d) |  | 10d → 7d |  |
| 68 | Progettazione Pagina Profilo | 2021-07-02 → 2021-07-07 (+5d) | 2021-07-05 → 2021-07-08 (+3d) |  | 10d → 7d | resources prog web; ux → Franco Morbidoni; Ronald McDonovan |
| 69 | Realizzazione Pagina Profilo | 2021-07-06 → 2021-07-09 (+3d) | 2021-07-06 → 2021-07-09 (+3d) |  | 12d → 9d | resources devfront2 → Fanny Velasco; Mauro Neri |
| 70 | Progettazione Pagina Login | 2021-07-02 → 2021-07-07 (+5d) | 2021-07-05 → 2021-07-08 (+3d) |  | 10d → 7d | resources prog web; ux → Franco Morbidoni; Ronald McDonovan |

| ID | Task | Start | Finish | Total float | Other |
| --- | --- | --- | --- | --- | --- |
| 71 | Realizzazione Pagina Login | 2021-07-06 → 2021-07-09 (+3d) | 2021-07-06 → 2021-07-09 (+3d) | 12d → 9d | resources devfront1 → Tiziano Seri |
| 72 | Progettazione Registrazione | 2021-07-06 → 2021-07-09 (+3d) | 2021-07-07 → 2021-07-12 (+5d) | 10d → 7d | resources prog web; ux → Franco Morbidoni; Ronald McDonovan |
| 73 | Realizzazione Registrazione | 2021-07-08 → 2021-07-13 (+5d) | 2021-07-08 → 2021-07-13 (+5d) | 10d → 7d | resources devfront1 → Fanny Velasco; Mauro Neri; Tiziano Seri |
| 74 | **Area E-commerce** | 2021-07-09 → 2021-07-14 (+5d) | 2021-07-20 → 2021-07-23 (+3d) | 10d → 7d |  |
| 75 | Progettazione area recensioni | 2021-07-09 → 2021-07-14 (+5d) | 2021-07-13 → 2021-07-16 (+3d) | 10d → 7d | resources prog web; ux → Franco Morbidoni; Ronald McDonovan |
| 76 | Realizzazione area recensioni | 2021-07-14 → 2021-07-19 (+5d) | 2021-07-15 → 2021-07-20 (+5d) | 13d → 10d | resources devfront1 → Fanny Velasco; Mauro Neri; Tiziano Seri |
| 77 | Progettazione Carrello | 2021-07-14 → 2021-07-19 (+5d) | 2021-07-15 → 2021-07-20 (+5d) | 12d → 9d | resources prog web → Franco Morbidoni |
| 78 | Realizzazione Carrello | 2021-07-16 → 2021-07-21 (+5d) | 2021-07-16 → 2021-07-21 (+5d) | 12d → 9d | resources devfront2 → Fanny Velasco; Mauro Neri; Tiziano Seri |
| 79 | Progettazione area acquisti | 2021-07-14 → 2021-07-19 (+5d) | 2021-07-16 → 2021-07-21 (+5d) | 10d → 7d | resources prog web; ux → Franco Morbidoni; Ronald McDonovan |
| 80 | Realizzazione area acquisti | 2021-07-19 → 2021-07-22 (+3d) | 2021-07-20 → 2021-07-23 (+3d) | 10d → 7d | resources devfront3 → Fanny Velasco; Mauro Neri; Tiziano Seri |
| 81 | Milestone 5 | 2021-07-20 → 2021-07-23 (+3d) | 2021-07-20 → 2021-07-23 (+3d) | 10d → 7d | was named Milestone 5: Funzionalità front-end di base |
| 82 | **Area Prodotto** | 2021-07-21 → 2021-07-26 (+5d) | 2021-07-23 → 2021-07-28 (+5d) | 10d → 7d |  |
| 83 | Progettazione pagina prodotto | 2021-07-21 → 2021-07-26 (+5d) | 2021-07-22 → 2021-07-27 (+5d) | 10d → 7d | resources prog web; ux → Franco Morbidoni; Ronald McDonovan |
| 84 | Realizzazione pagina prodotto | 2021-07-23 → 2021-07-28 (+5d) | 2021-07-23 → 2021-07-28 (+5d) | 10d → 7d | resources devfront1 → Fanny Velasco; Mauro Neri; Tiziano Seri |
| 85 | Progettazione Modifica Prodotto | 2021-07-21 → 2021-07-26 (+5d) | 2021-07-21 → 2021-07-26 (+5d) | 11d → 8d | resources prog web; ux → Franco Morbidoni; Ronald McDonovan |
| 86 | Realizzazione Modifica Prodotto | 2021-07-22 → 2021-07-27 (+5d) | 2021-07-22 → 2021-07-27 (+5d) | 11d → 8d | resources devfont2 → Fanny Velasco; Mauro Neri; Tiziano Seri |
| 87 | **Area Social** | 2021-07-26 → 2021-07-29 (+3d) | 2021-07-29 → 2021-08-03 (+5d) | 17d → 14d |  |
| 88 | Progettazione Visualizza profilo utente e designer | 2021-07-26 → 2021-07-29 (+3d) | 2021-07-27 → 2021-07-30 (+3d) | 18d → 15d | resources prog web; ux → Franco Morbidoni; Ronald McDonovan |
| 89 | Realizzazione Visualizza profilo utente e designer | 2021-07-28 → 2021-08-02 (+5d) | 2021-07-28 → 2021-08-02 (+5d) | 18d → 15d | resources devfront3 → Fanny Velasco |
| 90 | Progettazione Area Lavora con noi | 2021-07-26 → 2021-07-29 (+3d) | 2021-07-26 → 2021-07-29 (+3d) | 19d → 16d | resources prog web → Franco Morbidoni |
| 91 | Realizzazione Area Lavora con noi | 2021-07-27 → 2021-07-30 (+3d) | 2021-07-27 → 2021-07-30 (+3d) | 19d → 16d | resources devfront1 → Fanny Velasco; Mauro Neri; Tiziano Seri |
| 92 | Progettazione Chat | 2021-07-26 → 2021-07-29 (+3d) | 2021-07-27 → 2021-07-30 (+3d) | 17d → 14d | resources prog web; ux → Franco Morbidoni; Ronald McDonovan |
| 93 | Realizzazione Chat | 2021-07-28 → 2021-08-02 (+5d) | 2021-07-29 → 2021-08-03 (+5d) | 17d → 14d | resources devfront2 → Mauro Neri |
| 94 | **Area Moderatore** | 2021-07-26 → 2021-07-29 (+3d) | 2021-07-29 → 2021-08-03 (+5d) | 10d → 7d |  |
| 95 | Progettazione Area Candidati Designer | 2021-07-26 → 2021-07-29 (+3d) | 2021-07-27 → 2021-07-30 (+3d) | 10d → 7d | resources prog web → Franco Morbidoni |
| 96 | Realizzazione Area Candidati Designer | 2021-07-28 → 2021-08-02 (+5d) | 2021-07-29 → 2021-08-03 (+5d) | 10d → 7d | resources devfront3 → Tiziano Seri |
| 97 | **Area Gestionale** | 2021-07-30 → 2021-08-04 (+5d) | 2021-08-04 → 2021-08-09 (+5d) | 10d → 7d |  |
| 98 | Progettazione Area Ordini | 2021-07-30 → 2021-08-04 (+5d) | 2021-08-02 → 2021-08-05 (+3d) | 10d → 7d | resources prog web; ux → Franco Morbidoni; Ronald McDonovan |
| 99 | Realizzazione Area Ordini | 2021-08-03 → 2021-08-06 (+3d) | 2021-08-04 → 2021-08-09 (+5d) | 10d → 7d | resources devfront1 → Tiziano Seri; Mauro Neri |
| 100 | Progettazione Area Gestione Produzione | 2021-07-30 → 2021-08-04 (+5d) | 2021-08-02 → 2021-08-05 (+3d) | 10d → 7d | resources prog web; ux → Franco Morbidoni; Ronald McDonovan |
| 101 | Realizzazione Area Gestione Produzione | 2021-08-03 → 2021-08-06 (+3d) | 2021-08-04 → 2021-08-09 (+5d) | 10d → 7d | resources devfront2 → Fanny Velasco |
| 102 | **Area Ricerca e Classifica** | 2021-08-05 → 2021-08-10 (+5d) | 2021-08-09 → 2021-08-12 (+3d) | 10d → 7d |  |
| 103 | Progettazione Area Classifica | 2021-08-05 → 2021-08-10 (+5d) | 2021-08-05 → 2021-08-10 (+5d) | 10d → 7d | resources prog web → Franco Morbidoni |
| 104 | Realizzazione Area Classifica | 2021-08-06 → 2021-08-11 (+5d) | 2021-08-09 → 2021-08-12 (+3d) | 10d → 7d | resources devfront3 → Tiziano Seri; Mauro Neri |
| 105 | Progettazione Area Ricerca Prodotto | 2021-08-05 → 2021-08-10 (+5d) | 2021-08-05 → 2021-08-10 (+5d) | 11d → 8d | resources prog web → Franco Morbidoni |
| 106 | Realizzazione Area Ricerca Prodotto | 2021-08-06 → 2021-08-11 (+5d) | 2021-08-06 → 2021-08-11 (+5d) | 11d → 8d | resources devfront2 → Fanny Velasco |

## Version 8 (saved 2021-02-04)

Last finish stays 2021-08-23.

Added:

| ID | Task | Duration | Start | Finish | Predecessors | Resources |
| --- | --- | --- | --- | --- | --- | --- |
| 1 | **Preso 3D** | 160d | 2021-01-12 | 2021-08-23 |  |  |
| 3 | **Documenti di Project Management** | 157d | 2021-01-12 | 2021-08-18 |  |  |
| 11 | **Chiusura e lesson Learned** | 3d | 2021-08-19 | 2021-08-23 | 10, 100 |  |
| 15 | Milestone 1: Documenti inizio progetto | 0d | 2021-02-03 | 2021-02-03 |  |  |
| 26 | Servizi dell User | 10d | 2021-02-26 | 2021-03-11 |  | sFanny Velasco; sMauro Neri |
| 27 | Servizi dell Azienda | 10d | 2021-02-26 | 2021-03-11 |  | sRoberto Nigro; sTiziano Seri |
| 28 | Servizi del designer | 10d | 2021-03-12 | 2021-03-25 | 26 | sFanny Velasco; sMauro Neri |
| 29 | Servizi del Moderator | 10d | 2021-03-12 | 2021-03-25 | 27 | sRoberto Nigro; sTiziano Seri |
| 30 | **Realizzazione Controller** | 16d | 2021-03-26 | 2021-04-16 | 25 |  |
| 31 | Realizzazione Controller Public | 6d | 2021-03-26 | 2021-04-02 |  | sRoberto Nigro; sTiziano Seri |
| 32 | Realizzazione Controller InternoAzienda | 6d | 2021-03-26 | 2021-04-02 |  | sFanny Velasco; sMauro Neri |
| 33 | Realizzazione Controller User | 7d | 2021-04-05 | 2021-04-13 | 31 | sRoberto Nigro; sTiziano Seri |
| 34 | Realizzazione Controller Designer | 10d | 2021-04-05 | 2021-04-16 | 32 | sFanny Velasco; sMauro Neri |
| 35 | Realizzazione Controller Moderator | 10d | 2021-04-05 | 2021-04-16 | 31 | sTiziano Seri; sRoberto Nigro |
| 36 | SAL: Fine Back-end | 0d | 2021-04-16 | 2021-04-16 | 30 |  |
| 60 | **Realizzazione Viste** | 19d | 2021-05-17 | 2021-06-10 | 38 |  |
| 98 | **Deploy della Piattaforma e testing** | 14d | 2021-07-30 | 2021-08-18 | 90 |  |
| 99 | Deploy della piattaforma | 4d | 2021-07-30 | 2021-08-04 |  | Carla Mora |
| 100 | Testing della piattaforma | 10d | 2021-08-05 | 2021-08-18 | 99 | sFanny Velasco; sMauro Neri; sRoberto Nigro; sTiziano Seri |

Removed: 9 Documento di Chiusura e Lessons Learned; 27 Corso anti social-engineering per i dipendenti; 30 Messa in opera dell’infrastruttura di rete; 41 Progettazione Controller del Database; 45 Implementazione Controller del Database; 46 Accesso al CMS; 47 Installazione del CMS; 48 Autenticazione; 49 Progettazione del plugin di autenticazione; 50 Interfaccia di autenticazione; 51 Pagamento; 52 Progettazione del plugin di pagamento; 53 Interfaccia di pagamento; 54 Gestione Ordini; 55 Progettazione plugin di gestione ordini; 56 Implementazione plugin di gestione ordini; 57 Milestone 4; 61 Template base; 67 Area personale e autenticazione; 74 Area E-commerce; 82 Area Prodotto; 87 Area Social; 94 Area Moderatore; 97 Area Gestionale; 102 Area Ricerca e Classifica

Changed:

| ID | Task | Start | Finish | Duration | Total float | Predecessors | Other |
| --- | --- | --- | --- | --- | --- | --- | --- |
| 2 | **OR1:GESTIONE E CONTROLLO** |  |  |  |  |  | resources none → spesa per wp immobile [0.1%]; Spese Generali per wp [0.1%] |
| 10 | Documento di Controllo e Monitoraggio sugli Obiettivi del Progetto |  | 2021-08-13 → 2021-08-18 (+5d) | 137d → 140d |  |  | constraint start no earlier than 2021-01-11 → finish no earlier than 2021-08-13 |
| 12 | Documento di Chiusura | 2021-08-16 → 2021-08-19 (+3d) | 2021-08-18 → 2021-08-19 (+1d) | 3d → 1d |  |  |  |
| 13 | Lessons Learned | 2021-08-19 → 2021-08-20 (+1d) |  | 3d → 2d |  |  |  |
| 14 | **OR2 Realizzazione Back-end** | 2021-04-13 → 2021-02-03 (-69d) | 2021-06-28 → 2021-04-16 (-73d) | 55d → 52d | 7d → 0d | 86 → 9 | was named OR3: Realizzazione Back-end; resources none → spesa per wp immobile [0.1%]; Spese Generali per wp [0.1%] |
| 16 | **Configurazione Server** | 2021-04-13 → 2021-02-04 (-68d) | 2021-04-15 → 2021-02-08 (-66d) |  | 7d → 0d |  | was named Accesso al dominio |
| 17 | Inizializzazione dominio web | 2021-04-13 → 2021-02-04 (-68d) | 2021-04-14 → 2021-02-05 (-68d) |  | 7d → 0d |  |  |
| 18 | Avvio server sul dominio | 2021-04-15 → 2021-02-08 (-66d) | 2021-04-15 → 2021-02-08 (-66d) |  | 7d → 0d |  |  |
| 19 | **Progettazione e realizzazione database** | 2021-04-16 → 2021-02-09 (-66d) | 2021-05-13 → 2021-02-25 (-77d) | 20d → 13d | 7d → 0d |  | was named Documento di progettazione del database |
| 20 | Realizzazione diagramma E/R | 2021-04-16 → 2021-02-09 (-66d) | 2021-04-26 → 2021-02-15 (-70d) | 7d → 5d | 7d → 0d |  |  |
| 21 | Progettazione logica del database | 2021-04-27 → 2021-02-16 (-70d) | 2021-04-29 → 2021-02-17 (-71d) | 3d → 2d | 7d → 0d |  |  |
| 22 | Progettazione fisica del database | 2021-04-30 → 2021-02-18 (-71d) | 2021-05-04 → 2021-02-19 (-74d) | 3d → 2d | 7d → 0d |  |  |
| 23 | Implementazione del database | 2021-05-14 → 2021-02-22 (-81d) | 2021-05-27 → 2021-02-25 (-91d) | 10d → 4d | 7d → 0d | none → 22 | resources Tiziano Seri; Mauro Neri → sTiziano Seri; sMauro Neri |
| 24 | Milestone 2: Database | 2021-05-13 → 2021-02-25 (-77d) | 2021-05-13 → 2021-02-25 (-77d) |  | 7d → 127d |  | was named Milestone 3 |
| 25 | **Realizzazione Service** | 2021-05-14 → 2021-02-26 (-77d) | 2021-05-27 → 2021-03-25 (-63d) | 10d → 20d | 7d → 0d | 24 → 19 | was named Database |
| 37 | **OR3: Realizzazione Front-end** | 2021-06-29 → 2021-04-19 (-71d) | 2021-08-23 → 2021-06-10 (-74d) | 40d → 39d |  | Milestone 4 → 36 | was named OR4: Realizzazione Front-end; resources none → spesa per wp immobile [0.1%]; Spese Generali per wp [0.1%] |
| 38 | **Mappa di navigazione del sito e design del sito** | 2021-06-29 → 2021-04-19 (-71d) | 2021-06-29 → 2021-05-14 (-46d) | 1d → 20d | 7d → 0d |  | was named Mappa di navigazione del sito |
| 39 | Realizzazione mappa di navigazione del sito | 2021-06-29 → 2021-04-19 (-71d) | 2021-06-29 → 2021-04-19 (-71d) |  | 7d → 19d |  |  |
| 40 | Scelta colori e font del sito | 2021-06-30 → 2021-04-19 (-72d) | 2021-07-01 → 2021-04-20 (-72d) |  | 7d → 0d |  |  |
| 41 | Progettazione Header | 2021-07-02 → 2021-04-21 (-72d) | 2021-07-05 → 2021-04-22 (-74d) |  | 7d → 16d |  |  |
| 42 | Progettazione Footer | 2021-07-02 → 2021-04-21 (-72d) | 2021-07-05 → 2021-04-22 (-74d) |  | 7d → 0d |  |  |
| 43 | Progettazione Pagina Profilo | 2021-07-07 → 2021-04-23 (-75d) | 2021-07-08 → 2021-04-26 (-73d) |  | 7d → 14d | none → 42 |  |
| 44 | Progettazione Pagina Login | 2021-07-07 → 2021-04-23 (-75d) | 2021-07-08 → 2021-04-26 (-73d) |  | 7d → 0d | none → 42 |  |
| 45 | Progettazione Registrazione | 2021-07-09 → 2021-04-27 (-73d) | 2021-07-12 → 2021-04-28 (-75d) |  | 7d → 12d | 43, 44 → 44 |  |
| 46 | Progettazione area recensioni | 2021-07-14 → 2021-04-27 (-78d) | 2021-07-16 → 2021-04-29 (-78d) |  | 7d → 0d | none → 44 |  |
| 47 | Progettazione Carrello | 2021-07-19 → 2021-04-30 (-80d) | 2021-07-20 → 2021-05-03 (-78d) |  |  |  |  |
| 48 | Progettazione area acquisti | 2021-07-19 → 2021-04-30 (-80d) | 2021-07-21 → 2021-05-04 (-78d) |  | 7d → 0d |  |  |
| 49 | Progettazione pagina prodotto | 2021-07-26 → 2021-05-05 (-82d) | 2021-07-27 → 2021-05-06 (-82d) |  | 7d → 6d | none → 48 |  |
| 50 | Progettazione Modifica Prodotto | 2021-07-26 → 2021-05-05 (-82d) | 2021-07-26 → 2021-05-05 (-82d) |  | 8d → 0d | none → 48 |  |
| 51 | Progettazione Visualizza profilo utente e designer | 2021-07-29 → 2021-05-06 (-84d) | 2021-07-30 → 2021-05-07 (-84d) |  | 15d → 0d | none → 50 |  |
| 52 | Progettazione Area Lavora con noi | 2021-07-29 → 2021-05-06 (-84d) | 2021-07-29 → 2021-05-06 (-84d) |  | 16d → 0d | none → 50 | constraint none → finish no later than 2021-05-06 |
| 53 | Progettazione Chat | 2021-07-29 → 2021-05-10 (-80d) | 2021-07-30 → 2021-05-11 (-80d) |  | 14d → 0d | none → 52, 51 |  |
| 54 | Progettazione Area Candidati Designer | 2021-07-29 → 2021-05-10 (-80d) | 2021-07-30 → 2021-05-11 (-80d) |  | 7d → 0d | none → 51, 52 |  |
| 55 | Progettazione Area Ordini | 2021-08-04 → 2021-05-12 (-84d) | 2021-08-05 → 2021-05-13 (-84d) |  | 7d → 1d | none → 54, 53 |  |
| 56 | Progettazione Area Gestione Produzione | 2021-08-04 → 2021-05-12 (-84d) | 2021-08-05 → 2021-05-13 (-84d) |  | 7d → 0d | none → 53, 54 |  |
| 57 | Progettazione Area Classifica | 2021-08-10 → 2021-05-14 (-88d) | 2021-08-10 → 2021-05-14 (-88d) |  | 7d → 0d | none → 56 |  |
| 58 | Progettazione Area Ricerca Prodotto | 2021-08-10 → 2021-05-14 (-88d) | 2021-08-10 → 2021-05-14 (-88d) |  | 8d → 0d | none → 56 |  |
| 59 | Milestone 4: Mockup del sito | 2021-07-23 → 2021-05-14 (-70d) | 2021-07-23 → 2021-05-14 (-70d) |  | 7d → 71d | Area E-commerce → 38 | was named Milestone 5 |
| 61 | Realizzazione Header | 2021-07-06 → 2021-05-17 (-50d) | 2021-07-06 → 2021-05-17 (-50d) |  | 7d → 1d | 41 → none | resources Fanny Velasco; Mauro Neri → sFanny Velasco; sMauro Neri |
| 62 | Realizzazione Footer | 2021-07-06 → 2021-05-17 (-50d) | 2021-07-06 → 2021-05-17 (-50d) |  | 7d → 0d | 42 → none | resources Tiziano Seri → sTiziano Seri; sRoberto Nigro |
| 63 | Realizzazione Pagina Profilo | 2021-07-09 → 2021-05-18 (-52d) | 2021-07-09 → 2021-05-18 (-52d) |  | 9d → 1d | 43 → 61 | resources Fanny Velasco; Mauro Neri → sFanny Velasco; sMauro Neri |
| 64 | Realizzazione Pagina Login | 2021-07-09 → 2021-05-18 (-52d) | 2021-07-09 → 2021-05-18 (-52d) |  | 9d → 0d | 44 → 62 | resources Tiziano Seri → sTiziano Seri; sRoberto Nigro |
| 65 | Realizzazione Registrazione | 2021-07-13 → 2021-05-19 (-55d) | 2021-07-13 → 2021-05-19 (-55d) |  | 7d → 1d | 45 → 63 | resources Fanny Velasco; Mauro Neri; Tiziano Seri → sFanny Velasco; sMauro Neri |
| 66 | Realizzazione area recensioni | 2021-07-19 → 2021-05-19 (-61d) | 2021-07-20 → 2021-05-20 (-61d) |  | 10d → 0d | 46 → 64 | resources Fanny Velasco; Mauro Neri; Tiziano Seri → sTiziano Seri; sRoberto Nigro |
| 67 | Realizzazione Carrello | 2021-07-21 → 2021-05-20 (-62d) | 2021-07-21 → 2021-05-21 (-61d) | 1d → 2d | 9d → 1d | 47 → 65 | resources Fanny Velasco; Mauro Neri; Tiziano Seri → sFanny Velasco; sMauro Neri |
| 68 | Realizzazione area acquisti | 2021-07-22 → 2021-05-21 (-62d) | 2021-07-23 → 2021-05-24 (-60d) |  | 7d → 0d | 48 → 66 | resources Fanny Velasco; Mauro Neri; Tiziano Seri → sTiziano Seri; sRoberto Nigro |
| 69 | Realizzazione pagina prodotto | 2021-07-28 → 2021-05-24 (-65d) | 2021-07-28 → 2021-05-26 (-63d) | 1d → 3d | 7d → 1d | 49 → 67 | resources Fanny Velasco; Mauro Neri; Tiziano Seri → sFanny Velasco; sMauro Neri |
| 70 | Realizzazione Modifica Prodotto | 2021-07-27 → 2021-05-25 (-63d) | 2021-07-27 → 2021-05-27 (-61d) | 1d → 3d | 8d → 0d | 50 → 68 | resources Fanny Velasco; Mauro Neri; Tiziano Seri → sTiziano Seri; sRoberto Nigro |
| 71 | Realizzazione Visualizza profilo utente e designer | 2021-08-02 → 2021-05-27 (-67d) | 2021-08-02 → 2021-05-28 (-66d) | 1d → 2d | 15d → 1d | 51 → 69 | resources Fanny Velasco → sFanny Velasco; sMauro Neri |
| 72 | Realizzazione Area Lavora con noi | 2021-07-30 → 2021-05-28 (-63d) | 2021-07-30 → 2021-05-31 (-60d) | 1d → 2d | 16d → 0d | 52 → 70 | resources Fanny Velasco; Mauro Neri; Tiziano Seri → sTiziano Seri; sRoberto Nigro |
| 73 | Realizzazione Chat | 2021-08-02 → 2021-05-31 (-63d) | 2021-08-03 → 2021-06-01 (-63d) |  | 14d → 1d | 53 → 71 | resources Mauro Neri → sMauro Neri; sFanny Velasco |
| 74 | Realizzazione Area Candidati Designer | 2021-08-02 → 2021-06-01 (-62d) | 2021-08-03 → 2021-06-02 (-62d) |  | 7d → 0d | 54 → 72 | resources Tiziano Seri → sTiziano Seri; sRoberto Nigro |
| 75 | Realizzazione Area Ordini | 2021-08-06 → 2021-06-02 (-65d) | 2021-08-09 → 2021-06-03 (-67d) |  | 7d → 1d | 55 → 73 | resources Tiziano Seri; Mauro Neri → sMauro Neri; sFanny Velasco |
| 76 | Realizzazione Area Gestione Produzione | 2021-08-06 → 2021-06-03 (-64d) | 2021-08-09 → 2021-06-04 (-66d) |  | 7d → 0d | 56 → 74 | resources Fanny Velasco → sTiziano Seri; sRoberto Nigro |
| 77 | Realizzazione Area Classifica | 2021-08-11 → 2021-06-04 (-68d) | 2021-08-12 → 2021-06-09 (-64d) | 2d → 4d | 7d → 1d | 57 → 75 | resources Tiziano Seri; Mauro Neri → sMauro Neri; sFanny Velasco |
| 78 | Realizzazione Area Ricerca Prodotto | 2021-08-11 → 2021-06-07 (-65d) | 2021-08-11 → 2021-06-10 (-62d) | 1d → 4d | 8d → 0d | 58 → 76 | resources Fanny Velasco → sTiziano Seri; sRoberto Nigro |
| 79 | Milestone 5: Fine Front-end | 2021-08-23 → 2021-06-10 (-74d) | 2021-08-23 → 2021-06-10 (-74d) |  | 0d → 52d | Documento di Chiusura e Lessons Learned → 60 | was named SAL FINE PROGETTO |
| 80 | **OR4: Organizzazione della rete locale e testing** | 2021-02-04 → 2021-06-11 (+127d) | 2021-04-12 → 2021-08-23 (+133d) | 48d → 52d | 7d → 0d | 101 → 9, 60 | was named z<; resources none → spesa per wp immobile [0.1%]; Spese Generali per wp [0.1%] |
| 81 | **Report pianificazione dell’infrastruttura di rete** | 2021-02-04 → 2021-06-11 (+127d) | 2021-03-02 → 2021-07-07 (+127d) |  | 7d → 0d |  |  |
| 82 | Analisi di mercato sulle soluzioni topologiche moderne | 2021-02-04 → 2021-06-11 (+127d) | 2021-02-05 → 2021-06-14 (+129d) |  | 7d → 0d |  |  |
| 83 | Individuazione asset informatici e rischi correlati | 2021-02-08 → 2021-06-15 (+127d) | 2021-02-15 → 2021-06-22 (+127d) |  | 7d → 0d |  |  |
| 84 | Pianificazione su software di simulazione di topologie di rete | 2021-02-16 → 2021-06-23 (+127d) | 2021-02-24 → 2021-07-01 (+127d) |  | 7d → 0d |  |  |
| 85 | Stesura di report finale sulla pianificazione della rete | 2021-02-25 → 2021-07-02 (+127d) | 2021-03-02 → 2021-07-07 (+127d) |  | 7d → 0d |  |  |
| 86 | Milestone 6: Progettazione Infrastruttura | 2021-04-12 → 2021-07-07 (+86d) | 2021-04-12 → 2021-07-07 (+86d) |  | 7d → 33d | Messa in opera dell’infrastruttura di rete → 81 | was named SAL 1 |
| 87 | **Realizzazione dell’infrastruttura di rete** | 2021-03-03 → 2021-07-08 (+127d) | 2021-03-30 → 2021-08-09 (+132d) | 20d → 23d | 7d → 10d | 97 → 81 |  |
| 88 | Acquisto degli apparati necessari e realizzazione della rete | 2021-03-03 → 2021-07-08 (+127d) | 2021-03-30 → 2021-08-04 (+127d) |  | 7d → 10d |  | resources Gabriele De Bartolomeo → Gabriele De Bartolomeo; Wifi Access Points [2000%]; Switches L2/L3 e Routers [1500%]; Stampanti di rete [200%]; Enterprise Switches (Accesso) [200%]; Enterprise Switches (Aggregazione) [400%]; Enterprise Routers (Edge) [200%]; Firewall [200%]; Domain Servers [200%]; Storage Area Network |
| 89 | Messa in opera dell’infrastruttura di rete | 2021-04-08 → 2021-08-05 (+119d) | 2021-04-12 → 2021-08-09 (+119d) |  | 7d → 10d | 94 → 88 |  |
| 90 | **Rafforzamento della sicurezza informatica** | 2021-03-03 → 2021-07-08 (+127d) | 2021-04-07 → 2021-07-29 (+113d) | 26d → 16d | 7d → 0d |  |  |
| 91 | Valutazione preventivi con aziende specializzate in penetration testing | 2021-03-03 → 2021-07-08 (+127d) | 2021-03-16 → 2021-07-21 (+127d) |  | 17d → 0d | 88SS → none |  |
| 92 | Svolgimento penetration testing da parte di due aziende scelte | 2021-03-31 → 2021-07-22 (+113d) | 2021-04-01 → 2021-07-23 (+113d) |  | 7d → 0d | 88, 91 → 91 | resources Giorgio Nelli; Francesca Rocca; Giorgio Levi → Giorgio Nelli; Francesca Rocca; Giorgio Levi; Budget Penetration testing [0.1%] |

| ID | Task | Start | Finish | Duration | Total float | Predecessors | Other |
| --- | --- | --- | --- | --- | --- | --- | --- |
| 93 | Simulazione Disaster Recovery | 2021-04-02 → 2021-07-26 (+115d) | 2021-04-05 → 2021-07-27 (+113d) |  | 7d → 0d |  |  |
| 94 | Stesura delle linee guida per un piano di Disaster Recovery | 2021-04-06 → 2021-07-28 (+113d) | 2021-04-07 → 2021-07-29 (+113d) |  | 7d → 0d |  |  |
| 95 | Valutazione preventivi con aziende specializzate nell’attività di training per il contrasto al social engineering | 2021-03-03 → 2021-07-08 (+127d) | 2021-03-11 → 2021-07-12 (+123d) | 7d → 3d | 23d → 10d | 88SS → none |  |
| 96 | Contrattazione ed erogazione del corso anti social-engineering da parte dell'azienda scelta | 2021-03-31 → 2021-07-13 (+104d) | 2021-04-02 → 2021-07-15 (+104d) |  |  | 95, 88 → 95 | resources Franca Menta → Franca Menta; Budget corso anti social engineering [0.1%] |
| 97 | Milestone 7: Realizzazione Infrastruttura | 2021-03-02 → 2021-07-29 (+149d) | 2021-03-02 → 2021-07-29 (+149d) |  | 7d → 17d | 81 → 90 | was named Milestone 2 |
| 101 | SAL: Testing e Chiusura Progetto | 2021-02-03 → 2021-08-23 (+201d) | 2021-02-03 → 2021-08-23 (+201d) |  | 7d → 0d | 9 → 11 | was named Milestone 1 |

## Version 9 (saved 2021-02-11)

Last finish stays 2021-08-23.

Changed:

| ID | Task | Other |
| --- | --- | --- |
| 1 | **Preso 3D** | baseline start none → 2021-01-12; baseline finish none → 2021-08-23 |
| 2 | **OR1:GESTIONE E CONTROLLO** | baseline start none → 2021-01-12; baseline finish none → 2021-08-23 |
| 3 | **Documenti di Project Management** | baseline start none → 2021-01-12; baseline finish none → 2021-08-18 |
| 4 | Business Case e Piano di Progetto | baseline start none → 2021-01-12; baseline finish none → 2021-01-14 |
| 5 | Documento di Gestione dei Rischi | baseline start none → 2021-01-15; baseline finish none → 2021-01-18 |
| 6 | Documento di Gestione della Qualità | baseline start none → 2021-01-19; baseline finish none → 2021-01-21 |
| 7 | Documento di Gestione della Comunicazione | baseline start none → 2021-01-22; baseline finish none → 2021-01-28 |
| 8 | Documento di Gestione del Timing, del Budget e delle Risorse | baseline start none → 2021-01-29; baseline finish none → 2021-02-01 |
| 9 | Studio di mercato | baseline start none → 2021-02-02; baseline finish none → 2021-02-03 |
| 10 | Documento di Controllo e Monitoraggio sugli Obiettivi del Progetto | baseline start none → 2021-02-04; baseline finish none → 2021-08-18 |
| 11 | **Chiusura e lesson Learned** | baseline start none → 2021-08-19; baseline finish none → 2021-08-23 |
| 12 | Documento di Chiusura | baseline start none → 2021-08-19; baseline finish none → 2021-08-19 |
| 13 | Lessons Learned | baseline start none → 2021-08-20; baseline finish none → 2021-08-23 |
| 14 | **OR2 Realizzazione Back-end** | baseline start none → 2021-02-03; baseline finish none → 2021-04-16 |
| 15 | Milestone 1: Documenti inizio progetto | baseline start none → 2021-02-03; baseline finish none → 2021-02-03 |
| 16 | **Configurazione Server** | baseline start none → 2021-02-04; baseline finish none → 2021-02-08 |
| 17 | Inizializzazione dominio web | baseline start none → 2021-02-04; baseline finish none → 2021-02-05 |
| 18 | Avvio server sul dominio | baseline start none → 2021-02-08; baseline finish none → 2021-02-08 |
| 19 | **Progettazione e realizzazione database** | baseline start none → 2021-02-09; baseline finish none → 2021-02-25 |
| 20 | Realizzazione diagramma E/R | baseline start none → 2021-02-09; baseline finish none → 2021-02-15 |
| 21 | Progettazione logica del database | baseline start none → 2021-02-16; baseline finish none → 2021-02-17 |
| 22 | Progettazione fisica del database | baseline start none → 2021-02-18; baseline finish none → 2021-02-19 |
| 23 | Implementazione del database | resources sTiziano Seri; sMauro Neri → Tiziano Seri; Mauro Neri; baseline start none → 2021-02-22; baseline finish none → 2021-02-25 |
| 24 | Milestone 2: Database | baseline start none → 2021-02-25; baseline finish none → 2021-02-25 |
| 25 | **Realizzazione Service** | baseline start none → 2021-02-26; baseline finish none → 2021-03-25 |
| 26 | Servizi dell User | resources sFanny Velasco; sMauro Neri → Fanny Velasco; Mauro Neri; baseline start none → 2021-02-26; baseline finish none → 2021-03-11 |
| 27 | Servizi dell Azienda | resources sRoberto Nigro; sTiziano Seri → Roberto Nigro; Tiziano Seri; baseline start none → 2021-02-26; baseline finish none → 2021-03-11 |
| 28 | Servizi del designer | resources sFanny Velasco; sMauro Neri → Fanny Velasco; Mauro Neri; baseline start none → 2021-03-12; baseline finish none → 2021-03-25 |
| 29 | Servizi del Moderator | resources sRoberto Nigro; sTiziano Seri → Roberto Nigro; Tiziano Seri; baseline start none → 2021-03-12; baseline finish none → 2021-03-25 |
| 30 | **Realizzazione Controller** | baseline start none → 2021-03-26; baseline finish none → 2021-04-16 |
| 31 | Realizzazione Controller Public | resources sRoberto Nigro; sTiziano Seri → Roberto Nigro; Tiziano Seri; baseline start none → 2021-03-26; baseline finish none → 2021-04-02 |
| 32 | Realizzazione Controller InternoAzienda | resources sFanny Velasco; sMauro Neri → Fanny Velasco; Mauro Neri; baseline start none → 2021-03-26; baseline finish none → 2021-04-02 |
| 33 | Realizzazione Controller User | resources sRoberto Nigro; sTiziano Seri → Roberto Nigro; Tiziano Seri; baseline start none → 2021-04-05; baseline finish none → 2021-04-13 |
| 34 | Realizzazione Controller Designer | resources sFanny Velasco; sMauro Neri → Fanny Velasco; Mauro Neri; baseline start none → 2021-04-05; baseline finish none → 2021-04-16 |
| 35 | Realizzazione Controller Moderator | resources sTiziano Seri; sRoberto Nigro → Tiziano Seri; Roberto Nigro; baseline start none → 2021-04-05; baseline finish none → 2021-04-16 |
| 36 | SAL: Fine Back-end | baseline start none → 2021-04-16; baseline finish none → 2021-04-16 |
| 37 | **OR3: Realizzazione Front-end** | baseline start none → 2021-04-19; baseline finish none → 2021-06-10 |
| 38 | **Mappa di navigazione del sito e design del sito** | baseline start none → 2021-04-19; baseline finish none → 2021-05-14 |
| 39 | Realizzazione mappa di navigazione del sito | baseline start none → 2021-04-19; baseline finish none → 2021-04-19 |
| 40 | Scelta colori e font del sito | baseline start none → 2021-04-19; baseline finish none → 2021-04-20 |
| 41 | Progettazione Header | baseline start none → 2021-04-21; baseline finish none → 2021-04-22 |
| 42 | Progettazione Footer | baseline start none → 2021-04-21; baseline finish none → 2021-04-22 |
| 43 | Progettazione Pagina Profilo | baseline start none → 2021-04-23; baseline finish none → 2021-04-26 |
| 44 | Progettazione Pagina Login | baseline start none → 2021-04-23; baseline finish none → 2021-04-26 |
| 45 | Progettazione Registrazione | baseline start none → 2021-04-27; baseline finish none → 2021-04-28 |
| 46 | Progettazione area recensioni | baseline start none → 2021-04-27; baseline finish none → 2021-04-29 |
| 47 | Progettazione Carrello | baseline start none → 2021-04-30; baseline finish none → 2021-05-03 |
| 48 | Progettazione area acquisti | baseline start none → 2021-04-30; baseline finish none → 2021-05-04 |
| 49 | Progettazione pagina prodotto | baseline start none → 2021-05-05; baseline finish none → 2021-05-06 |
| 50 | Progettazione Modifica Prodotto | baseline start none → 2021-05-05; baseline finish none → 2021-05-05 |
| 51 | Progettazione Visualizza profilo utente e designer | baseline start none → 2021-05-06; baseline finish none → 2021-05-07 |
| 52 | Progettazione Area Lavora con noi | baseline start none → 2021-05-06; baseline finish none → 2021-05-06 |
| 53 | Progettazione Chat | baseline start none → 2021-05-10; baseline finish none → 2021-05-11 |
| 54 | Progettazione Area Candidati Designer | baseline start none → 2021-05-10; baseline finish none → 2021-05-11 |
| 55 | Progettazione Area Ordini | baseline start none → 2021-05-12; baseline finish none → 2021-05-13 |
| 56 | Progettazione Area Gestione Produzione | baseline start none → 2021-05-12; baseline finish none → 2021-05-13 |
| 57 | Progettazione Area Classifica | baseline start none → 2021-05-14; baseline finish none → 2021-05-14 |
| 58 | Progettazione Area Ricerca Prodotto | baseline start none → 2021-05-14; baseline finish none → 2021-05-14 |
| 59 | Milestone 3: Mockup del sito | was named Milestone 4: Mockup del sito; baseline start none → 2021-05-14; baseline finish none → 2021-05-14 |
| 60 | **Realizzazione Viste** | baseline start none → 2021-05-17; baseline finish none → 2021-06-10 |
| 61 | Realizzazione Header | resources sFanny Velasco; sMauro Neri → Fanny Velasco; Mauro Neri; baseline start none → 2021-05-17; baseline finish none → 2021-05-17 |
| 62 | Realizzazione Footer | resources sTiziano Seri; sRoberto Nigro → Tiziano Seri; Roberto Nigro; baseline start none → 2021-05-17; baseline finish none → 2021-05-17 |
| 63 | Realizzazione Pagina Profilo | resources sFanny Velasco; sMauro Neri → Fanny Velasco; Mauro Neri; baseline start none → 2021-05-18; baseline finish none → 2021-05-18 |
| 64 | Realizzazione Pagina Login | resources sTiziano Seri; sRoberto Nigro → Tiziano Seri; Roberto Nigro; baseline start none → 2021-05-18; baseline finish none → 2021-05-18 |
| 65 | Realizzazione Registrazione | resources sFanny Velasco; sMauro Neri → Fanny Velasco; Mauro Neri; baseline start none → 2021-05-19; baseline finish none → 2021-05-19 |
| 66 | Realizzazione area recensioni | resources sTiziano Seri; sRoberto Nigro → Tiziano Seri; Roberto Nigro; baseline start none → 2021-05-19; baseline finish none → 2021-05-20 |
| 67 | Realizzazione Carrello | resources sFanny Velasco; sMauro Neri → Fanny Velasco; Mauro Neri; baseline start none → 2021-05-20; baseline finish none → 2021-05-21 |
| 68 | Realizzazione area acquisti | resources sTiziano Seri; sRoberto Nigro → Tiziano Seri; Roberto Nigro; baseline start none → 2021-05-21; baseline finish none → 2021-05-24 |
| 69 | Realizzazione pagina prodotto | resources sFanny Velasco; sMauro Neri → Fanny Velasco; Mauro Neri; baseline start none → 2021-05-24; baseline finish none → 2021-05-26 |
| 70 | Realizzazione Modifica Prodotto | resources sTiziano Seri; sRoberto Nigro → Tiziano Seri; Roberto Nigro; baseline start none → 2021-05-25; baseline finish none → 2021-05-27 |

| ID | Task | Other |
| --- | --- | --- |
| 71 | Realizzazione Visualizza profilo utente e designer | resources sFanny Velasco; sMauro Neri → Fanny Velasco; Mauro Neri; baseline start none → 2021-05-27; baseline finish none → 2021-05-28 |
| 72 | Realizzazione Area Lavora con noi | resources sTiziano Seri; sRoberto Nigro → Tiziano Seri; Roberto Nigro; baseline start none → 2021-05-28; baseline finish none → 2021-05-31 |
| 73 | Realizzazione Chat | resources sMauro Neri; sFanny Velasco → Mauro Neri; Fanny Velasco; baseline start none → 2021-05-31; baseline finish none → 2021-06-01 |
| 74 | Realizzazione Area Candidati Designer | resources sTiziano Seri; sRoberto Nigro → Tiziano Seri; Roberto Nigro; baseline start none → 2021-06-01; baseline finish none → 2021-06-02 |
| 75 | Realizzazione Area Ordini | resources sMauro Neri; sFanny Velasco → Mauro Neri; Fanny Velasco; baseline start none → 2021-06-02; baseline finish none → 2021-06-03 |
| 76 | Realizzazione Area Gestione Produzione | resources sTiziano Seri; sRoberto Nigro → Tiziano Seri; Roberto Nigro; baseline start none → 2021-06-03; baseline finish none → 2021-06-04 |
| 77 | Realizzazione Area Classifica | resources sMauro Neri; sFanny Velasco → Mauro Neri; Fanny Velasco; baseline start none → 2021-06-04; baseline finish none → 2021-06-09 |
| 78 | Realizzazione Area Ricerca Prodotto | resources sTiziano Seri; sRoberto Nigro → Tiziano Seri; Roberto Nigro; baseline start none → 2021-06-07; baseline finish none → 2021-06-10 |
| 79 | SAL: Fine Front-end | was named Milestone 5: Fine Front-end; baseline start none → 2021-06-10; baseline finish none → 2021-06-10 |
| 80 | **OR4: Organizzazione della rete locale e testing** | baseline start none → 2021-06-11; baseline finish none → 2021-08-23 |
| 81 | **Report pianificazione dell’infrastruttura di rete** | baseline start none → 2021-06-11; baseline finish none → 2021-07-07 |
| 82 | Analisi di mercato sulle soluzioni topologiche moderne | baseline start none → 2021-06-11; baseline finish none → 2021-06-14 |
| 83 | Individuazione asset informatici e rischi correlati | baseline start none → 2021-06-15; baseline finish none → 2021-06-22 |
| 84 | Pianificazione su software di simulazione di topologie di rete | baseline start none → 2021-06-23; baseline finish none → 2021-07-01 |
| 85 | Stesura di report finale sulla pianificazione della rete | baseline start none → 2021-07-02; baseline finish none → 2021-07-07 |
| 86 | Milestone 4: Progettazione Infrastruttura | was named Milestone 6: Progettazione Infrastruttura; baseline start none → 2021-07-07; baseline finish none → 2021-07-07 |
| 87 | **Realizzazione dell’infrastruttura di rete** | baseline start none → 2021-07-08; baseline finish none → 2021-08-09 |
| 88 | Acquisto degli apparati necessari e realizzazione della rete | baseline start none → 2021-07-08; baseline finish none → 2021-08-04 |
| 89 | Messa in opera dell’infrastruttura di rete | baseline start none → 2021-08-05; baseline finish none → 2021-08-09 |
| 90 | **Rafforzamento della sicurezza informatica** | baseline start none → 2021-07-08; baseline finish none → 2021-07-29 |
| 91 | Valutazione preventivi con aziende specializzate in penetration testing | baseline start none → 2021-07-08; baseline finish none → 2021-07-21 |
| 92 | Svolgimento penetration testing da parte di due aziende scelte | baseline start none → 2021-07-22; baseline finish none → 2021-07-23 |
| 93 | Simulazione Disaster Recovery | baseline start none → 2021-07-26; baseline finish none → 2021-07-27 |
| 94 | Stesura delle linee guida per un piano di Disaster Recovery | baseline start none → 2021-07-28; baseline finish none → 2021-07-29 |
| 95 | Valutazione preventivi con aziende specializzate nell’attività di training per il contrasto al social engineering | baseline start none → 2021-07-08; baseline finish none → 2021-07-12 |
| 96 | Contrattazione ed erogazione del corso anti social-engineering da parte dell'azienda scelta | baseline start none → 2021-07-13; baseline finish none → 2021-07-15 |
| 97 | Milestone 5: Realizzazione Infrastruttura | was named Milestone 7: Realizzazione Infrastruttura; baseline start none → 2021-07-29; baseline finish none → 2021-07-29 |
| 98 | **Deploy della Piattaforma e testing** | baseline start none → 2021-07-30; baseline finish none → 2021-08-18 |
| 99 | Deploy della piattaforma | baseline start none → 2021-07-30; baseline finish none → 2021-08-04 |
| 100 | Testing della piattaforma | resources sFanny Velasco; sMauro Neri; sRoberto Nigro; sTiziano Seri → Fanny Velasco; Mauro Neri; Roberto Nigro; Tiziano Seri; baseline start none → 2021-08-05; baseline finish none → 2021-08-18 |
| 101 | SAL: Testing e Chiusura Progetto | baseline start none → 2021-08-23; baseline finish none → 2021-08-23 |

## Version 10 (saved 2021-03-03)

Note of the change: aggiornamento

Last finish stays 2021-08-23.

Changed:

| ID | Task | Total float | Predecessors | Other |
| --- | --- | --- | --- | --- |
| 11 | **Chiusura e lesson Learned** |  | 10, 100 → 10, 100, 98 |  |
| 14 | **OR2 Realizzazione Back-end** |  | 9 → none | resources spesa per wp immobile [0.1%]; Spese Generali per wp [0.1%] → none |
| 15 | Milestone 1: Documenti inizio progetto | 143d → 0d | none → 9 |  |
| 16 | **Configurazione Server** |  | none → 15 | resources none → spesa per wp immobile [0.1%]; Spese Generali per wp [0.1%] |
| 25 | **Realizzazione Service** |  | 19 → 24 |  |
| 26 | Servizi del User |  |  | was named Servizi dell User |
| 37 | **OR3: Realizzazione Front-end** |  | 36 → 14 | resources spesa per wp immobile [0.1%]; Spese Generali per wp [0.1%] → none |
| 38 | **Mappa di navigazione del sito e design del sito** |  | none → 36 | resources none → spesa per wp immobile [0.1%]; Spese Generali per wp [0.1%] |
| 60 | **Realizzazione Viste** |  | 38 → 59 |  |
| 80 | **OR4: Organizzazione della rete locale e testing** |  | 9, 60 → 37 | resources spesa per wp immobile [0.1%]; Spese Generali per wp [0.1%] → none |
| 81 | **Report pianificazione dell’infrastruttura di rete** |  | none → 79 | resources none → spesa per wp immobile [0.1%]; Spese Generali per wp [0.1%] |
| 87 | **Realizzazione dell’infrastruttura di rete** |  | 81 → 86 |  |
| 90 | **Rafforzamento della sicurezza informatica** |  | 81 → 86 |  |
| 98 | **Deploy della Piattaforma e testing** |  | 90 → 97 |  |

## Version 11 (saved 2021-05-08)

Last finish stays 2021-08-23.

Changed:

| ID | Task | Start | Finish | Duration | Total float | Other |
| --- | --- | --- | --- | --- | --- | --- |
| 87 | **Realizzazione dell’infrastruttura di rete** |  | 2021-08-09 → 2021-07-28 (-12d) | 23d → 15d | 10d → 18d |  |
| 88 | Acquisto degli apparati necessari e realizzazione della rete |  | 2021-08-04 → 2021-07-23 (-12d) | 20d → 12d | 10d → 18d | resources Gabriele De Bartolomeo; Wifi Access Points [2000%]; Switches L2/L3 e Routers [1500%]; Stampanti di rete [200%]; Enterprise Switches (Accesso) [200%]; Enterprise Switches (Aggregazione) [400%]; Enterprise Routers (Edge) [200%]; Firewall [200%]; Domain Servers [200%]; Storage Area Network → Gabriele De Bartolomeo [39.3%]; Wifi Access Points [2000%]; Switches L2/L3 e Routers [1500%]; Stampanti di rete [200%]; Enterprise Switches (Accesso) [200%]; Enterprise Switches (Aggregazione) [400%]; Enterprise Routers (Edge) [200%]; Firewall [200%]; Domain Servers [200%]; Storage Area Network |
| 89 | Messa in opera dell’infrastruttura di rete | 2021-08-05 → 2021-07-26 (-10d) | 2021-08-09 → 2021-07-28 (-12d) |  | 10d → 18d |  |
